# AGE26AL_S06A_FT_234MW_PPA

How a schedule from Primavera P6 changed from version to version. A marks actual dates.

## Version 1 (data date 2026-08-22, saved 2026-09-07, file FY26-P18 S6a 07.09.2026.xer)

Note of the change: Khavda S6a digital twin: PDF + P6 schedule to IFC4 4D model and web viewer

| ID | WBS | Task | Duration | Start | Finish | Predecessors | Complete | Total float |
| --- | --- | --- | --- | --- | --- | --- | --- | --- |
|  | 1 | **MILESTONES** |  | 2026-01-05 | 2027-10-01 |  |  |  |
|  | 1 | **GENERAL** |  | 2026-01-05 | 2027-10-01 |  |  |  |
| S06A-MS-1000 |  | Project Start | 0d | 2026-01-05 A | 2026-01-05 A |  | 100% |  |
| S06A-MS-1010 |  | Project Technology Finalization | 0d | 2026-01-05 A | 2026-01-05 A |  | 100% |  |
| S06A-LD-1000 |  | Land Sub Lease Agreement with SPV | 5d | 2026-08-23 | 2026-08-27 | S06A-MS-1000 SS |  | 395.12d |
| S06A-MS-1020 |  | HOTO | 0d | 2027-06-25 | 2027-06-25 | S06A-HT-2270 FF, S06A-HT-2190 FF, S06A-HT-2110 FF, S06A-HT-2030 FF, S06A-HT-1950 FF, S06A-HT-1870 FF, S06A-HT-1790 FF, S06A-HT-1710 FF, S06A-HT-1630 FF, S06A-HT-1550 FF, S06A-HT-1470 FF, S06A-HT-1390 FF, S06A-HT-1310 FF, S06A-HT-1230 FF, S06A-HT-1150 FF, S06A-HT-1070 FF, S06A-HT-2510 FF, S06A-HT-2430 FF, S06A-HT-2350 FF, S06A-EN-1030 FF, S06A-SE-1020 FF, S06A-SE-1030 FF, S06A-SE-1040 FF, S06A-SE-1050 FF, S06A-EN-1130 FF, S06A-EN-1240 FF, S06A-EN-1260 FF, S06A-EN-1280 FF, S06A-EN-1360 FF, S06A-EN-1390 FF, S06A-EN-1510 FF, S06A-EN-1540 FF, S06A-EN-1650 FF, S06A-EN-1770 FF, S06A-EN-1780 FF, S06A-EN-1780, S06A-EN-1830 FF, S06A-EN-1840 FF, S06A-EN-1860 FF, S06A-EN-1880 FF, S06A-EN-1900 FF, S06A-EN-1910 FF, S06A-EN-1950 FF, S06A-EN-1980 FF, S06A-EN-2000 FF, S06A-EN-2010 FF, S06A-EN-2020 FF, S06A-EN-2060 FF, S06A-EN-2090 FF, S06A-EN-2110 FF |  | 3.7d |
| S06A-MS-1030 |  | Contract Closure | 0d | 2027-10-01 | 2027-10-01 | S06A-CL-1110 FF, S06A-CL-1100 FF, S06A-CL-1090 FF, S06A-CL-1080 FF, S06A-CL-1070 FF, S06A-CL-1060 FF, S06A-CL-1050 FF, S06A-CL-1040 FF, S06A-CL-1030 FF, S06A-CL-1020 FF, S06A-CL-1010 FF, S06A-CL-1000 FF, S06A-CL-1160 FF, S06A-CL-1170 FF, S06A-CL-1180 FF, S06A-CL-1120 FF, S06A-CL-1130 FF, S06A-CL-1140 FF, S06A-CL-1150 FF |  | 0d |
|  | 2 | **COMMISSIONING** |  | 2027-01-01 | 2027-02-28 |  |  |  |
|  | 1 | **PHASE-1 (50MW)** |  | 2027-01-01 | 2027-01-15 |  |  |  |
| S06A-MS-1040 |  | First Time Charging - Phase-I (50 MW) | 0d | 2027-01-01 | 2027-01-01 | S06A-CC-3540 FF, S06A-CC-2890 FF, S06A-CC-2240 FF, S06A-CC-1590 FF |  | 152d |
| S06A-MS-1060 |  | Trial Run Finish - Phase-I (50 MW) | 0d | 2027-01-08 | 2027-01-08 | S06A-CC-3570 FF, S06A-CC-2920 FF, S06A-CC-2270 FF, S06A-CC-1620 FF |  | 145d |
| S06A-MS-1050 |  | Robot Commissioning Finish - Phase-I (50 MW) | 0d | 2027-01-12 | 2027-01-12 | S06A-CC-3560 FF, S06A-CC-2910 FF, S06A-CC-2260 FF, S06A-CC-1610 FF |  | 141d |
| S06A-MS-1070 |  | COD - Phase-I (50 MW) | 0d | 2027-01-15 | 2027-01-15 | S06A-CC-3590 FF, S06A-CC-2940 FF, S06A-CC-2290 FF, S06A-CC-1640 FF |  | 138d |
|  | 2 | **PHASE-2 (50MW)** |  | 2027-01-10 | 2027-01-24 |  |  |  |
| S06A-MS-1080 |  | First Time Charging - Phase-II (50 MW) | 0d | 2027-01-10 | 2027-01-10 | S06A-CC-4840 FF, S06A-CC-5490 FF, S06A-CC-6140 FF, S06A-CC-4190 FF |  | 142.7d |
| S06A-MS-1100 |  | Trial Run Finish - Phase-II (50 MW) | 0d | 2027-01-17 | 2027-01-17 | S06A-CC-4870 FF, S06A-CC-5520 FF, S06A-CC-6170 FF, S06A-CC-4220 FF |  | 135.7d |
| S06A-MS-1090 |  | Robot Commissioning Finish - Phase-II (50 MW) | 0d | 2027-01-21 | 2027-01-21 | S06A-CC-4860 FF, S06A-CC-5510 FF, S06A-CC-6160 FF, S06A-CC-4210 FF |  | 131.7d |
| S06A-MS-1110 |  | COD - Phase-II (50 MW) | 0d | 2027-01-24 | 2027-01-24 | S06A-CC-4890 FF, S06A-CC-5540 FF, S06A-CC-6190 FF, S06A-CC-4240 FF |  | 128.7d |
|  | 3 | **PHASE-3 (50MW)** |  | 2027-01-15 | 2027-01-30 |  |  |  |
| S06A-MS-1120 |  | First Time Charging - Phase-III (50 MW) | 0d | 2027-01-15 | 2027-01-15 | S06A-CC-8090 FF, S06A-CC-6790 FF, S06A-CC-8740 FF, S06A-CC-7440 FF |  | 137.7d |
| S06A-MS-1140 |  | Trial Run Finish - Phase-III (50 MW) | 0d | 2027-01-22 | 2027-01-22 | S06A-CC-8120 FF, S06A-CC-6820 FF, S06A-CC-8770 FF, S06A-CC-7470 FF |  | 130.7d |
| S06A-MS-1130 |  | Robot Commissioning Finish - Phase-III (50 MW) | 0d | 2027-01-27 | 2027-01-27 | S06A-CC-8110 FF, S06A-CC-6810 FF, S06A-CC-8760 FF, S06A-CC-7460 FF |  | 126.7d |
| S06A-MS-1150 |  | COD - Phase-III (50 MW) | 0d | 2027-01-30 | 2027-01-30 | S06A-CC-8140 FF, S06A-CC-6840 FF, S06A-CC-8790 FF, S06A-CC-7490 FF |  | 123.7d |
|  | 4 | **PHASE-4 (50MW)** |  | 2027-02-12 | 2027-02-26 |  |  |  |
| S06A-MS-1160 |  | First Time Charging - Phase-IV (50 MW) | 0d | 2027-02-12 | 2027-02-12 | S06A-CC-11340 FF, S06A-CC-10690 FF, S06A-CC-10030 FF, S06A-CC-9390 FF |  | 110.7d |
| S06A-MS-1180 |  | Trial Run Finish - Phase-IV (50 MW) | 0d | 2027-02-19 | 2027-02-19 | S06A-CC-11370 FF, S06A-CC-10720 FF, S06A-CC-10060 FF, S06A-CC-9420 FF |  | 103.7d |
| S06A-MS-1170 |  | Robot Commissioning Finish - Phase-IV (50 MW) | 0d | 2027-02-23 | 2027-02-23 | S06A-CC-11360 FF, S06A-CC-10710 FF, S06A-CC-10050 FF, S06A-CC-9410 FF |  | 99.7d |
| S06A-MS-1190 |  | COD - Phase-IV (50 MW) | 0d | 2027-02-26 | 2027-02-26 | S06A-CC-11390 FF, S06A-CC-10740 FF, S06A-CC-10080 FF, S06A-CC-9440 FF |  | 96.7d |
|  | 5 | **PHASE-5 (34MW)** |  | 2027-02-18 | 2027-02-28 |  |  |  |
| S06A-MS-1200 |  | First Time Charging - Phase-V (34 MW) | 0d | 2027-02-18 | 2027-02-18 | S06A-CC-11990 FF, S06A-CC-13290 FF, S06A-CC-12640 FF |  | 104.7d |
| S06A-MS-1220 |  | Trial Run Finish - Phase-V (34 MW) | 0d | 2027-02-21 | 2027-02-21 | S06A-CC-12020 FF, S06A-CC-13320 FF, S06A-CC-12670 FF |  | 101.7d |
| S06A-MS-1210 |  | Robot Commissioning Finish - Phase-V (34 MW) | 0d | 2027-02-25 | 2027-02-25 | S06A-CC-12010 FF, S06A-CC-13310 FF, S06A-CC-12660 FF |  | 97.7d |
| S06A-MS-1230 |  | COD - Phase-V (34 MW) | 0d | 2027-02-28 | 2027-02-28 | S06A-CC-12040 FF, S06A-CC-13340 FF, S06A-CC-12690 FF |  | 94.7d |
|  | 3 | **MATERIAL DELIVERY** |  | 2026-10-01 | 2027-01-01 |  |  |  |
| S06A-MS-1240 |  | MMS Piling Stubs Delivery Start | 0d | 2026-10-01 | 2026-10-01 | S06A-PR-1070 SS |  | 243.7d |
| S06A-MS-1250 |  | MMS Superstructure Delivery at site Start | 0d | 2026-10-01 | 2026-10-01 | S06A-PR-1710 SS |  | 243.7d |
| S06A-MS-1260 |  | Module Dispatch from China Start | 0d | 2026-10-30 | 2026-10-30 | S06A-PR-6070 SS |  | 215.7d |
| S06A-MS-1270 |  | Module Delivery at Site Finish | 0d | 2027-01-01 | 2027-01-01 | S06A-PR-6180 FF |  | 152d |
|  | 4 | **CONSTRUCTION** |  | 2026-10-01 | 2026-11-18 |  |  |  |
| S06A-MS-1280 |  | Construction (MMS Piling) Start | 0d | 2026-10-01 | 2026-10-01 | S06A-CC-1000 SS |  | 243.7d |
| S06A-MS-1300 |  | IDT Foundtation Up To Rail | 0d | 2026-10-01 | 2026-10-01 | S06A-CC-1190 SS |  | 243.7d |
| S06A-MS-1290 |  | Module Installation Start | 0d | 2026-11-18 | 2026-11-18 | S06A-CC-1100 SS |  | 196.7d |
|  | 5 | **CLIENT INPUT & HANDOVER** |  | 2026-08-23 | 2026-12-29 |  |  |  |
| S06A-CI-1000 |  | Handing Over Encumbrance Free Land | 0d | 2026-08-23 | 2026-08-23 | S06A-MS-1000 SS |  | 402.22d |
| S06A-CI-1010 |  | PSS Power Supply for FTC | 0d | 2026-12-29 | 2026-12-29 | S06A-CC-1580 SS |  | 28.78d |
|  | 6 | **SITE ESTABLISHMENT AND PRELIMINARY CIVIL WORKS** |  | 2026-02-18 | 2026-10-17 |  |  |  |
| S06A-SE-1030 |  | Setup of Material Storage Facility | 73.78d | 2026-02-18 A | 2026-05-11 A | S06A-CI-1000 FS+40d | 100% |  |
| S06A-SE-1050 |  | Installation of Batching Plant | 40d | 2026-03-06 A | 2026-04-20 A | S06A-SE-1030 SS | 100% |  |
| S06A-SE-1000 |  | Setup of Site Office | 55d | 2026-03-11 A | 2026-05-18 A | S06A-CI-1000 FS+40d | 100% |  |
| S06A-SE-1020 |  | Setup of Staff Accommodation | 55d | 2026-03-12 A | 2026-04-10 A | S06A-SE-1010 SS | 100% |  |
| S06A-SE-1040 |  | Setup of of QC Laboratory | 20d | 2026-04-06 A | 2026-04-27 A | S06A-SE-1030 SS | 100% |  |
| S06A-SE-1010 |  | Development of Labour Camp | 55d | 2026-05-13 A | 2026-10-17 | S06A-SE-1000 SS |  | 347.22d |
|  | 2 | **PRE-CONSTRUCTION** |  | 2026-01-05 | 2026-08-31 |  |  |  |
|  | 1 | **LAND ACQUISITION** |  | 2026-01-05 | 2026-03-10 |  |  |  |
|  | 1 | **GOVERNMENT LAND** |  | 2026-01-05 | 2026-03-10 |  |  |  |
| PR-LA-G-010 |  | Application to nodal department | 5d | 2026-01-05 A | 2026-03-10 A | S06A-LD-1000 | 100% |  |
| PR-LA-G-020 |  | Administrative approval | 1d | 2026-01-05 A | 2026-03-10 A | PR-LA-G-010 | 100% |  |
| PR-LA-G-030 |  | Lease agreement | 1d | 2026-01-05 A | 2026-03-10 A | PR-LA-G-020 | 100% |  |
| PR-LA-G-040 |  | Transfer order | 1d | 2026-01-05 A | 2026-03-10 A | PR-LA-G-030 | 100% |  |
| PR-LA-G-050 |  | Possession handover | 1d | 2026-01-05 A | 2026-03-10 A | PR-LA-G-040 | 100% |  |
|  | 2 | **CLEARANCES & APPROVALS** |  | 2026-01-05 | 2026-08-31 |  |  |  |
|  | 1 | **Consent to Establish (CTE) — SPCB** |  | 2026-01-18 | 2026-01-29 |  |  |  |
| PR-CA-04-010 |  | Application Submission | 12.12d | 2026-01-18 A | 2026-01-29 A | PR-CA-27-019 | 100% |  |
|  | 2 | **Water Allocation & Groundwater Extraction NOC (CGWA / State)** |  | 2026-01-05 | 2026-03-10 |  |  |  |
| PR-CA-10-010 |  | Hydrology Report & Application Submission | 1d | 2026-01-05 A | 2026-03-10 A | PR-CA-04-010 | 100% |  |
| PR-CA-10-020 |  | Compliance Documentation | 1d | 2026-01-05 A | 2026-03-10 A | PR-CA-10-010 | 100% |  |
| PR-CA-10-030 |  | Review & Inspection | 1d | 2026-01-05 A | 2026-03-10 A | PR-CA-10-020 | 100% |  |
| PR-CA-10-040 |  | Grant of NOC | 1d | 2026-01-05 A | 2026-03-10 A | PR-CA-10-030 | 100% |  |
|  | 3 | **Power Purchase Agreement (PPA) / Grid Interconnection** |  | 2026-01-05 | 2026-03-10 |  |  |  |
| PR-CA-11-020 |  | Regulatory Approval | 1d | 2026-01-05 A | 2026-03-10 A | PR-CA-27-017 | 100% |  |

| ID | WBS | Task | Duration | Start | Finish | Predecessors | Complete | Total float |
| --- | --- | --- | --- | --- | --- | --- | --- | --- |
| PR-CA-11-030 |  | Grid Connectivity | 1d | 2026-01-05 A | 2026-03-10 A | PR-CA-11-020 | 100% |  |
|  | 4 | **Electricity Connection Sanction; HT/LT Connection; Transformer & Captive Substation Approvals** |  | 2026-01-05 | 2026-03-10 |  |  |  |
| PR-CA-14-010 |  | Submission of Application | 1d | 2026-01-05 A | 2026-03-10 A | PR-CA-11-030 | 100% |  |
| PR-CA-14-020 |  | Grant of Clearance | 1d | 2026-01-05 A | 2026-03-10 A | PR-CA-14-010 | 100% |  |
|  | 5 | **Consent to Operate (CTO) — SPCB/CPCB** |  | 2026-01-05 | 2026-03-10 |  |  |  |
| PR-CA-16-010 |  | Submission of Application | 1d | 2026-01-05 A | 2026-03-10 A | PR-CA-04-010 | 100% |  |
| PR-CA-16-020 |  | Grant of Clearance | 1d | 2026-01-05 A | 2026-03-10 A | PR-CA-16-010 | 100% |  |
|  | 6 | **Construction Commencement Certificate** |  | 2026-01-05 | 2026-03-10 |  |  |  |
| PR-CA-18-010 |  | Submission of Application | 5d | 2026-01-05 A | 2026-03-10 A | PR-CA-04-010 | 100% |  |
| PR-CA-18-020 |  | Grant of Clearance | 5d | 2026-01-05 A | 2026-03-10 A | PR-CA-18-010 | 100% |  |
|  | 7 | **Fire NOC / Fire Safety Certificate (State Fire Services)** |  | 2026-01-05 | 2026-03-10 |  |  |  |
| PR-CA-23-010 |  | Submission of Application | 5d | 2026-01-05 A | 2026-03-10 A | S06A-EN-1150 | 100% |  |
| PR-CA-23-020 |  | Grant of Clearance | 5d | 2026-01-05 A | 2026-03-10 A | PR-CA-23-010 | 100% |  |
|  | 8 | **OTHERS IF ANY** |  | 2026-01-05 | 2026-08-31 |  |  |  |
| PR-CA-27-010 |  | Implementation Service Agreement (ISA, applicable for Solar parks) | 14d | 2026-01-05 A | 2026-03-10 A | S06A-MS-1000 SS | 100% |  |
| PR-CA-27-011 |  | WRLDC Registration | 1d | 2026-01-05 A | 2026-03-10 A | S06A-MS-1000 SS | 100% |  |
| PR-CA-27-017 |  | GST Certificate | 4d | 2026-02-01 A | 2026-02-12 A | PR-CA-27-012 | 100% |  |
| PR-CA-27-018 |  | Contract Labour Registration (CLRA) License | 59.38d | 2026-02-16 A | 2026-04-09 A | PR-CA-27-017, S06A-PR-6740 | 100% |  |
| PR-CA-27-019 |  | Registration Under Buildings And Other Construction Works (BOCW) | 53.75d | 2026-02-16 A | 2026-04-21 A | PR-CA-27-017, PR-CA-27-018 | 100% |  |
| PR-CA-27-015 |  | EAR Policy | 7.88d | 2026-03-15 A | 2026-03-21 A | S06A-PR-1060, S06A-PR-1080, S06A-PR-1100, S06A-PR-1120, S06A-PR-1140, S06A-PR-6070, S06A-PR-6100, S06A-PR-6130, S06A-PR-6160, S06A-PR-6190, S06A-PR-5380, S06A-PR-5410, S06A-PR-5440, S06A-PR-5470, S06A-PR-5500 | 100% |  |
| PR-CA-27-016 |  | Marine Policy | 5d | 2026-03-15 A | 2026-03-21 A | S06A-PR-1060, S06A-PR-1080, S06A-PR-1100, S06A-PR-1120, S06A-PR-1140, S06A-PR-6070, S06A-PR-6100, S06A-PR-6130, S06A-PR-6160, S06A-PR-6190, S06A-PR-5380, S06A-PR-5410, S06A-PR-5440, S06A-PR-5470, S06A-PR-5500 | 100% |  |
| PR-CA-27-014 |  | PTCC | 90d | 2026-08-01 A | 2026-08-01 A | S06A-EN-1950 FS+7d | 100% |  |
| PR-CA-27-013 |  | First Time Charging Approval of Line & Bay from RLDC | 1d | 2026-08-23 | 2026-08-23 | PR-CA-27-011, PR-CA-27-014 FS+7d |  | 157d |
| PR-CA-27-012 |  | SPV Name Finalization | 4d | 2026-08-28 | 2026-08-31 | S06A-LD-1000 |  | 395.12d |
|  | 3 | **PRE-CONSTRUCTION STUDIES/PLANNING** |  | 2026-01-05 | 2026-03-10 |  |  |  |
| PR-ST-A-010 |  | Geo Tech Investigation | 1d | 2026-01-05 A | 2026-03-10 A | S06A-PR-6740 | 100% |  |
| PR-ST-A-020 |  | Flood & Catchment Area Studies | 1d | 2026-01-05 A | 2026-03-10 A | PR-ST-A-010 | 100% |  |
| PR-ST-A-030 |  | Topography Survey | 1d | 2026-01-05 A | 2026-03-10 A | PR-ST-A-020 | 100% |  |
| PR-ST-A-040 |  | Route Survey for movement of Manpower/Equipment/Over Dimension Consignment to site | 1d | 2026-01-05 A | 2026-03-10 A | PR-ST-A-030 | 100% |  |
| PR-ST-A-050 |  | Concept Approval of Accomodation & Township | 1d | 2026-01-05 A | 2026-03-10 A | PR-ST-A-040 | 100% |  |
| PR-ST-A-060 |  | Signing of Security Management Plant ( SMP) for Construction & Operation phase ( Including Accomodations) | 1d | 2026-01-05 A | 2026-03-10 A | PR-ST-A-050 | 100% |  |
| PR-ST-A-070 |  | Onboarding of Project Engineering Consultant | 1d | 2026-01-05 A | 2026-03-10 A | PR-ST-A-060 | 100% |  |
|  | 4 | **STAFF INFRASTRUCTURE DURING CONSTRUCTION & OPERATION PHASE** |  | 2026-01-05 | 2026-03-10 |  |  |  |
| PR-SI-A-010 |  | Township ( Incl Bachelor Hostels, Operator Colony , Common Utilities, Visitor Guest House ) | 1d | 2026-01-05 A | 2026-03-10 A | PR-ST-A-070 | 100% |  |
| PR-SI-A-020 |  | Architech/Consultant Onboarding for Township | 1d | 2026-01-05 A | 2026-03-10 A | PR-SI-A-010 | 100% |  |
| PR-SI-A-030 |  | Order Placement ( End Date ) | 1d | 2026-01-05 A | 2026-03-10 A | PR-SI-A-020 | 100% |  |
| PR-SI-A-040 |  | Contractor Mobilisaton | 1d | 2026-01-05 A | 2026-03-10 A | PR-SI-A-030 | 100% |  |
| PR-SI-A-050 |  | Township Possession | 1d | 2026-01-05 A | 2026-03-10 A | PR-SI-A-040 | 100% |  |
|  | 5 | **WORKER INFRASTRUCTURE DURING CONSTRUCTION & OPERATION PHASE** |  | 2026-01-05 | 2026-03-10 |  |  |  |
| PR-WI-A-010 |  | Worker Colony | 1d | 2026-01-05 A | 2026-03-10 A | S06A-PR-6740 | 100% |  |
| PR-WI-A-020 |  | Architech/Consultant Onboarding for Worker Colony | 1d | 2026-01-05 A | 2026-03-10 A | PR-WI-A-010 | 100% |  |
| PR-WI-A-030 |  | Order Placement ( End Date ) | 1d | 2026-01-05 A | 2026-03-10 A | PR-WI-A-020 | 100% |  |
| PR-WI-A-040 |  | Contractor Mobilisaton | 1d | 2026-01-05 A | 2026-03-10 A | PR-SI-A-050, PR-WI-A-030 | 100% |  |
| PR-WI-A-050 |  | Worker Rest shelter at construction areas | 1d | 2026-01-05 A | 2026-03-10 A | PR-WI-A-040 | 100% |  |
| PR-WI-A-060 |  | Portable Toilets at construction areas | 1d | 2026-01-05 A | 2026-03-10 A | PR-WI-A-050 | 100% |  |
| PR-WI-A-070 |  | Canteen Kitchen & Dining | 1d | 2026-01-05 A | 2026-03-10 A | PR-WI-A-060 | 100% |  |
| PR-WI-A-080 |  | Effluent / Sewage/Potable Water | 1d | 2026-01-05 A | 2026-03-10 A | PR-WI-A-070 | 100% |  |
|  | 6 | **COMMON INFRA** |  | 2026-01-05 | 2026-03-10 |  |  |  |
| PR-CI-A-010 |  | Boundary Wall or Fencing at Project initiation | 1d | 2026-01-05 A | 2026-03-10 A | PR-LA-G-050, PR-WI-A-080 | 100% |  |
| PR-CI-A-020 |  | Construction Water Infra | 1d | 2026-01-05 A | 2026-03-10 A | PR-CA-10-040, PR-CI-A-010 | 100% |  |
| PR-CI-A-030 |  | Raw Water pump House & Water Pipeline upto Project site | 1d | 2026-01-05 A | 2026-03-10 A | PR-CI-A-020 | 100% |  |
| PR-CI-A-040 |  | Construction & Start Up Power Infra | 1d | 2026-01-05 A | 2026-03-10 A | PR-CI-A-030 | 100% |  |
| PR-CI-A-050 |  | Site & Admin Office | 1d | 2026-01-05 A | 2026-03-10 A | PR-CI-A-040 | 100% |  |
| PR-CI-A-060 |  | Store ( Covered / Open) | 1d | 2026-01-05 A | 2026-03-10 A | PR-CI-A-050 | 100% |  |
| PR-CI-A-070 |  | Weigh Bridge | 1d | 2026-01-05 A | 2026-03-10 A | PR-CI-A-060 | 100% |  |
| PR-CI-A-080 |  | Diversion of any Existing Infra- Nala/Drain/Stream/Transmission Line/Road etc | 1d | 2026-01-05 A | 2026-03-10 A | PR-CI-A-070 | 100% |  |
| PR-CI-A-090 |  | Fire Station | 1d | 2026-01-05 A | 2026-03-10 A | PR-CI-A-080 | 100% |  |
| PR-CI-A-100 |  | Operational Health & Safety ( OHS) Set up | 1d | 2026-01-05 A | 2026-03-10 A | PR-CI-A-090 | 100% |  |
| PR-CI-A-110 |  | Parking Area | 1d | 2026-01-05 A | 2026-03-10 A | PR-CI-A-100 | 100% |  |
| PR-CI-A-120 |  | Bank Facilities | 1d | 2026-01-05 A | 2026-03-10 A | PR-CI-A-110 | 100% |  |
| PR-CI-A-130 |  | Mobile/Internet Communication Infra Set Up | 1d | 2026-01-05 A | 2026-03-10 A | PR-CI-A-120 | 100% |  |
| PR-CI-A-150 |  | Air strip | 1d | 2026-01-05 A | 2026-03-10 A | PR-CI-A-130 | 100% |  |
|  | 7 | **LOGISTICS & MATERIAL HANDLING INFRASTRUCTURE** |  | 2026-01-05 | 2026-03-10 |  |  |  |
| PR-LM-A-010 |  | Construction / Strengthening of external roads for movment of Manpower/Equipment/Machinery to site | 1d | 2026-01-05 A | 2026-03-10 A | PR-CI-A-150 | 100% |  |
|  | 3 | **ENGINEERING** |  | 2026-01-27 | 2026-08-28 |  |  |  |
|  | 1 | **PLANT LEVEL** |  | 2026-01-27 | 2026-08-28 |  |  |  |
|  | 1 | **CIVIL** |  | 2026-01-27 | 2026-08-25 |  |  |  |
|  | 1 | **GENERAL** |  | 2026-03-02 | 2026-08-25 |  |  |  |
| S06A-EN-1050 |  | Design Basis - Civil & Structural Works | 25d | 2026-03-02 A | 2026-04-03 A | S06A-MS-1010 FS+30d | 100% |  |
| S06A-EN-1000 |  | Geo-Technical Investigation Report + ERT Report | 15d | 2026-03-26 A | 2026-03-27 A | S06A-EN-1410 | 100% |  |

| ID | WBS | Task | Duration | Start | Finish | Predecessors | Complete | Total float |
| --- | --- | --- | --- | --- | --- | --- | --- | --- |
| S06A-EN-1010 |  | Topography And Contour Survey Report | 15d | 2026-04-06 A | 2026-04-08 A | S06A-MS-1010 FS+28.8d | 100% |  |
| S06A-EN-1020 |  | Hydrology Report | 6d | 2026-04-06 A | 2026-04-08 A | S06A-MS-1010 FS+35.1d | 100% |  |
| S06A-EN-1030 |  | Water Test Report | 6d | 2026-05-02 A | 2026-05-29 A | S06A-MS-1010 FS+35.1d | 100% |  |
| S06A-EN-1040 |  | MMS Pile Load Test Results [Pull Out & Lateral Test] | 5d | 2026-07-09 A | 2026-08-25 | S06A-EN-1400 FS+2d | 50% | 399.22d |
|  | 2 | **IDT TRANSFORMER** |  | 2026-03-02 | 2026-06-29 |  |  |  |
| S06A-EN-1060 |  | Inverter Duty Transformer - Foundation Design Calculations | 24d | 2026-03-02 A | 2026-03-31 A | S06A-EN-1000 FS+2d | 100% |  |
| S06A-EN-1070 |  | Inverter Duty Transformer - Foundation Layout And RC Details | 24d | 2026-03-02 A | 2026-03-12 A | S06A-EN-1060 SS+3d | 100% |  |
| S06A-EN-1080 |  | NIFPS Foundation & Burnt Oil Pit Design Calculation | 24d | 2026-04-03 A | 2026-04-08 A | S06A-EN-1060 SS+5d | 100% |  |
| S06A-EN-1090 |  | GA & RC Details Of Burnt Oil Pit & NIFPS for IDT | 24d | 2026-04-03 A | 2026-06-29 A | S06A-EN-1080 SS+1d | 100% |  |
| S06A-EN-1100 |  | Inverter Duty Transformer - Yard Fence Details | 29d | 2026-04-06 A | 2026-04-09 A | S06A-EN-1050 FS+21d | 100% |  |
|  | 3 | **IDT CIVIL FND** |  | 2026-03-02 | 2026-04-09 |  |  |  |
| S06A-EN-1170 |  | IDT Station - LT - HT Panel Platform Fencing Layout And Details | 34d | 2026-03-02 A | 2026-04-09 A | S06A-MS-1010 FS+63d | 100% |  |
| S06A-EN-1140 |  | IDT Station LT - HT Panel Platform Foundation Layout And Details | 30d | 2026-03-06 A | 2026-03-12 A | S06A-EN-1110 SS+4d, PR-CA-11-030 | 100% |  |
| S06A-EN-1150 |  | IDT Station LT- HT Panel Platform R.C.C Beam & Slab Layout And Details | 30d | 2026-03-06 A | 2026-03-12 A | S06A-EN-1140 SS, PR-CA-14-020 | 100% |  |
| S06A-EN-1160 |  | IDT Station - LT - HT Panel Platform Canopy Layout And Details | 30d | 2026-03-06 A | 2026-03-12 A | S06A-EN-1120 SS+4d | 100% |  |
| S06A-EN-1130 |  | IDT Station LT - HT Panel Architectural Plan, Sections And Elevations | 45d | 2026-03-26 A | 2026-04-03 A | S06A-MS-1010 FS+40d | 100% |  |
| S06A-EN-1180 |  | HT-LT Platform Shed Fabrication Details | 5d | 2026-03-31 A | 2026-04-03 A | S06A-MS-1010 FS+66.6d | 100% |  |
| S06A-EN-1110 |  | IDT Station - LT - HT Panel Foundation Design Calculations | 34d | 2026-04-02 A | 2026-04-03 A | S06A-EN-1050 FS+28d | 100% |  |
| S06A-EN-1120 |  | IDT Station - LT - HT Panel Super Structure And Canopy Design Calculations | 15d | 2026-04-02 A | 2026-04-03 A | S06A-EN-1110 SS+2d | 100% |  |
|  | 4 | **INVERTER** |  | 2026-03-02 | 2026-04-09 |  |  |  |
| S06A-EN-1200 |  | Inverter Mounting Structure GA & Foundation Details | 24.44d | 2026-03-02 A | 2026-04-09 A | S06A-EN-1190 SS+1d | 100% |  |
| S06A-EN-1210 |  | Inverter Mounting Structure Fabrication | 24.44d | 2026-03-02 A | 2026-04-09 A | S06A-EN-1200 SS+2d | 100% |  |
| S06A-EN-1190 |  | Design Calculations For Inverter Mounting Structure | 6d | 2026-04-03 A | 2026-04-09 A | S06A-MS-1010 FS+69.3d | 100% |  |
|  | 5 | **WEATHER MONITERING SYSTEM** |  | 2026-04-08 | 2026-05-09 |  |  |  |
| S06A-EN-1220 |  | WMS Foundation Design Calculations | 6d | 2026-04-08 A | 2026-04-20 A | S06A-MS-1010 FS+73.8d | 100% |  |
| S06A-EN-1230 |  | WMS Foundation GA & Details | 6d | 2026-04-08 A | 2026-04-20 A | S06A-EN-1220 SS+1d | 100% |  |
| S06A-EN-1240 |  | WMS Location Array Layout | 4d | 2026-05-04 A | 2026-05-09 A | S06A-EN-1230 SS | 100% |  |
|  | 6 | **LIGHTNING ARRESTER** |  | 2026-05-04 | 2026-07-03 |  |  |  |
| S06A-EN-1250 |  | LA Foundation Design Calculations | 6d | 2026-05-04 A | 2026-07-03 A | S06A-MS-1010 FS+76.5d | 100% |  |
| S06A-EN-1260 |  | LA Foundation GA & Details | 6d | 2026-05-04 A | 2026-07-03 A | S06A-EN-1250 SS+1d | 100% |  |
|  | 7 | **STREET LIGHT** |  | 2026-05-06 | 2026-06-22 |  |  |  |
| S06A-EN-1270 |  | Street Light Foundation Design Calculations | 6d | 2026-05-06 A | 2026-06-22 A | S06A-MS-1010 FS+79.2d | 100% |  |
| S06A-EN-1280 |  | Street Light Foundation GA & Details | 6d | 2026-05-06 A | 2026-06-22 A | S06A-EN-1270 SS+1d | 100% |  |
|  | 8 | **MODULE CLEANING SYSTEM** |  | 2026-04-08 | 2026-08-25 |  |  |  |
| S06A-EN-1290 |  | Robotic Cleaning System Docking Station Design Calculations | 6d | 2026-04-08 A | 2026-08-25 | S06A-PR-5360 | 50% | 399.22d |
| S06A-EN-1300 |  | Robotic Cleaning System Docking Station Structure Detailed GA Details | 6d | 2026-04-08 A | 2026-08-25 | S06A-EN-1290 SS+2d | 50% | 399.22d |
| S06A-EN-1310 |  | Typical Pile Details For Docking Station | 6d | 2026-04-08 A | 2026-08-25 | S06A-EN-1290 SS+2d | 50% | 130d |
| S06A-EN-1320 |  | Robotic Cleaning System Docking Station Structure Fabrication Details | 6d | 2026-04-08 A | 2026-08-25 | S06A-EN-1300 SS+1d | 50% | 399.22d |
|  | 9 | **CABLE SUPPORT** |  | 2026-03-19 | 2026-03-23 |  |  |  |
| S06A-EN-1340 |  | Cable Supporting Structure Drawing | 25d | 2026-03-19 A | 2026-03-23 A | S06A-EN-1330 SS+2d | 100% |  |
| S06A-EN-1330 |  | Cable Supporting Structure Design Calculation | 25d | 2026-03-23 A | 2026-03-23 A | S06A-MS-1010 FS+75d | 100% |  |
|  | 10 | **DRAINAGE** |  | 2026-05-05 | 2026-07-24 |  |  |  |
| S06A-EN-1360 |  | Plant Drainage System Drawing | 6d | 2026-05-05 A | 2026-05-20 A | S06A-EN-1350 SS+2d | 100% |  |
| S06A-EN-1350 |  | Plant Drainage System Design Calculations | 6d | 2026-07-20 A | 2026-07-24 A | S06A-EN-1020 FS+39d | 100% |  |
|  | 11 | **ROAD** |  | 2026-03-26 | 2026-07-24 |  |  |  |
| S06A-EN-1370 |  | Road Layout For Plot | 6d | 2026-03-26 A | 2026-04-09 A | S06A-EN-1010 FS+34d | 100% |  |
| S06A-EN-1380 |  | Road Detailed Drawing And Cross Sections | 6d | 2026-03-26 A | 2026-03-28 A | S06A-EN-1370 SS+1d | 100% |  |
| S06A-EN-1390 |  | Typical Culvert Details | 10d | 2026-07-20 A | 2026-07-24 A | S06A-EN-1380 SS+3d | 100% |  |
|  | 12 | **PILE TEST** |  | 2026-01-28 | 2026-02-02 |  |  |  |
| S06A-EN-1400 |  | MMS Pile Load Test Marking Layout (Pullout , Lateral And Compression Test ) | 6d | 2026-01-28 A | 2026-02-02 A | S06A-EN-1410 SS+4d | 100% |  |
|  | 13 | **SOIL REPORT** |  | 2026-01-27 | 2026-01-28 |  |  |  |
| S06A-EN-1410 |  | Geo-Technical Investigation Borehole Location | 2d | 2026-01-27 A | 2026-01-28 A | S06A-MS-1010 FS+36d | 100% |  |
|  | 14 | **FT** |  | 2026-03-02 | 2026-07-24 |  |  |  |
| S06A-EN-1420 |  | FIX TILT Pile Load Test Methodology | 23d | 2026-03-02 A | 2026-04-11 A | S06A-EN-1050 SS+8d | 100% |  |
| S06A-EN-1430 |  | FIX TILT Design Basis Report | 51d | 2026-03-02 A | 2026-04-03 A | S06A-EN-1050 SS+8d | 100% |  |
| S06A-EN-1440 |  | Design Calculation for MMS FIX TILT Foundation | 23d | 2026-03-02 A | 2026-04-09 A | S06A-EN-1040 | 100% |  |
| S06A-EN-1460 |  | GA of 2Px28 MMS Exterior Table (MMS FIX TILT GA) | 23d | 2026-03-02 A | 2026-04-11 A | S06A-EN-1450 SS+2d | 100% |  |
| S06A-EN-1470 |  | GA of 2Px28 MMS Interior Table (MMS FIX TILT GA) | 23d | 2026-03-02 A | 2026-04-11 A | S06A-EN-1450, S06A-EN-1460 SS | 100% |  |
| S06A-EN-1480 |  | FIX TILT Foundation Drawings | 23d | 2026-03-02 A | 2026-07-03 A | S06A-EN-1440 | 100% |  |
| S06A-EN-1490 |  | MMS FIX TILT Fabrication Drawings (Exterior) | 23d | 2026-03-02 A | 2026-04-11 A | S06A-EN-1480, S06A-EN-1460 | 100% |  |
| S06A-EN-1500 |  | MMS FIX TILT Fabrication Drawings (Interior) | 23d | 2026-03-02 A | 2026-04-11 A | S06A-EN-1480, S06A-EN-1470 | 100% |  |
| S06A-EN-1450 |  | Design Calculation for MMS FIX TILT Piers | 4d | 2026-07-20 A | 2026-07-24 A | S06A-EN-1430 FS+16d | 100% |  |
| S06A-EN-1510 |  | FIX TILT Slope Analysis | 4d | 2026-07-20 A | 2026-07-24 A | S06A-EN-1430 FS+8d | 100% |  |
|  | 15 | **CABLE HANGER** |  | 2026-03-19 | 2026-05-01 |  |  |  |
| S06A-EN-1530 |  | Cable Hanger Arrangement- Fabrication | 24d | 2026-03-19 A | 2026-03-23 A | S06A-EN-1520 SS+1d | 100% |  |
| S06A-EN-1520 |  | Cable Hanger Arrangement- GA | 24d | 2026-04-27 A | 2026-05-01 A | S06A-EN-1340 SS, S06A-EN-2900 | 100% |  |
|  | 16 | **ROBOT COMMUNICATION BOX** |  | 2026-04-08 | 2026-08-25 |  |  |  |
| S06A-EN-1540 |  | Robot Communication Box GA & Foundation | 5d | 2026-04-08 A | 2026-08-25 | S06A-MS-1010 FS+70d | 50% | 307d |
| S06A-EN-1550 |  | Robot Installation Manual | 5d | 2026-04-08 A | 2026-08-25 | S06A-EN-1320 SS | 50% | 134d |
|  | 2 | **ELECTRICAL** |  | 2026-02-09 | 2026-08-28 |  |  |  |

| ID | WBS | Task | Duration | Start | Finish | Predecessors | Complete | Total float |
| --- | --- | --- | --- | --- | --- | --- | --- | --- |
|  | 1 | **ARRAY YARD** |  | 2026-02-10 | 2026-03-19 |  |  |  |
| S06A-EN-1560 |  | Overall Plant Array Layout | 44d | 2026-02-10 A | 2026-03-19 A | S06A-MS-1010 FS+28.8d | 100% |  |
|  | 2 | **SLD** |  | 2026-02-09 | 2026-03-22 |  |  |  |
| S06A-EN-1570 |  | Overall Plant AC SLD | 45d | 2026-02-09 A | 2026-03-09 A | S06A-EN-1590 SS | 100% |  |
| S06A-EN-1590 |  | Auxiliary Load Sizing & Auxiliary SLD | 34d | 2026-02-20 A | 2026-03-07 A | S06A-EN-1560 SS+2d | 100% |  |
| S06A-EN-1580 |  | Overall Plant DC SLD | 5d | 2026-03-09 A | 2026-03-22 A | S06A-EN-1620 SS+8.89d | 100% |  |
|  | 3 | **INVERTER** |  | 2026-02-12 | 2026-02-12 |  |  |  |
| S06A-EN-1600 |  | Inverter Datasheet | 1d | 2026-02-12 A | 2026-02-12 A | S06A-MS-1010 FS+28.8d | 100% |  |
| S06A-EN-1610 |  | Inverter Installation Manual | 1d | 2026-02-12 A | 2026-02-12 A | S06A-EN-1600 SS | 100% |  |
|  | 4 | **PV MODULE** |  | 2026-02-11 | 2026-02-19 |  |  |  |
| S06A-EN-1620 |  | PV Module Data Sheet | 1d | 2026-02-11 A | 2026-02-11 A | S06A-MS-1010 FS+28.8d | 100% |  |
| S06A-EN-1630 |  | PV Module Installation Manual | 1d | 2026-02-19 A | 2026-02-19 A | S06A-EN-1620 SS | 100% |  |
|  | 5 | **IDT TRANSFORMER** |  | 2026-03-05 | 2026-03-05 |  |  |  |
| S06A-EN-1640 |  | GA Drawings With List of Fittings For IDT | 1d | 2026-03-05 A | 2026-03-05 A | S06A-EN-1570 SS | 100% |  |
| S06A-EN-1650 |  | GA of Marshalling Box & Wiring Diagram | 1d | 2026-03-05 A | 2026-03-05 A | S06A-EN-1640 SS | 100% |  |
| S06A-EN-1660 |  | NIFPS (Nitrogen Injection & Fire Protection System) Drawings | 1d | 2026-03-05 A | 2026-03-05 A | S06A-EN-1640 SS | 100% |  |
| S06A-EN-1670 |  | GTP of IDT | 1d | 2026-03-05 A | 2026-03-05 A | S06A-EN-1570 SS | 100% |  |
| S06A-EN-1680 |  | O&M Manual Of IDT | 1d | 2026-03-05 A | 2026-03-05 A | S06A-EN-1670 SS | 100% |  |
|  | 6 | **HT CABLE** |  | 2026-02-12 | 2026-02-20 |  |  |  |
| S06A-EN-1690 |  | HT Cable Sizing Calculation | 9d | 2026-02-12 A | 2026-02-20 A | S06A-EN-1560 FF, S06A-EN-1560 FS+6d | 100% |  |
| S06A-EN-1700 |  | GTP of HT Cable 3C X 300 Sq.mm | 5d | 2026-02-12 A | 2026-02-12 A | S06A-EN-1690 SS | 100% |  |
|  | 7 | **LT CABLE** |  | 2026-02-12 | 2026-02-20 |  |  |  |
| S06A-EN-1730 |  | GTP of LT Cable 3C X 300 Sq.mm | 1d | 2026-02-12 A | 2026-02-12 A | S06A-EN-1720 SS | 100% |  |
| S06A-EN-1720 |  | LT Cable Sizing Calculation | 8d | 2026-02-13 A | 2026-02-20 A | S06A-EN-1560 SS+1d | 100% |  |
|  | 8 | **DC CABLE** |  | 2026-02-12 | 2026-02-12 |  |  |  |
| S06A-EN-1710 |  | GTP of DC String Cable | 1d | 2026-02-12 A | 2026-02-12 A | S06A-EN-1560 FS+6d | 100% |  |
|  | 10 | **HDPE/DWC PIPE** |  | 2026-03-03 | 2026-03-03 |  |  |  |
| S06A-EN-1770 |  | GTP of HDPE / DWC Pipe | 1d | 2026-03-03 A | 2026-03-03 A | S06A-EN-1560 SS+1d | 100% |  |
|  | 9 | **LT PANEL** |  | 2026-02-12 | 2026-06-10 |  |  |  |
| S06A-EN-1740 |  | GA, GTP, SLD, BOM And Scheme Drawing Of FRP Based LT Panel Type-1 | 1d | 2026-02-12 A | 2026-02-12 A | S06A-EN-1560 SS+1d | 100% |  |
| S06A-EN-1750 |  | GA, GTP, SLD, BOM And Scheme Drawing Of FRP Based LT Panel Type-NNX | 1d | 2026-02-12 A | 2026-02-12 A | S06A-EN-1560 SS+1d | 100% |  |
| S06A-EN-1760 |  | GA, GTP, SLD, BOM And Scheme Drawing Of ACDB | 6d | 2026-06-08 A | 2026-06-10 A | S06A-EN-1560 SS+1d | 100% |  |
|  | 11 | **AUX TRANSFORMER** |  | 2026-04-28 | 2026-05-01 |  |  |  |
| S06A-EN-1780 |  | GA, GTP of Auxiliary Transformer | 6d | 2026-04-28 A | 2026-05-01 A | S06A-EN-1560 SS+1d | 100% |  |
|  | 12 | **LT & CONTROL CABLE** |  | 2026-04-25 | 2026-04-30 |  |  |  |
| S06A-EN-1790 |  | GTP of LT & Control Cable | 6d | 2026-04-25 A | 2026-04-30 A | S06A-EN-1560 SS+1d | 100% |  |
|  | 13 | **HT OUTDOOR PANEL** |  | 2026-07-20 | 2026-07-24 |  |  |  |
| S06A-EN-1810 |  | GA, GTP Drawing of HT Outdoor Panel | 6d | 2026-07-20 A | 2026-07-24 A | S06A-EN-1560 SS+1d | 100% |  |
|  | 14 | **ROBORT** |  | 2026-08-23 | 2026-08-28 |  |  |  |
| S06A-EN-1800 |  | GA, GTP, SLD, MBOM And Scheme Drawing | 6d | 2026-08-23 | 2026-08-28 | S06A-EN-1560 SS+1d |  | 22d |
|  | 15 | **MC4 CONNECTOR** |  | 2026-04-25 | 2026-04-30 |  |  |  |
| S06A-EN-1820 |  | GA, GTP of MC4 Connector | 6d | 2026-04-25 A | 2026-04-30 A | S06A-EN-1560 SS+1d | 100% |  |
|  | 16 | **CABLE JOINTING & TERMINATION KITS** |  | 2026-06-12 | 2026-06-16 |  |  |  |
| S06A-EN-1830 |  | GA, GTP of Cable Jointing & Termination Kits | 6d | 2026-06-12 A | 2026-06-16 A | S06A-EN-1560 SS+1d | 100% |  |
|  | 17 | **EARTH RODS** |  | 2026-06-22 | 2026-06-23 |  |  |  |
| S06A-EN-1840 |  | GTP of Earth Electrodes | 6d | 2026-06-22 A | 2026-06-23 A | S06A-EN-1560 SS+1d | 100% |  |
|  | 18 | **LUGS & GLANDS** |  | 2026-07-20 | 2026-07-24 |  |  |  |
| S06A-EN-1850 |  | GA, GTP Of Lugs & Glands | 6d | 2026-07-20 A | 2026-07-24 A | S06A-MS-1010 FS+28.8d | 100% |  |
|  | 19 | **LIGHTING FIXTURE** |  | 2026-06-20 | 2026-07-15 |  |  |  |
| S06A-EN-1860 |  | GTP Of Lighting Fixtures | 6d | 2026-06-20 A | 2026-07-15 A | S06A-EN-1560 SS+1d | 100% |  |
|  | 20 | **WEATHER MONITERING SYSTEM** |  | 2026-04-13 | 2026-04-13 |  |  |  |
| S06A-EN-1870 |  | WMS with AWS Layout | 6d | 2026-04-13 A | 2026-04-13 A | S06A-EN-1560 FS+44d | 100% |  |
| S06A-EN-1880 |  | WMS with AWS GTP, DRAWINGS & QAP | 4d | 2026-04-13 A | 2026-04-13 A | S06A-MS-1010, S06A-EN-1870 SS+4d | 100% |  |
|  | 21 | **EARTHING** |  | 2026-03-26 | 2026-04-21 |  |  |  |
| S06A-EN-1890 |  | Earthing Calculation | 6d | 2026-03-26 A | 2026-04-21 A | S06A-MS-1010 FS+42.3d | 100% |  |
|  | 22 | **ARRAY YARD-EARTHING** |  | 2026-03-23 | 2026-04-21 |  |  |  |
| S06A-EN-1900 |  | Typical Array Earthing Details | 6d | 2026-03-23 A | 2026-04-21 A | S06A-EN-1890 | 100% |  |
|  | 23 | **ARRAY YARD-LIGHTNING** |  | 2026-03-30 | 2026-04-13 |  |  |  |
| S06A-EN-1910 |  | Typical Array Lighting Protection Details | 6d | 2026-03-30 A | 2026-04-13 A | S06A-MS-1010 FS+45.9d | 100% |  |
|  | 24 | **ARRAY YARD-LT CABLE** |  | 2026-03-13 | 2026-03-19 |  |  |  |
| S06A-EN-1920 |  | LT Cable Typical Section Details Drawing | 6d | 2026-03-13 A | 2026-03-19 A | S06A-EN-1720 FS+22d | 100% |  |
|  | 25 | **ARRAY YARD-HT & FO CABLE** |  | 2026-04-21 | 2026-06-01 |  |  |  |
| S06A-EN-1940 |  | HT Cable Typical Section Details Drawing | 6d | 2026-04-21 A | 2026-04-24 A | S06A-EN-1690 FS+17d | 100% |  |
| S06A-EN-1930 |  | HT & FO Cable Routing Layout | 6d | 2026-04-30 A | 2026-06-01 A | S06A-EN-1570 FS+26d | 100% |  |
| S06A-EN-1950 |  | HT Cable Schedule | 6d | 2026-04-30 A | 2026-06-01 A | S06A-EN-1690 FS+17d | 100% |  |
| S06A-EN-1960 |  | FO Cable Schedule | 6d | 2026-04-30 A | 2026-06-01 A | S06A-EN-1930 SS | 100% |  |
|  | 26 | **ARRAY YARD DC** |  | 2026-04-18 | 2026-05-14 |  |  |  |
| S06A-EN-1970 |  | Typical DC String Cable Arrangement | 6d | 2026-04-18 A | 2026-05-14 A | S06A-EN-1580 FS+26d | 100% |  |
|  | 27 | **IDT STATION** |  | 2026-02-27 | 2026-08-28 |  |  |  |
| S06A-EN-1990 |  | Equipment Layout Of IDT Station Type Bb (33Kv Switchgear) | 28d | 2026-02-27 A | 2026-03-23 A | S06A-EN-1570 FS+1d | 100% |  |

| ID | WBS | Task | Duration | Start | Finish | Predecessors | Complete | Total float |
| --- | --- | --- | --- | --- | --- | --- | --- | --- |
| S06A-EN-2000 |  | Illumination Layout Of IDT Station Type Bb (33Kv Switchgear) | 22d | 2026-03-05 A | 2026-04-13 A | S06A-EN-1990 FS+14d | 100% |  |
| S06A-EN-2020 |  | Earthing Layout Of IDT Station Type Bb (33Kv Switchgear) | 6d | 2026-03-30 A | 2026-04-13 A | S06A-EN-1990 FS+15d | 100% |  |
| S06A-EN-1980 |  | Lightening Protection System Layout | 6d | 2026-03-31 A | 2026-04-22 A | S06A-EN-1990 FS+25d | 100% |  |
| S06A-EN-2010 |  | Cable Route Layout Of IDT Station Type Bb (33Kv Switchgear) | 6d | 2026-04-01 A | 2026-04-14 A | S06A-EN-1990 FS+14d | 100% |  |
| S06A-EN-2030 |  | Control & Auxiliary Cable Schedule Of IDT Station | 6d | 2026-08-23 | 2026-08-28 | S06A-EN-1990 FS+15d |  | 128d |
|  | 28 | **CONTROL & INSTRUMENTATION CABLES** |  | 2026-03-16 | 2026-08-24 |  |  |  |
| S06A-EN-2060 |  | RS485, CAT6 & FO Cable GTP, Cross-Section Drawings & QAP | 4d | 2026-03-16 A | 2026-03-16 A | S06A-EN-2050 SS+2d | 100% |  |
| S06A-EN-2050 |  | Communication & Control Cable Schedule of SCADA | 4d | 2026-04-04 A | 2026-08-24 | S06A-EN-2040 SS | 50% | 400.22d |
| S06A-EN-2040 |  | Communication & Control Cable Routing Layout of SCADA | 4d | 2026-05-06 A | 2026-05-08 A | S06A-EN-1560 FS+35d | 100% |  |
|  | 29 | **MODULE ALLOCATION** |  | 2026-07-20 | 2026-07-24 |  |  |  |
| S06A-EN-2070 |  | Module Allocation Schedule | 4d | 2026-07-20 A | 2026-07-24 A | S06A-EN-1560 SS+9d | 100% |  |
|  | 30 | **SCADA & PPC** |  | 2026-03-16 | 2026-08-24 |  |  |  |
| S06A-EN-2080 |  | SCADA System Architecture Communication Scheme | 4d | 2026-03-16 A | 2026-03-16 A | S06A-MS-1010 FS+54.9d | 100% |  |
| S06A-EN-2100 |  | SCADA & PPC GTP, GA Drawings & QAP | 4d | 2026-03-16 A | 2026-03-16 A | S06A-EN-2080 SS | 100% |  |
| S06A-EN-2090 |  | I/O List of SCADA System | 4d | 2026-05-13 A | 2026-08-24 | S06A-EN-2080 SS | 50% | 308d |
| S06A-EN-2110 |  | IP List | 4d | 2026-05-13 A | 2026-05-14 A | S06A-EN-2080 FS+14d | 100% |  |
|  | 2 | **FT PIER COORDINATES & LAYOUT** |  | 2026-03-20 | 2026-03-26 |  |  |  |
| S06A-EN-2120 |  | FIX TILT Pier Coordinates & Layout For Block-01 | 6d | 2026-03-20 A | 2026-03-23 A | S06A-EN-1010 | 100% |  |
| S06A-EN-2130 |  | FIX TILT Pier Coordinates & Layout For Block-02 | 6d | 2026-03-24 A | 2026-03-26 A | S06A-EN-1010 FS+1d | 100% |  |
| S06A-EN-2140 |  | FIX TILT Pier Coordinates & Layout For Block-03 | 6d | 2026-03-24 A | 2026-03-26 A | S06A-EN-1010 FS+2d | 100% |  |
| S06A-EN-2150 |  | FIX TILT Pier Coordinates & Layout For Block-04 | 6d | 2026-03-24 A | 2026-03-26 A | S06A-EN-1010 FS+3d | 100% |  |
| S06A-EN-2160 |  | FIX TILT Pier Coordinates & Layout For Block-05 | 6d | 2026-03-24 A | 2026-03-26 A | S06A-EN-1010 FS+4d | 100% |  |
| S06A-EN-2170 |  | FIX TILT Pier Coordinates & Layout For Block-06 | 6d | 2026-03-25 A | 2026-03-26 A | S06A-EN-1010 FS+5d | 100% |  |
| S06A-EN-2180 |  | FIX TILT Pier Coordinates & Layout For Block-07 | 6d | 2026-03-25 A | 2026-03-26 A | S06A-EN-1010 FS+6d | 100% |  |
| S06A-EN-2190 |  | FIX TILT Pier Coordinates & Layout For Block-08 | 6d | 2026-03-25 A | 2026-03-26 A | S06A-EN-1010 FS+7d | 100% |  |
| S06A-EN-2200 |  | FIX TILT Pier Coordinates & Layout For Block-09 | 6d | 2026-03-25 A | 2026-03-26 A | S06A-EN-1010 FS+8d | 100% |  |
| S06A-EN-2210 |  | FIX TILT Pier Coordinates & Layout For Block-10 | 6d | 2026-03-25 A | 2026-03-26 A | S06A-EN-1010 FS+9d | 100% |  |
| S06A-EN-2220 |  | FIX TILT Pier Coordinates & Layout For Block-11 | 6d | 2026-03-25 A | 2026-03-26 A | S06A-EN-1010 FS+10d | 100% |  |
| S06A-EN-2230 |  | FIX TILT Pier Coordinates & Layout For Block-12 | 6d | 2026-03-26 A | 2026-03-26 A | S06A-EN-1010 FS+11d | 100% |  |
| S06A-EN-2240 |  | FIX TILT Pier Coordinates & Layout For Block-13 | 6d | 2026-03-26 A | 2026-03-26 A | S06A-EN-1010 FS+12d | 100% |  |
| S06A-EN-2250 |  | FIX TILT Pier Coordinates & Layout For Block-14 | 6d | 2026-03-26 A | 2026-03-26 A | S06A-EN-1010 FS+13d | 100% |  |
| S06A-EN-2260 |  | FIX TILT Pier Coordinates & Layout For Block-15 | 6d | 2026-03-26 A | 2026-03-26 A | S06A-EN-1010 FS+15d | 100% |  |
| S06A-EN-2270 |  | FIX TILT Pier Coordinates & Layout For Block-16 | 6d | 2026-03-26 A | 2026-03-26 A | S06A-EN-1010 FS+15d | 100% |  |
| S06A-EN-2280 |  | FIX TILT Pier Coordinates & Layout For Block-17 | 6d | 2026-03-26 A | 2026-03-26 A | S06A-EN-1010 FS+16d | 100% |  |
| S06A-EN-2290 |  | FIX TILT Pier Coordinates & Layout For Block-18 | 6d | 2026-03-26 A | 2026-03-26 A | S06A-EN-1010 FS+16d | 100% |  |
| S06A-EN-2300 |  | FIX TILT Pier Coordinates & Layout For Block-19 | 6d | 2026-03-26 A | 2026-03-26 A | S06A-EN-1010 FS+17d | 100% |  |
|  | 3 | **ARRAY EARTHING LAYOUT** |  | 2026-03-28 | 2026-04-17 |  |  |  |
| S06A-EN-2310 |  | Array Earthing Layout (Plot-S07) For Block-01 | 6d | 2026-03-28 A | 2026-04-16 A | S06A-EN-1890 SS+3d | 100% |  |
| S06A-EN-2320 |  | Array Earthing Layout (Plot-S07) For Block-02 | 6d | 2026-03-28 A | 2026-04-16 A | S06A-EN-1890 SS+3d | 100% |  |
| S06A-EN-2330 |  | Array Earthing Layout (Plot-S07) For Block-03 | 6d | 2026-03-28 A | 2026-04-10 A | S06A-EN-1890 SS+3d | 100% |  |
| S06A-EN-2340 |  | Array Earthing Layout (Plot-S07) For Block-04 | 6d | 2026-03-28 A | 2026-04-10 A | S06A-EN-1890 SS+3d | 100% |  |
| S06A-EN-2350 |  | Array Earthing Layout (Plot-S07) For Block-05 | 6d | 2026-03-28 A | 2026-04-17 A | S06A-EN-1890 SS+3d | 100% |  |
| S06A-EN-2360 |  | Array Earthing Layout (Plot-S07) For Block-06 | 6d | 2026-04-02 A | 2026-04-17 A | S06A-EN-1890 SS+3d | 100% |  |
| S06A-EN-2370 |  | Array Earthing Layout (Plot-S07) For Block-07 | 6d | 2026-04-02 A | 2026-04-17 A | S06A-EN-1890 SS+3d | 100% |  |
| S06A-EN-2380 |  | Array Earthing Layout (Plot-S07) For Block-08 | 6d | 2026-04-02 A | 2026-04-17 A | S06A-EN-1890 SS+3d | 100% |  |
| S06A-EN-2390 |  | Array Earthing Layout (Plot-S07) For Block-09 | 6d | 2026-04-02 A | 2026-04-17 A | S06A-EN-1890 SS+3d | 100% |  |
| S06A-EN-2400 |  | Array Earthing Layout (Plot-S07) For Block-10 | 6d | 2026-04-02 A | 2026-04-17 A | S06A-EN-1890 SS+3d | 100% |  |
| S06A-EN-2410 |  | Array Earthing Layout (Plot-S07) For Block-11 | 6d | 2026-04-02 A | 2026-04-17 A | S06A-EN-1890 SS+3d | 100% |  |
| S06A-EN-2420 |  | Array Earthing Layout (Plot-S07) For Block-12 | 6d | 2026-04-02 A | 2026-04-17 A | S06A-EN-1890 SS+3d | 100% |  |
| S06A-EN-2430 |  | Array Earthing Layout (Plot-S07) For Block-13 | 6d | 2026-04-02 A | 2026-04-17 A | S06A-EN-1890 SS+3d | 100% |  |
| S06A-EN-2440 |  | Array Earthing Layout (Plot-S07) For Block-14 | 6d | 2026-04-02 A | 2026-04-17 A | S06A-EN-1890 SS+3d | 100% |  |
| S06A-EN-2450 |  | Array Earthing Layout (Plot-S07) For Block-15 | 6d | 2026-04-03 A | 2026-04-17 A | S06A-EN-1890 SS+3d | 100% |  |
| S06A-EN-2460 |  | Array Earthing Layout (Plot-S07) For Block-16 | 6d | 2026-04-03 A | 2026-04-17 A | S06A-EN-1890 SS+3d | 100% |  |
| S06A-EN-2470 |  | Array Earthing Layout (Plot-S07) For Block-17 | 6d | 2026-04-03 A | 2026-04-17 A | S06A-EN-1890 SS+3d | 100% |  |
| S06A-EN-2480 |  | Array Earthing Layout (Plot-S07) For Block-18 | 6d | 2026-04-03 A | 2026-04-17 A | S06A-EN-1890 SS+3d | 100% |  |
| S06A-EN-2490 |  | Array Earthing Layout (Plot-S07) For Block-19 | 6d | 2026-04-03 A | 2026-04-17 A | S06A-EN-1890 SS+3d | 100% |  |
|  | 4 | **LT CABLE ROUTING LAYOUT** |  | 2026-03-26 | 2026-05-01 |  |  |  |
| S06A-EN-2500 |  | LT Cable Routing Layout (Plot-S07) For Block-01 | 6d | 2026-03-26 A | 2026-04-06 A | S06A-EN-1720 FS+26d | 100% |  |
| S06A-EN-2510 |  | LT Cable Routing Layout (Plot-S07) For Block-02 | 6d | 2026-03-26 A | 2026-04-07 A | S06A-EN-1720 FS+26d | 100% |  |
| S06A-EN-2520 |  | LT Cable Routing Layout (Plot-S07) For Block-03 | 6d | 2026-03-27 A | 2026-04-06 A | S06A-EN-1720 FS+26d | 100% |  |
| S06A-EN-2530 |  | LT Cable Routing Layout (Plot-S07) For Block-04 | 6d | 2026-03-27 A | 2026-04-06 A | S06A-EN-1720 FS+26d | 100% |  |
| S06A-EN-2540 |  | LT Cable Routing Layout (Plot-S07) For Block-05 | 6d | 2026-03-27 A | 2026-04-20 A | S06A-EN-1720 FS+26d | 100% |  |
| S06A-EN-2550 |  | LT Cable Routing Layout (Plot-S07) For Block-06 | 6d | 2026-04-06 A | 2026-04-30 A | S06A-EN-1720 FS+26d | 100% |  |
| S06A-EN-2560 |  | LT Cable Routing Layout (Plot-S07) For Block-07 | 6d | 2026-04-06 A | 2026-04-20 A | S06A-EN-1720 FS+26d | 100% |  |
| S06A-EN-2570 |  | LT Cable Routing Layout (Plot-S07) For Block-08 | 6d | 2026-04-07 A | 2026-04-20 A | S06A-EN-1720 FS+26d | 100% |  |
| S06A-EN-2580 |  | LT Cable Routing Layout (Plot-S07) For Block-09 | 6d | 2026-04-07 A | 2026-04-21 A | S06A-EN-1720 FS+26d | 100% |  |
| S06A-EN-2590 |  | LT Cable Routing Layout (Plot-S07) For Block-10 | 6d | 2026-04-09 A | 2026-04-21 A | S06A-EN-1720 FS+26d | 100% |  |
| S06A-EN-2600 |  | LT Cable Routing Layout (Plot-S07) For Block-11 | 6d | 2026-04-09 A | 2026-04-30 A | S06A-EN-1720 FS+26d | 100% |  |
| S06A-EN-2610 |  | LT Cable Routing Layout (Plot-S07) For Block-12 | 6d | 2026-04-09 A | 2026-05-01 A | S06A-EN-1720 FS+26d | 100% |  |
| S06A-EN-2620 |  | LT Cable Routing Layout (Plot-S07) For Block-13 | 6d | 2026-04-10 A | 2026-05-01 A | S06A-EN-1720 FS+26d | 100% |  |

| ID | WBS | Task | Duration | Start | Finish | Predecessors | Complete | Total float |
| --- | --- | --- | --- | --- | --- | --- | --- | --- |
| S06A-EN-2630 |  | LT Cable Routing Layout (Plot-S07) For Block-14 | 6d | 2026-04-10 A | 2026-04-22 A | S06A-EN-1720 FS+26d | 100% |  |
| S06A-EN-2640 |  | LT Cable Routing Layout (Plot-S07) For Block-15 | 6d | 2026-04-13 A | 2026-04-30 A | S06A-EN-1720 FS+26d | 100% |  |
| S06A-EN-2650 |  | LT Cable Routing Layout (Plot-S07) For Block-16 | 6d | 2026-04-14 A | 2026-04-16 A | S06A-EN-1720 FS+26d | 100% |  |
| S06A-EN-2660 |  | LT Cable Routing Layout (Plot-S07) For Block-17 | 6d | 2026-04-14 A | 2026-04-23 A | S06A-EN-1720 FS+26d | 100% |  |
| S06A-EN-2670 |  | LT Cable Routing Layout (Plot-S07) For Block-18 | 6d | 2026-04-14 A | 2026-04-30 A | S06A-EN-1720 FS+26d | 100% |  |
| S06A-EN-2680 |  | LT Cable Routing Layout (Plot-S07) For Block-19 | 6d | 2026-04-14 A | 2026-04-30 A | S06A-EN-1720 FS+26d | 100% |  |
|  | 5 | **LT CABLE SCHEDULE** |  | 2026-03-25 | 2026-05-01 |  |  |  |
| S06A-EN-2690 |  | LT Cable Schedule (Plot-S07) For Block-01 | 6d | 2026-03-25 A | 2026-04-06 A | S06A-EN-2500 SS+1d | 100% |  |
| S06A-EN-2700 |  | LT Cable Schedule (Plot-S07) For Block-02 | 6d | 2026-03-25 A | 2026-03-31 A | S06A-EN-2510 SS+1d | 100% |  |
| S06A-EN-2710 |  | LT Cable Schedule (Plot-S07) For Block-03 | 6d | 2026-03-27 A | 2026-04-01 A | S06A-EN-2520 SS+1d | 100% |  |
| S06A-EN-2720 |  | LT Cable Schedule (Plot-S07) For Block-04 | 6d | 2026-03-27 A | 2026-04-04 A | S06A-EN-2530 SS+1d | 100% |  |
| S06A-EN-2730 |  | LT Cable Schedule (Plot-S07) For Block-05 | 6d | 2026-04-04 A | 2026-04-20 A | S06A-EN-2540 SS+1d | 100% |  |
| S06A-EN-2740 |  | LT Cable Schedule (Plot-S07) For Block-06 | 6d | 2026-04-06 A | 2026-04-30 A | S06A-EN-2550 SS+1d | 100% |  |
| S06A-EN-2750 |  | LT Cable Schedule (Plot-S07) For Block-07 | 6d | 2026-04-06 A | 2026-04-20 A | S06A-EN-2560 SS+1d | 100% |  |
| S06A-EN-2760 |  | LT Cable Schedule (Plot-S07) For Block-08 | 6d | 2026-04-07 A | 2026-04-20 A | S06A-EN-2570 SS+1d | 100% |  |
| S06A-EN-2770 |  | LT Cable Schedule (Plot-S07) For Block-09 | 6d | 2026-04-07 A | 2026-04-21 A | S06A-EN-2580 SS+1d | 100% |  |
| S06A-EN-2780 |  | LT Cable Schedule (Plot-S07) For Block-10 | 6d | 2026-04-09 A | 2026-04-21 A | S06A-EN-2590 SS+1d | 100% |  |
| S06A-EN-2790 |  | LT Cable Schedule (Plot-S07) For Block-11 | 6d | 2026-04-09 A | 2026-04-30 A | S06A-EN-2600 SS+1d | 100% |  |
| S06A-EN-2800 |  | LT Cable Schedule (Plot-S07) For Block-12 | 6d | 2026-04-09 A | 2026-04-21 A | S06A-EN-2610 SS+1d | 100% |  |
| S06A-EN-2810 |  | LT Cable Schedule (Plot-S07) For Block-13 | 6d | 2026-04-10 A | 2026-05-01 A | S06A-EN-2620 SS+1d | 100% |  |
| S06A-EN-2820 |  | LT Cable Schedule (Plot-S07) For Block-14 | 6d | 2026-04-10 A | 2026-04-22 A | S06A-EN-2630 SS+1d | 100% |  |
| S06A-EN-2830 |  | LT Cable Schedule (Plot-S07) For Block-15 | 6d | 2026-04-13 A | 2026-04-30 A | S06A-EN-2640 SS+1d | 100% |  |
| S06A-EN-2840 |  | LT Cable Schedule (Plot-S07) For Block-16 | 6d | 2026-04-14 A | 2026-04-16 A | S06A-EN-2650 SS+1d | 100% |  |
| S06A-EN-2850 |  | LT Cable Schedule (Plot-S07) For Block-17 | 6d | 2026-04-14 A | 2026-04-30 A | S06A-EN-2660 SS+1d | 100% |  |
| S06A-EN-2860 |  | LT Cable Schedule (Plot-S07) For Block-18 | 6d | 2026-04-14 A | 2026-04-30 A | S06A-EN-2670 SS+1d | 100% |  |
| S06A-EN-2870 |  | LT Cable Schedule (Plot-S07) For Block-19 | 6d | 2026-04-14 A | 2026-04-30 A | S06A-EN-2680 SS+1d | 100% |  |
|  | 6 | **PILE LAYOUT FOR CABLE HANGING ARRAGMENT** |  | 2026-04-10 | 2026-05-21 |  |  |  |
| S06A-EN-2920 |  | Pile Layout For Cable Hanging Arrangement For Block-05 | 6d | 2026-04-10 A | 2026-04-15 A | S06A-EN-2540 FS+4d | 100% |  |
| S06A-EN-2880 |  | Pile Layout For Cable Hanging Arrangement For Block-01 | 6d | 2026-04-17 A | 2026-04-18 A | S06A-EN-2500 | 100% |  |
| S06A-EN-2890 |  | Pile Layout For Cable Hanging Arrangement For Block-02 | 6d | 2026-04-17 A | 2026-04-18 A | S06A-EN-2510 FS+1d | 100% |  |
| S06A-EN-2900 |  | Pile Layout For Cable Hanging Arrangement For Block-03 | 6d | 2026-04-22 A | 2026-05-21 A | S06A-EN-2520 FS+2d | 100% |  |
| S06A-EN-2910 |  | Pile Layout For Cable Hanging Arrangement For Block-04 | 6d | 2026-04-22 A | 2026-05-21 A | S06A-EN-2530 FS+3d | 100% |  |
| S06A-EN-2940 |  | Pile Layout For Cable Hanging Arrangement For Block-07 | 6d | 2026-04-30 A | 2026-05-21 A | S06A-EN-2560 FS+6d | 100% |  |
| S06A-EN-2950 |  | Pile Layout For Cable Hanging Arrangement For Block-08 | 6d | 2026-04-30 A | 2026-05-21 A | S06A-EN-2570 FS+7d | 100% |  |
| S06A-EN-2960 |  | Pile Layout For Cable Hanging Arrangement For Block-09 | 6d | 2026-04-30 A | 2026-05-21 A | S06A-EN-2580 FS+8d | 100% |  |
| S06A-EN-2970 |  | Pile Layout For Cable Hanging Arrangement For Block-10 | 6d | 2026-04-30 A | 2026-05-21 A | S06A-EN-2590 FS+9d | 100% |  |
| S06A-EN-3010 |  | Pile Layout For Cable Hanging Arrangement For Block-14 | 6d | 2026-04-30 A | 2026-05-21 A | S06A-EN-2630 FS+13d | 100% |  |
| S06A-EN-2930 |  | Pile Layout For Cable Hanging Arrangement For Block-06 | 6d | 2026-05-04 A | 2026-05-21 A | S06A-EN-2550 FS+5d | 100% |  |
| S06A-EN-3030 |  | Pile Layout For Cable Hanging Arrangement For Block-16 | 6d | 2026-05-04 A | 2026-05-21 A | S06A-EN-2650 FS+15d | 100% |  |
| S06A-EN-2980 |  | Pile Layout For Cable Hanging Arrangement For Block-11 | 6d | 2026-05-06 A | 2026-05-21 A | S06A-EN-2600 FS+10d | 100% |  |
| S06A-EN-2990 |  | Pile Layout For Cable Hanging Arrangement For Block-12 | 6d | 2026-05-06 A | 2026-05-21 A | S06A-EN-2610 FS+11d | 100% |  |
| S06A-EN-3000 |  | Pile Layout For Cable Hanging Arrangement For Block-13 | 6d | 2026-05-06 A | 2026-05-21 A | S06A-EN-2620 FS+12d | 100% |  |
| S06A-EN-3050 |  | Pile Layout For Cable Hanging Arrangement For Block-18 | 6d | 2026-05-06 A | 2026-05-21 A | S06A-EN-2670 FS+17d | 100% |  |
| S06A-EN-3020 |  | Pile Layout For Cable Hanging Arrangement For Block-15 | 6d | 2026-05-07 A | 2026-05-21 A | S06A-EN-2640 FS+14d | 100% |  |
| S06A-EN-3040 |  | Pile Layout For Cable Hanging Arrangement For Block-17 | 6d | 2026-05-07 A | 2026-05-21 A | S06A-EN-2660 FS+16d | 100% |  |
| S06A-EN-3060 |  | Pile Layout For Cable Hanging Arrangement For Block-19 | 6d | 2026-05-07 A | 2026-05-21 A | S06A-EN-2680 FS+18d | 100% |  |
|  | 4 | **PROCUREMENT** |  | 2026-01-21 | 2027-01-07 |  |  |  |
|  | 1 | **PROCUREMENT- ORDERING & DELIVERY** |  | 2026-01-21 | 2027-01-07 |  |  |  |
|  | 1 | **PILING STUB - MMS** |  | 2026-01-21 | 2026-09-09 |  |  |  |
| S06A-PR-1000 |  | Piling Stub MMS-BOQ & Tech Specs Release | 2d | 2026-01-21 A | 2026-01-22 A | S06A-EN-1400 SS+10d | 100% |  |
| S06A-PR-1010 |  | Piling Stub MMS-TBER | 31d | 2026-01-23 A | 2026-01-23 A | S06A-PR-1000 | 100% |  |
| S06A-PR-1020 |  | Piling Stub MMS-Purchase Requisition | 1d | 2026-01-24 A | 2026-01-24 A | S06A-PR-1010 | 100% |  |
| S06A-PR-1030 |  | Piling Stub MMS-Note For Approval | 1d | 2026-01-27 A | 2026-01-27 A | S06A-PR-1020 | 100% |  |
| S06A-PR-1040 |  | Piling Stub MMS-LOI / PO Release | 1d | 2026-01-27 A | 2026-01-27 A | S06A-PR-1030 | 100% |  |
| S06A-PR-1050 |  | Piling Stub MMS-Manufacturing Clearance & Manufacturing | 40d | 2026-03-29 A | 2026-09-09 | S06A-PR-1040 FS+10d | 45% | 384.22d |
| S06A-PR-1060 |  | Piling Stub MMS-Dispatch For Site-Lot-01 | 8d | 2026-05-06 A | 2026-06-05 A | S06A-PR-1050 SS+37d | 100% |  |
| S06A-PR-1070 |  | Piling Stub MMS-Receipt At Site-Lot-01 | 8d | 2026-05-08 A | 2026-06-16 A | S06A-PR-1060 FF+3d, S06A-PR-1060 SS+4d | 100% |  |
| S06A-PR-1080 |  | Piling Stub MMS-Dispatch For Site-Lot-02 | 8d | 2026-06-15 A | 2026-08-27 | S06A-PR-1060 SS+5d | 38% | 82d |
| S06A-PR-1090 |  | Piling Stub MMS-Receipt At Site-Lot-02 | 8d | 2026-06-17 A | 2026-08-30 | S06A-PR-1080 SS+3d, S06A-PR-1080 FF+3d | 38% | 83d |
| S06A-PR-1100 |  | Piling Stub MMS-Dispatch For Site-Lot-03 | 8d | 2026-08-23 | 2026-08-30 | S06A-PR-1080 SS+5d |  | 82d |
| S06A-PR-1110 |  | Piling Stub MMS-Receipt At Site-Lot-03 | 8d | 2026-08-25 | 2026-09-01 | S06A-PR-1100 SS+2d, S06A-PR-1100 FF+2d |  | 83d |
| S06A-PR-1120 |  | Piling Stub MMS-Dispatch For Site-Lot-04 | 8d | 2026-08-25 | 2026-09-01 | S06A-PR-1100 SS+2d |  | 82d |
| S06A-PR-1140 |  | Piling Stub MMS-Dispatch For Site-Lot-05 | 4d | 2026-08-27 | 2026-08-30 | S06A-PR-1120 SS+2d |  | 82d |
| S06A-PR-1130 |  | Piling Stub MMS-Receipt At Site-Lot-04 | 8d | 2026-08-28 | 2026-09-04 | S06A-PR-1120 FF+3d, S06A-PR-1120 SS+3d |  | 389.22d |
| S06A-PR-1150 |  | Piling Stub MMS-Receipt At Site-Lot-05 | 3d | 2026-08-31 | 2026-09-02 | S06A-PR-1140 SS+3d, S06A-PR-1140 FF+3d |  | 82d |
|  | 2 | **PILING STUB - INVERTER** |  | 2026-04-11 | 2026-09-25 |  |  |  |
| S06A-PR-1160 |  | Piling Stub Inverter-BOQ & Tech Specs Release | 2d | 2026-04-11 A | 2026-04-12 A | S06A-EN-1600 SS+26d | 100% |  |
| S06A-PR-1170 |  | Piling Stub Inverter-TBER | 3d | 2026-04-13 A | 2026-04-15 A | S06A-PR-1160 | 100% |  |
| S06A-PR-1180 |  | Piling Stub Inverter-Purchase Requisition | 2d | 2026-04-17 A | 2026-04-17 A | S06A-PR-1170 | 100% |  |
| S06A-PR-1190 |  | Piling Stub Inverter-Note For Approval | 1d | 2026-04-25 A | 2026-04-28 A | S06A-PR-1180 | 100% |  |

| ID | WBS | Task | Duration | Start | Finish | Predecessors | Complete | Total float |
| --- | --- | --- | --- | --- | --- | --- | --- | --- |
| S06A-PR-1200 |  | Piling Stub Inverter-LOI / PO Release | 2d | 2026-04-29 A | 2026-04-30 A | S06A-PR-1190 | 100% |  |
| S06A-PR-1210 |  | Piling Stub Inverter-Manufacturing Clearance & Manufacturing | 40d | 2026-06-05 A | 2026-09-05 | S06A-PR-1200 FS+13d | 60% | 89d |
| S06A-PR-1220 |  | Piling Stub Inverter-Dispatch For Site-Lot-01 | 6d | 2026-08-23 | 2026-08-28 | S06A-PR-1210 SS+14d |  | 89d |
| S06A-PR-1230 |  | Piling Stub Inverter-Receipt At Site-Lot-01 | 6d | 2026-08-26 | 2026-08-31 | S06A-PR-1220 FF+3d, S06A-PR-1220 SS+3d |  | 114d |
| S06A-PR-1240 |  | Piling Stub Inverter-Dispatch For Site-Lot-02 | 6d | 2026-08-28 | 2026-09-02 | S06A-PR-1220 SS+5d |  | 89d |
| S06A-PR-1250 |  | Piling Stub Inverter-Receipt At Site-Lot-02 | 6d | 2026-08-31 | 2026-09-05 | S06A-PR-1240 SS+3d, S06A-PR-1240 FF+3d |  | 109d |
| S06A-PR-1260 |  | Piling Stub Inverter-Dispatch For Site-Lot-03 | 6d | 2026-09-02 | 2026-09-07 | S06A-PR-1240 SS+5d |  | 89d |
| S06A-PR-1270 |  | Piling Stub Inverter-Receipt At Site-Lot-03 | 6d | 2026-09-04 | 2026-09-09 | S06A-PR-1260 SS+2d, S06A-PR-1260 FF+2d |  | 105d |
| S06A-PR-1280 |  | Piling Stub Inverter-Dispatch For Site-Lot-04 | 6d | 2026-09-07 | 2026-09-12 | S06A-PR-1260 SS+5d |  | 89d |
| S06A-PR-1290 |  | Piling Stub Inverter-Receipt At Site-Lot-04 | 6d | 2026-09-09 | 2026-09-14 | S06A-PR-1280 SS+2d, S06A-PR-1280 FF+2d |  | 100d |
| S06A-PR-1300 |  | Piling Stub Inverter-Dispatch For Site-Lot-05 | 6d | 2026-09-12 | 2026-09-17 | S06A-PR-1280 SS+5d |  | 89d |
| S06A-PR-1310 |  | Piling Stub Inverter-Receipt At Site-Lot-05 | 6d | 2026-09-20 | 2026-09-25 | S06A-PR-1300 FS+2d, S06A-PR-1300 FF+2d, S06A-PR-1210 |  | 89d |
|  | 3 | **PILING STUB - LT CABLE SUPPORT STRUCTURE** |  | 2026-04-11 | 2026-09-20 |  |  |  |
| S06A-PR-1320 |  | Piling Stub-LT Cable Support Structure-BOQ & Tech Specs Release | 2d | 2026-04-11 A | 2026-04-12 A | S06A-MS-1010 FS+50d | 100% |  |
| S06A-PR-1330 |  | Piling Stub-LT Cable Support Structure-TBER | 3d | 2026-04-13 A | 2026-04-15 A | S06A-PR-1320 | 100% |  |
| S06A-PR-1340 |  | Piling Stub-LT Cable Support Structure-Purchase Requisition | 2d | 2026-04-17 A | 2026-04-17 A | S06A-PR-1330 | 100% |  |
| S06A-PR-1350 |  | Piling Stub-LT Cable Support Structure-Note For Approval | 1d | 2026-04-25 A | 2026-04-28 A | S06A-PR-1340 | 100% |  |
| S06A-PR-1360 |  | Piling Stub-Lt Cable Support Structure-LOI / PO Release | 2d | 2026-04-29 A | 2026-04-30 A | S06A-PR-1350 | 100% |  |
| S06A-PR-1370 |  | Piling Stub-LT Cable Support Structure-Manufacturing Clearance & Manufacturing | 40d | 2026-05-16 A | 2026-09-07 | S06A-PR-1360 FS+13d | 60% | 85d |
| S06A-PR-1380 |  | Piling Stub-LT Cable Support Structure-Dispatch For Site-Lot-01 | 6d | 2026-08-23 | 2026-08-28 | S06A-PR-1370 SS+15d |  | 85d |
| S06A-PR-1390 |  | Piling Stub-LT Cable Support Structure-Receipt At Site-Lot-01 | 6d | 2026-08-26 | 2026-08-31 | S06A-PR-1380 FF+3d, S06A-PR-1380 SS+3d |  | 100d |
| S06A-PR-1400 |  | Piling Stub-LT Cable Support Structure-Dispatch For Site-Lot-02 | 6d | 2026-08-28 | 2026-09-02 | S06A-PR-1380 SS+5d |  | 85d |
| S06A-PR-1410 |  | Piling Stub-LT Cable Support Structure-Receipt At Site-Lot-02 | 6d | 2026-08-31 | 2026-09-05 | S06A-PR-1400 SS+3d, S06A-PR-1400 FF+3d |  | 95d |
| S06A-PR-1420 |  | Piling Stub-LT Cable Support Structure-Dispatch For Site-Lot-03 | 6d | 2026-09-02 | 2026-09-07 | S06A-PR-1400 SS+5d |  | 85d |
| S06A-PR-1430 |  | Piling Stub-LT Cable Support Structure-Receipt At Site-Lot-03 | 6d | 2026-09-05 | 2026-09-10 | S06A-PR-1420 SS+3d, S06A-PR-1420 FF+3d |  | 91d |
| S06A-PR-1440 |  | Piling Stub-LT Cable Support Structure-Dispatch For Site-Lot-04 | 6d | 2026-09-07 | 2026-09-12 | S06A-PR-1420 SS+5d |  | 85d |
| S06A-PR-1450 |  | Piling Stub-LT Cable Support Structure-Receipt At Site-Lot-04 | 6d | 2026-09-10 | 2026-09-15 | S06A-PR-1440 SS+3d, S06A-PR-1440 FF+3d |  | 86d |
| S06A-PR-1460 |  | Piling Stub-LT Cable Support Structure-Dispatch For Site-Lot-05 | 6d | 2026-09-12 | 2026-09-17 | S06A-PR-1440 SS+5d, S06A-PR-1370 |  | 85d |
| S06A-PR-1470 |  | Piling Stub-LT Cable Support Structure-Receipt At Site-Lot-05 | 6d | 2026-09-15 | 2026-09-20 | S06A-PR-1460 SS+3d, S06A-PR-1460 FF+3d |  | 85d |
|  | 4 | **PILING STUB - ROBOTIC DOCKING STATION** |  | 2026-09-21 | 2026-11-22 |  |  |  |
| S06A-PR-1480 |  | Piling Stub-Robotic Docking Station-BOQ & Tech Specs Release | 2d | 2026-09-21 | 2026-09-22 | S06A-PR-5570 SS+3d |  | 38d |
| S06A-PR-1490 |  | Piling Stub-Robotic Docking Station-TBER | 3d | 2026-09-23 | 2026-09-25 | S06A-PR-1480 |  | 38d |
| S06A-PR-1500 |  | Piling Stub-Robotic Docking Station-Purchase Requisition | 2d | 2026-09-26 | 2026-09-27 | S06A-PR-1490 |  | 38d |
| S06A-PR-1510 |  | Piling Stub-Robotic Docking Station-Note For Approval | 1d | 2026-09-28 | 2026-09-28 | S06A-PR-1500 |  | 38d |
| S06A-PR-1520 |  | Piling Stub-Robotic Docking Station-LOI / PO Release | 2d | 2026-09-29 | 2026-09-30 | S06A-PR-1510 |  | 38d |
| S06A-PR-1530 |  | Piling Stub-Robotic Docking Station-Manufacturing Clearance & Manufacturing | 40d | 2026-10-05 | 2026-11-13 | S06A-PR-1520 FS+3d |  | 38d |
| S06A-PR-1540 |  | Piling Stub-Robotic Docking Station-Dispatch For Site-Lot-01 | 6d | 2026-10-20 | 2026-10-25 | S06A-PR-1530 SS+15d |  | 43d |
| S06A-PR-1550 |  | Piling Stub-Robotic Docking Station-Receipt At Site-Lot-01 | 6d | 2026-10-23 | 2026-10-28 | S06A-PR-1540 FF+3d, S06A-PR-1540 SS+3d |  | 69d |
| S06A-PR-1560 |  | Piling Stub-Robotic Docking Station-Dispatch For Site-Lot-02 | 6d | 2026-10-25 | 2026-10-30 | S06A-PR-1540 SS+5d |  | 43d |
| S06A-PR-1570 |  | Piling Stub-Robotic Docking Station-Receipt At Site-Lot-02 | 6d | 2026-10-28 | 2026-11-02 | S06A-PR-1560 SS+3d, S06A-PR-1560 FF+3d |  | 60d |
| S06A-PR-1580 |  | Piling Stub-Robotic Docking Station-Dispatch For Site-Lot-03 | 6d | 2026-10-30 | 2026-11-04 | S06A-PR-1560 SS+5d |  | 43d |
| S06A-PR-1590 |  | Piling Stub-Robotic Docking Station-Receipt At Site-Lot-03 | 6d | 2026-11-02 | 2026-11-07 | S06A-PR-1580 SS+3d, S06A-PR-1580 FF+3d |  | 54d |
| S06A-PR-1600 |  | Piling Stub-Robotic Docking Station-Dispatch For Site-Lot-04 | 6d | 2026-11-04 | 2026-11-09 | S06A-PR-1580 SS+5d |  | 43d |
| S06A-PR-1610 |  | Piling Stub-Robotic Docking Station-Receipt At Site-Lot-04 | 6d | 2026-11-07 | 2026-11-12 | S06A-PR-1600 SS+3d, S06A-PR-1600 FF+3d |  | 48d |
| S06A-PR-1620 |  | Piling Stub-Robotic Docking Station-Dispatch For Site-Lot-05 | 6d | 2026-11-14 | 2026-11-19 | S06A-PR-1600 SS+5d, S06A-PR-1530 |  | 38d |
| S06A-PR-1630 |  | Piling Stub-Robotic Docking Station-Receipt At Site-Lot-05 | 6d | 2026-11-17 | 2026-11-22 | S06A-PR-1620 SS+3d, S06A-PR-1620 FF+3d |  | 38d |
|  | 5 | **MMS - FT** |  | 2026-02-05 | 2026-09-22 |  |  |  |
| S06A-PR-1640 |  | MMS - FT-BOQ & Tech Specs Release | 2d | 2026-02-05 A | 2026-02-06 A | S06A-MS-1010 FS+50d | 100% |  |
| S06A-PR-1650 |  | MMS - FT-TBER | 31d | 2026-02-07 A | 2026-03-09 A | S06A-PR-1640 FF, S06A-PR-1640 | 100% |  |
| S06A-PR-1660 |  | MMS - FT-Purchase Requisition | 2d | 2026-02-10 A | 2026-02-11 A | S06A-PR-1650 | 100% |  |
| S06A-PR-1670 |  | MMS - FT-Note For Approval | 1d | 2026-02-12 A | 2026-02-12 A | S06A-PR-1660 | 100% |  |
| S06A-PR-1680 |  | MMS - FT-LOI / PO Release | 2d | 2026-02-13 A | 2026-02-14 A | S06A-PR-1670 | 100% |  |
| S06A-PR-1690 |  | MMS - FT-Manufacturing Clearance & Manufacturing | 40d | 2026-03-29 A | 2026-09-17 | S06A-PR-1680 FS+90d | 40% | 80d |
| S06A-PR-1700 |  | MMS - FT-Dispatch For Site-Lot-01 | 6d | 2026-05-22 A | 2026-08-24 | S06A-PR-1690 SS+15d | 33% | 100.02d |
| S06A-PR-1710 |  | MMS - FT-Receipt At Site-Lot-01 | 6d | 2026-05-28 A | 2026-08-27 | S06A-PR-1700 FF+3d, S06A-PR-1700 SS+3d | 33% | 100.02d |
| S06A-PR-1720 |  | MMS - FT-Dispatch For Site-Lot-02 | 6d | 2026-06-05 A | 2026-08-26 | S06A-PR-1700 SS+5d | 30% | 92d |
| S06A-PR-1730 |  | MMS - FT-Receipt At Site-Lot-02 | 6d | 2026-07-09 A | 2026-08-29 | S06A-PR-1720 SS+3d, S06A-PR-1720 FF+3d | 30% | 99d |
| S06A-PR-1740 |  | MMS - FT-Dispatch For Site-Lot-03 | 6d | 2026-08-23 | 2026-08-28 | S06A-PR-1720 SS+5d |  | 92d |
| S06A-PR-1750 |  | MMS - FT-Receipt At Site-Lot-03 | 6d | 2026-08-26 | 2026-08-31 | S06A-PR-1740 SS+3d, S06A-PR-1740 FF+3d |  | 98d |
| S06A-PR-1760 |  | MMS - FT-Dispatch For Site-Lot-04 | 6d | 2026-08-28 | 2026-09-02 | S06A-PR-1740 SS+5d |  | 92d |
| S06A-PR-1770 |  | MMS - FT-Receipt At Site-Lot-04 | 6d | 2026-08-31 | 2026-09-05 | S06A-PR-1760 SS+3d, S06A-PR-1760 FF+3d |  | 92d |
| S06A-PR-1780 |  | MMS - FT-Dispatch For Site-Lot-05 | 6d | 2026-09-02 | 2026-09-07 | S06A-PR-1760 SS+5d |  | 92d |
| S06A-PR-1790 |  | MMS - FT-Receipt At Site-Lot-05 | 5d | 2026-09-18 | 2026-09-22 | S06A-PR-1780 SS+3d, S06A-PR-1780 FF+3d, S06A-PR-1690 |  | 80d |
|  | 6 | **INVERTER** |  | 2026-02-05 | 2026-11-19 |  |  |  |
| S06A-PR-1800 |  | Inverter-BOQ & Tech Specs Release | 2d | 2026-02-05 A | 2026-02-06 A | S06A-EN-1600 SS+25d | 100% |  |
| S06A-PR-1810 |  | Inverter-TBER | 3d | 2026-02-07 A | 2026-02-09 A | S06A-PR-1800 FF, S06A-PR-1800 | 100% |  |
| S06A-PR-1820 |  | Inverter-Purchase Requisition | 1d | 2026-02-10 A | 2026-02-10 A | S06A-PR-1810 | 100% |  |
| S06A-PR-1830 |  | Inverter-Note For Approval | 4d | 2026-02-11 A | 2026-02-14 A | S06A-PR-1820 | 100% |  |
| S06A-PR-1840 |  | Inverter-LOI / PO Release | 1d | 2026-02-16 A | 2026-02-16 A | S06A-PR-1830 | 100% |  |
| S06A-PR-1850 |  | Inverter-Manufacturing Clearance & Manufacturing | 40d | 2026-10-01 | 2026-11-10 | S06A-PR-1840 FS+225d |  | 53d |

| ID | WBS | Task | Duration | Start | Finish | Predecessors | Complete | Total float |
| --- | --- | --- | --- | --- | --- | --- | --- | --- |
| S06A-PR-1860 |  | Inverter-Dispatch For Site-Lot-01 | 6d | 2026-10-17 | 2026-10-22 | S06A-PR-1850 SS+15d |  | 58d |
| S06A-PR-1870 |  | Inverter-Receipt At Site--Lot-01 | 6d | 2026-10-20 | 2026-10-25 | S06A-PR-1860 FF+3d, S06A-PR-1860 SS+3d |  | 78d |
| S06A-PR-1880 |  | Inverter-Dispatch For Site-Lot-02 | 6d | 2026-10-22 | 2026-10-27 | S06A-PR-1860 SS+5d |  | 58d |
| S06A-PR-1890 |  | Inverter-Receipt At Site--Lot-02 | 6d | 2026-10-25 | 2026-10-30 | S06A-PR-1880 SS+3d, S06A-PR-1880 FF+3d |  | 73d |
| S06A-PR-1900 |  | Inverter-Dispatch For Site-Lot-03 | 6d | 2026-10-27 | 2026-11-01 | S06A-PR-1880 SS+5d |  | 58d |
| S06A-PR-1910 |  | Inverter-Receipt At Site--Lot-03 | 6d | 2026-10-30 | 2026-11-04 | S06A-PR-1900 SS+3d, S06A-PR-1900 FF+3d |  | 68d |
| S06A-PR-1920 |  | Inverter-Dispatch For Site-Lot-04 | 6d | 2026-11-01 | 2026-11-06 | S06A-PR-1900 SS+5d |  | 58d |
| S06A-PR-1930 |  | Inverter-Receipt At Site--Lot-04 | 6d | 2026-11-04 | 2026-11-09 | S06A-PR-1920 SS+3d, S06A-PR-1920 FF+3d |  | 63d |
| S06A-PR-1940 |  | Inverter-Dispatch For Site-Lot-05 | 6d | 2026-11-11 | 2026-11-16 | S06A-PR-1920 SS+5d, S06A-PR-1850 |  | 53d |
| S06A-PR-1950 |  | Inverter-Receipt At Site--Lot-05 | 6d | 2026-11-14 | 2026-11-19 | S06A-PR-1940 SS+3d, S06A-PR-1940 FF+3d |  | 53d |
|  | 7 | **IDT (INCL. NIFPS)** |  | 2026-02-05 | 2026-12-03 |  |  |  |
| S06A-PR-1960 |  | IDT (Incl. NIFPS)-BOQ & Tech Specs Release | 2d | 2026-02-05 A | 2026-02-06 A | S06A-MS-1010 FS+55d | 100% |  |
| S06A-PR-1970 |  | IDT (Incl. NIFPS)-TBER | 1d | 2026-02-07 A | 2026-02-07 A | S06A-PR-1960 FF, S06A-PR-1960 | 100% |  |
| S06A-PR-1980 |  | IDT (Incl. NIFPS)-Purchase Requisition | 1d | 2026-02-09 A | 2026-02-09 A | S06A-PR-1970 | 100% |  |
| S06A-PR-1990 |  | IDT (Incl. NIFPS)-Note For Approval | 1d | 2026-02-09 A | 2026-02-09 A | S06A-PR-1980 | 100% |  |
| S06A-PR-2000 |  | IDT (Incl. NIFPS)-LOI / PO Release | 1d | 2026-02-11 A | 2026-02-20 A | S06A-PR-1990 | 100% |  |
| S06A-PR-2010 |  | IDT (Incl. NIFPS)-Manufacturing Clearance & Manufacturing | 40d | 2026-07-13 A | 2026-11-21 | S06A-PR-2000 FS+250d | 2% | 33d |
| S06A-PR-2020 |  | IDT (Incl. NIFPS)-Dispatch For Site-Lot-01 | 6d | 2026-08-23 | 2026-08-28 | S06A-PR-2010 SS+25d |  | 43d |
| S06A-PR-2030 |  | IDT (Incl. NIFPS)-Receipt At Site-Lot-01 | 6d | 2026-08-26 | 2026-08-31 | S06A-PR-2020 FF+3d, S06A-PR-2020 SS+3d |  | 115d |
| S06A-PR-2040 |  | IDT (Incl. NIFPS)-Dispatch For Site-Lot-02 | 6d | 2026-09-17 | 2026-09-22 | S06A-PR-2020 SS+25d |  | 43d |
| S06A-PR-2050 |  | IDT (Incl. NIFPS)-Receipt At Site-Lot-02 | 6d | 2026-09-20 | 2026-09-25 | S06A-PR-2040 SS+3d, S06A-PR-2040 FF+3d |  | 89d |
| S06A-PR-2060 |  | IDT (Incl. NIFPS)-Dispatch For Site-Lot-03 | 6d | 2026-10-23 | 2026-10-28 | S06A-PR-2040 SS+35d |  | 43d |
| S06A-PR-2070 |  | IDT (Incl. NIFPS)-Receipt At Site-Lot-03 | 6d | 2026-10-26 | 2026-10-31 | S06A-PR-2060 SS+3d, S06A-PR-2060 FF+3d |  | 59d |
| S06A-PR-2080 |  | IDT (Incl. NIFPS)-Dispatch For Site-Lot-04 | 6d | 2026-11-07 | 2026-11-12 | S06A-PR-2060 SS+15d |  | 43d |
| S06A-PR-2090 |  | IDT (Incl. NIFPS)-Receipt At Site-Lot-04 | 6d | 2026-11-10 | 2026-11-15 | S06A-PR-2080 SS+3d, S06A-PR-2080 FF+3d |  | 44d |
| S06A-PR-2100 |  | IDT (Incl. NIFPS)-Dispatch For Site-Lot-05 | 6d | 2026-11-22 | 2026-11-27 | S06A-PR-2080 SS+5d, S06A-PR-2010 |  | 33d |
| S06A-PR-2110 |  | IDT (Incl. NIFPS)-Receipt At Site-Lot-05 | 9d | 2026-11-25 | 2026-12-03 | S06A-PR-2100 SS+3d, S06A-PR-2100 FF+3d |  | 33d |
|  | 8 | **HT PANEL** |  | 2026-02-06 | 2026-11-17 |  |  |  |
| S06A-PR-2120 |  | HT Panel-BOQ & Tech Specs Release | 2d | 2026-02-06 A | 2026-02-07 A | S06A-MS-1010 FS+50d | 100% |  |
| S06A-PR-2130 |  | HT Panel-TBER | 1d | 2026-02-09 A | 2026-02-09 A | S06A-PR-2120 FF, S06A-PR-2120 | 100% |  |
| S06A-PR-2140 |  | HT Panel-Purchase Requisition | 1d | 2026-02-10 A | 2026-02-10 A | S06A-PR-2130 | 100% |  |
| S06A-PR-2150 |  | HT Panel-Note For Approval | 8d | 2026-02-11 A | 2026-02-18 A | S06A-PR-2140 | 100% |  |
| S06A-PR-2160 |  | HT Panel-LOI / PO Release | 1d | 2026-02-19 A | 2026-02-19 A | S06A-PR-2150 | 100% |  |
| S06A-PR-2170 |  | HT Panel-Manufacturing Clearance & Manufacturing | 40d | 2026-09-29 | 2026-11-08 | S06A-PR-2160 FS+220d |  | 59d |
| S06A-PR-2180 |  | HT Panel-Dispatch For Site-Lot-01 | 6d | 2026-10-15 | 2026-10-20 | S06A-PR-2170 SS+15d |  | 64d |
| S06A-PR-2190 |  | HT Panel-Receipt At Site-Lot-01 | 6d | 2026-10-18 | 2026-10-23 | S06A-PR-2180 FF+3d, S06A-PR-2180 SS+3d |  | 81d |
| S06A-PR-2200 |  | HT Panel-Dispatch For Site-Lot-02 | 6d | 2026-10-20 | 2026-10-25 | S06A-PR-2180 SS+5d |  | 64d |
| S06A-PR-2210 |  | HT Panel-Receipt At Site-Lot-02 | 6d | 2026-10-23 | 2026-10-28 | S06A-PR-2200 SS+3d, S06A-PR-2200 FF+3d |  | 75d |
| S06A-PR-2220 |  | HT Panel-Dispatch For Site-Lot-03 | 6d | 2026-10-25 | 2026-10-30 | S06A-PR-2200 SS+5d |  | 64d |
| S06A-PR-2230 |  | HT Panel-Receipt At Site-Lot-03 | 6d | 2026-10-28 | 2026-11-02 | S06A-PR-2220 SS+3d, S06A-PR-2220 FF+3d |  | 70d |
| S06A-PR-2240 |  | HT Panel-Dispatch For Site-Lot-04 | 6d | 2026-10-30 | 2026-11-04 | S06A-PR-2220 SS+5d |  | 64d |
| S06A-PR-2250 |  | HT Panel-Receipt At Site-Lot-04 | 6d | 2026-11-02 | 2026-11-07 | S06A-PR-2240 SS+3d, S06A-PR-2240 FF+3d |  | 65d |
| S06A-PR-2260 |  | HT Panel-Dispatch For Site-Lot-05 | 6d | 2026-11-09 | 2026-11-14 | S06A-PR-2240 SS+5d, S06A-PR-2170 |  | 59d |
| S06A-PR-2270 |  | HT Panel-Receipt At Site-Lot-05 | 6d | 2026-11-12 | 2026-11-17 | S06A-PR-2260 SS+3d, S06A-PR-2260 FF+3d |  | 59d |
|  | 9 | **LT PANEL** |  | 2026-02-05 | 2026-11-15 |  |  |  |
| S06A-PR-2280 |  | LT Panel-BOQ & Tech Specs Release | 2d | 2026-02-05 A | 2026-02-06 A | S06A-MS-1010 FS+50d | 100% |  |
| S06A-PR-2290 |  | LT Panel-TBER | 3d | 2026-02-07 A | 2026-02-09 A | S06A-PR-2280 FF, S06A-PR-2280 | 100% |  |
| S06A-PR-2300 |  | LT Panel-Purchase Requisition | 1d | 2026-02-10 A | 2026-02-10 A | S06A-PR-2290 | 100% |  |
| S06A-PR-2310 |  | LT Panel-Note For Approval | 6d | 2026-02-11 A | 2026-02-16 A | S06A-PR-2300 | 100% |  |
| S06A-PR-2320 |  | LT Panel-LOI / PO Release | 1d | 2026-02-17 A | 2026-02-17 A | S06A-PR-2310 | 100% |  |
| S06A-PR-2330 |  | LT Panel-Manufacturing Clearance & Manufacturing | 40d | 2026-09-27 | 2026-11-06 | S06A-PR-2320 FS+220d |  | 56d |
| S06A-PR-2340 |  | LT Panel-Dispatch For Site-Lot-01 | 6d | 2026-10-13 | 2026-10-18 | S06A-PR-2330 SS+15d |  | 61d |
| S06A-PR-2350 |  | LT Panel-Receipt At Site-Lot-01 | 6d | 2026-10-16 | 2026-10-21 | S06A-PR-2340 FF+3d, S06A-PR-2340 SS+3d |  | 78d |
| S06A-PR-2360 |  | LT Panel-Dispatch For Site-Lot-02 | 6d | 2026-10-18 | 2026-10-23 | S06A-PR-2340 SS+5d |  | 61d |
| S06A-PR-2370 |  | LT Panel-Receipt At Site-Lot-02 | 6d | 2026-10-21 | 2026-10-26 | S06A-PR-2360 SS+3d, S06A-PR-2360 FF+3d |  | 72d |
| S06A-PR-2380 |  | LT Panel-Dispatch For Site-Lot-03 | 6d | 2026-10-23 | 2026-10-28 | S06A-PR-2360 SS+5d |  | 61d |
| S06A-PR-2390 |  | LT Panel-Receipt At Site-Lot-03 | 6d | 2026-10-26 | 2026-10-31 | S06A-PR-2380 SS+3d, S06A-PR-2380 FF+3d |  | 67d |
| S06A-PR-2400 |  | LT Panel-Dispatch For Site-Lot-04 | 6d | 2026-10-28 | 2026-11-02 | S06A-PR-2380 SS+5d |  | 61d |
| S06A-PR-2410 |  | LT Panel-Receipt At Site-Lot-04 | 6d | 2026-10-31 | 2026-11-05 | S06A-PR-2400 FF+3d, S06A-PR-2400 SS+3d |  | 62d |
| S06A-PR-2420 |  | LT Panel-Dispatch For Site-Lot-05 | 6d | 2026-11-07 | 2026-11-12 | S06A-PR-2400 SS+5d, S06A-PR-2330 |  | 56d |
| S06A-PR-2430 |  | LT Panel-Receipt At Site-Lot-05 | 6d | 2026-11-10 | 2026-11-15 | S06A-PR-2420 SS+3d, S06A-PR-2420 FF+3d |  | 56d |
|  | 10 | **EARTHING FLAT** |  | 2026-01-30 | 2026-09-05 |  |  |  |
| S06A-PR-2440 |  | Earthing Flat-BOQ & Tech Specs Release | 0.33d | 2026-01-30 A | 2026-01-30 A | S06A-EN-1890 SS+11d | 100% |  |
| S06A-PR-2450 |  | Earthing Flat-TBER | 0.11d | 2026-01-31 A | 2026-01-31 A | S06A-PR-2440 FF, S06A-PR-2440 | 100% |  |
| S06A-PR-2460 |  | Earthing Flat-Purchase Requisition | 0.33d | 2026-02-02 A | 2026-02-02 A | S06A-PR-2450 | 100% |  |
| S06A-PR-2470 |  | Earthing Flat-Note For Approval | 14d | 2026-02-03 A | 2026-02-16 A | S06A-PR-2460 | 100% |  |
| S06A-PR-2480 |  | Earthing Flat-LOI / PO Release | 1d | 2026-02-17 A | 2026-02-17 A | S06A-PR-2470 | 100% |  |
| S06A-PR-2490 |  | Earthing Flat-Manufacturing Clearance & Manufacturing | 40d | 2026-04-22 A | 2026-08-30 | S06A-PR-2480 FS+60d | 70% | 99d |
| S06A-PR-2520 |  | Earthing Flat-Dispatch For Site-Lot-02 | 6d | 2026-05-27 A | 2026-05-30 A | S06A-PR-2500 SS+5d | 100% |  |
| S06A-PR-2500 |  | Earthing Flat-Dispatch For Site-Lot-01 | 6d | 2026-05-29 A | 2026-05-30 A | S06A-PR-2490 SS+14d | 100% |  |

| ID | WBS | Task | Duration | Start | Finish | Predecessors | Complete | Total float |
| --- | --- | --- | --- | --- | --- | --- | --- | --- |
| S06A-PR-2510 |  | Earthing Flat-Receipt At Site-Lot-01 | 6d | 2026-06-15 A | 2026-06-17 A | S06A-PR-2500 FF+3d, S06A-PR-2500 SS+3d | 100% |  |
| S06A-PR-2530 |  | Earthing Flat-Receipt At Site-Lot-02 | 6d | 2026-06-15 A | 2026-06-24 A | S06A-PR-2520 SS+2d, S06A-PR-2520 FF+2d | 100% |  |
| S06A-PR-2540 |  | Earthing Flat-Dispatch For Site-Lot-03 | 6d | 2026-08-23 | 2026-08-28 | S06A-PR-2520 SS+5d |  | 97d |
| S06A-PR-2550 |  | Earthing Flat-Receipt At Site-Lot-03 | 6d | 2026-08-25 | 2026-08-30 | S06A-PR-2540 SS+2d, S06A-PR-2540 FF+2d |  | 102d |
| S06A-PR-2560 |  | Earthing Flat-Dispatch For Site-Lot-04 | 3d | 2026-08-28 | 2026-08-30 | S06A-PR-2540 SS+5d |  | 97d |
| S06A-PR-2570 |  | Earthing Flat-Receipt At Site-Lot-04 | 3d | 2026-08-30 | 2026-09-01 | S06A-PR-2560 FF+2d, S06A-PR-2560 SS+2d |  | 97d |
| S06A-PR-2580 |  | Earthing Flat-Dispatch For Site-Lot-05 | 2d | 2026-09-02 | 2026-09-03 | S06A-PR-2560 SS+5d, S06A-PR-2490 |  | 97d |
| S06A-PR-2590 |  | Earthing Flat-Receipt At Site-Lot-05 | 2d | 2026-09-04 | 2026-09-05 | S06A-PR-2580 SS+2d, S06A-PR-2580 FF+2d |  | 97d |
|  | 11 | **IDT STATION - REBAR** |  | 2026-03-01 | 2026-06-23 |  |  |  |
| S06A-PR-2600 |  | IDT Station - Rebar-BOQ & Tech Specs Release | 2d | 2026-03-01 A | 2026-03-02 A | S06A-EN-1050 FS+20d | 100% |  |
| S06A-PR-2610 |  | IDT Station - Rebar-TBER | 3d | 2026-03-03 A | 2026-03-04 A | S06A-PR-2600 FF, S06A-PR-2600 | 100% |  |
| S06A-PR-2620 |  | IDT Station - Rebar-Purchase Requisition | 2d | 2026-03-05 A | 2026-03-05 A | S06A-PR-2610 | 100% |  |
| S06A-PR-2650 |  | IDT Station - Rebar-Manufacturing Clearance & Manufacturing | 40d | 2026-03-25 A | 2026-06-05 A | S06A-PR-2640 | 100% |  |
| S06A-PR-2660 |  | IDT Station - Rebar-Dispatch For Site-Lot-01 | 6d | 2026-03-31 A | 2026-04-01 A | S06A-PR-2650 SS+5d | 100% |  |
| S06A-PR-2670 |  | IDT Station - Rebar-Receipt At Site-Lot-01 | 6d | 2026-04-01 A | 2026-04-02 A | S06A-PR-2660 FF+3d, S06A-PR-2660 SS+3d | 100% |  |
| S06A-PR-2680 |  | IDT Station - Rebar-Dispatch For Site-Lot-02 | 6d | 2026-04-03 A | 2026-04-04 A | S06A-PR-2660 SS+5d | 100% |  |
| S06A-PR-2630 |  | IDT Station - Rebar-Note For Approval | 1d | 2026-04-25 A | 2026-04-28 A | S06A-PR-2620 | 100% |  |
| S06A-PR-2640 |  | IDT Station - Rebar-LOI / PO Release | 2d | 2026-04-29 A | 2026-04-30 A | S06A-PR-2630 | 100% |  |
| S06A-PR-2700 |  | IDT Station - Rebar-Dispatch For Site-Lot-03 | 6d | 2026-05-03 A | 2026-05-04 A | S06A-PR-2680 SS+5d | 100% |  |
| S06A-PR-2690 |  | IDT Station - Rebar-Receipt At Site-Lot-02 | 6d | 2026-05-04 A | 2026-05-05 A | S06A-PR-2680 SS+3d, S06A-PR-2680 FF+3d | 100% |  |
| S06A-PR-2710 |  | IDT Station - Rebar-Receipt At Site-Lot-03 | 6d | 2026-05-04 A | 2026-05-06 A | S06A-PR-2700 SS+3d, S06A-PR-2700 FF+3d | 100% |  |
| S06A-PR-2720 |  | IDT Station - Rebar-Dispatch For Site-Lot-04 | 6d | 2026-05-18 A | 2026-05-19 A | S06A-PR-2700 SS+5d | 100% |  |
| S06A-PR-2740 |  | IDT Station - Rebar-Dispatch For Site-Lot-05 | 6d | 2026-05-18 A | 2026-06-19 A | S06A-PR-2720 SS+5d, S06A-PR-2650 SS | 100% |  |
| S06A-PR-2730 |  | IDT Station - Rebar-Receipt At Site-Lot-04 | 6d | 2026-05-19 A | 2026-05-19 A | S06A-PR-2720 FF+3d, S06A-PR-2720 SS+3d | 100% |  |
| S06A-PR-2750 |  | IDT Station - Rebar-Receipt At Site-Lot-05 | 6d | 2026-05-19 A | 2026-06-23 A | S06A-PR-2740 SS+3d, S06A-PR-2740 FF+3d | 100% |  |
|  | 12 | **IDT STATION - FOUNDATION BOLT & INSERTS** |  | 2026-04-09 | 2026-10-01 |  |  |  |
| S06A-PR-2760 |  | IDT Station - Foundation Bolt & Inserts-BOQ & Tech Specs Release | 2d | 2026-04-09 A | 2026-04-10 A | S06A-EN-1050 FS+18d | 100% |  |
| S06A-PR-2770 |  | IDT Station - Foundation Bolt & Inserts-TBER | 3d | 2026-04-11 A | 2026-04-13 A | S06A-PR-2760 FF, S06A-PR-2760 | 100% |  |
| S06A-PR-2780 |  | IDT Station - Foundation Bolt & Inserts-Purchase Requistion | 2d | 2026-04-14 A | 2026-04-14 A | S06A-PR-2770 | 100% |  |
| S06A-PR-2790 |  | IDT Station - Foundation Bolt & Inserts-Note For Approval | 1d | 2026-04-25 A | 2026-04-28 A | S06A-PR-2780 | 100% |  |
| S06A-PR-2800 |  | IDT Station - Foundation Bolt & Inserts-LOI / PO Release | 2d | 2026-04-29 A | 2026-04-30 A | S06A-PR-2790 | 100% |  |
| S06A-PR-2810 |  | IDT Station - Foundation Bolt & Inserts-Manufacturing Clearance & Manufacturing | 40d | 2026-06-26 A | 2026-10-01 | S06A-PR-2800 FS+3d | 100% | 362.22d |
| S06A-PR-2820 |  | IDT Station - Foundation Bolt & Inserts-Dispatch For Site-Lot-01 | 6d | 2026-06-28 A | 2026-06-29 A | S06A-PR-2810 SS+5d | 100% |  |
| S06A-PR-2830 |  | IDT Station - Foundation Bolt & Inserts-Receipt At Site-Lot-01 | 6d | 2026-06-30 A | 2026-07-01 A | S06A-PR-2820 FF+2d, S06A-PR-2820 SS+2d | 100% |  |
| S06A-PR-2840 |  | IDT Station - Foundation Bolt & Inserts-Dispatch For Site-Lot-02 | 6d | 2026-06-30 A | 2026-07-01 A | S06A-PR-2820 SS+4d | 100% |  |
| S06A-PR-2850 |  | IDT Station - Foundation Bolt & Inserts-Receipt At Site-Lot-02 | 6d | 2026-06-30 A | 2026-07-01 A | S06A-PR-2840 SS, S06A-PR-2840 FF+2d | 100% |  |
| S06A-PR-2860 |  | IDT Station - Foundation Bolt & Inserts-Dispatch For Site-Lot-03 | 6d | 2026-06-30 A | 2026-07-01 A | S06A-PR-2840 SS+4d | 100% |  |
| S06A-PR-2880 |  | IDT Station - Foundation Bolt & Inserts-Dispatch For Site-Lot-04 | 6d | 2026-06-30 A | 2026-07-01 A | S06A-PR-2860 | 100% |  |
| S06A-PR-2900 |  | IDT Station - Foundation Bolt & Inserts-Dispatch For Site-Lot-05 | 6d | 2026-06-30 A | 2026-07-01 A | S06A-PR-2880 SS+5d, S06A-PR-2810 | 100% |  |
| S06A-PR-2870 |  | IDT Station - Foundation Bolt & Inserts-Receipt At Site-Lot-03 | 6d | 2026-07-02 A | 2026-07-03 A | S06A-PR-2860 SS, S06A-PR-2860 FF+4d | 100% |  |
| S06A-PR-2890 |  | IDT Station - Foundation Bolt & Inserts-Receipt At Site-Lot-04 | 6d | 2026-07-02 A | 2026-07-03 A | S06A-PR-2880 FF+3d, S06A-PR-2880 SS | 100% |  |
| S06A-PR-2910 |  | IDT Station - Foundation Bolt & Inserts-Receipt At Site-Lot-05 | 6d | 2026-07-02 A | 2026-07-03 A | S06A-PR-2900 SS, S06A-PR-2900 FF+2d | 100% |  |
|  | 13 | **IDT STATION - RAIL** |  | 2026-04-08 | 2026-06-18 |  |  |  |
| S06A-PR-2920 |  | IDT Station - Rail-BOQ & Tech Specs Release | 2d | 2026-04-08 A | 2026-04-09 A | S06A-EN-1050 FS+18d | 100% |  |
| S06A-PR-2930 |  | IDT Station - Rail-TBER | 3d | 2026-04-10 A | 2026-04-13 A | S06A-PR-2920 FF, S06A-PR-2920 | 100% |  |
| S06A-PR-2940 |  | IDT Station - Rail-Purchase Requisition | 2d | 2026-04-14 A | 2026-04-14 A | S06A-PR-2930 | 100% |  |
| S06A-PR-2950 |  | IDT Station - Rail-Note For Approval | 1d | 2026-05-02 A | 2026-05-07 A | S06A-PR-2940 | 100% |  |
| S06A-PR-2960 |  | IDT Station - Rail-LOI / PO Release | 2d | 2026-05-08 A | 2026-05-08 A | S06A-PR-2950 | 100% |  |
| S06A-PR-2970 |  | IDT Station - Rail-Manufacturing Clearance & Manufacturing | 40d | 2026-05-09 A | 2026-06-12 A | S06A-PR-2960 FS+3d | 100% |  |
| S06A-PR-2980 |  | IDT Station - Rail-Dispatch For Site-Lot-01 | 6d | 2026-06-15 A | 2026-06-17 A | S06A-PR-2970 SS+5d | 100% |  |
| S06A-PR-3000 |  | IDT Station - Rail-Dispatch For Site-Lot-02 | 6d | 2026-06-15 A | 2026-06-17 A | S06A-PR-2980 SS+5d | 100% |  |
| S06A-PR-3020 |  | IDT Station - Rail-Dispatch For Site-Lot-03 | 6d | 2026-06-15 A | 2026-06-17 A | S06A-PR-3000 SS+5d | 100% |  |
| S06A-PR-3040 |  | IDT Station - Rail-Dispatch For Site-Lot-04 | 6d | 2026-06-15 A | 2026-06-17 A | S06A-PR-3020 SS+5d | 100% |  |
| S06A-PR-3060 |  | IDT Station - Rail-Dispatch For Site-Lot-05 | 6d | 2026-06-15 A | 2026-06-17 A | S06A-PR-3040 SS+5d, S06A-PR-2970 | 100% |  |
| S06A-PR-2990 |  | IDT Station - Rail-Receipt For Site-Lot-01 | 6d | 2026-06-17 A | 2026-06-18 A | S06A-PR-2980 SS+3d, S06A-PR-2980 FF+3d | 100% |  |
| S06A-PR-3010 |  | IDT Station - Rail-Receipt For Site-Lot-02 | 6d | 2026-06-17 A | 2026-06-18 A | S06A-PR-3000 SS+3d, S06A-PR-3000 FF+3d | 100% |  |
| S06A-PR-3030 |  | IDT Station - Rail-Receipt For Site-Lot-03 | 6d | 2026-06-17 A | 2026-06-18 A | S06A-PR-3020 SS+2d, S06A-PR-3020 FF+2d | 100% |  |
| S06A-PR-3050 |  | IDT Station - Rail-Receipt For Site-Lot-04 | 6d | 2026-06-17 A | 2026-06-18 A | S06A-PR-3040 FF+2d, S06A-PR-3040 SS+2d | 100% |  |
| S06A-PR-3070 |  | IDT Station - Rail-Receipt For Site-Lot-05 | 6d | 2026-06-17 A | 2026-06-18 A | S06A-PR-3060 SS+2d, S06A-PR-3060 FF+2d | 100% |  |
|  | 14 | **IDT STATION - STRUCTURE, SHEETING & FASTENERS** |  | 2026-04-09 | 2026-08-29 |  |  |  |
| S06A-PR-3080 |  | IDT Station - Structure, Sheeting & Fasteners-BOQ & Tech Specs Release | 2d | 2026-04-09 A | 2026-04-10 A | S06A-EN-1050 FS+18d | 100% |  |
| S06A-PR-3090 |  | IDT Station - Structure, Sheeting & Fasteners-TBER | 3d | 2026-04-11 A | 2026-04-13 A | S06A-PR-3080 FF, S06A-PR-3080 | 100% |  |
| S06A-PR-3100 |  | IDT Station - Structure, Sheeting & Fasteners-Purchase Requistion | 2d | 2026-04-14 A | 2026-04-14 A | S06A-PR-3090 | 100% |  |
| S06A-PR-3110 |  | IDT Station - Structure, Sheeting & Fasteners-Note For Approval | 1d | 2026-05-02 A | 2026-05-08 A | S06A-PR-3100 | 100% |  |
| S06A-PR-3120 |  | IDT Station - Structure, Sheeting & Fasteners-LOI / PO Release | 2d | 2026-05-08 A | 2026-05-08 A | S06A-PR-3110 | 100% |  |
| S06A-PR-3130 |  | IDT Station - Structure, Sheeting & Fasteners-Manufacturing Clearance & Manufacturing | 40d | 2026-05-26 A | 2026-06-24 A | S06A-PR-3120 FS+16d | 100% |  |
| S06A-PR-3140 |  | IDT Station - Structure, Sheeting & Fasteners-Dispatch For Site-Lot-01 | 6d | 2026-07-06 A | 2026-08-26 | S06A-PR-3130 SS+14d | 33% | 121d |
| S06A-PR-3150 |  | IDT Station - Structure, Sheeting & Fasteners-Receipt At Site-Lot-01 | 6d | 2026-07-06 A | 2026-08-29 | S06A-PR-3140 FF+3d, S06A-PR-3140 SS+3d | 33% | 121d |
| S06A-PR-3160 |  | IDT Station - Structure, Sheeting & Fasteners-Dispatch For Site-Lot-02 | 6d | 2026-07-06 A | 2026-08-26 | S06A-PR-3140 SS+5d | 33% | 118d |
| S06A-PR-3170 |  | IDT Station - Structure, Sheeting & Fasteners-Receipt At Site-Lot-02 | 6d | 2026-07-08 A | 2026-08-29 | S06A-PR-3160 SS+3d, S06A-PR-3160 FF+3d | 33% | 118d |

| ID | WBS | Task | Duration | Start | Finish | Predecessors | Complete | Total float |
| --- | --- | --- | --- | --- | --- | --- | --- | --- |
| S06A-PR-3180 |  | IDT Station - Structure, Sheeting & Fasteners-Dispatch For Site-Lot-03 | 6d | 2026-07-08 A | 2026-08-26 | S06A-PR-3160 SS+5d | 33% | 118d |
| S06A-PR-3190 |  | IDT Station - Structure, Sheeting & Fasteners-Receipt At Site-Lot-03 | 6d | 2026-07-08 A | 2026-08-29 | S06A-PR-3180 SS+3d, S06A-PR-3180 FF+3d | 33% | 118d |
| S06A-PR-3200 |  | IDT Station - Structure, Sheeting & Fasteners-Dispatch For Site-Lot-04 | 6d | 2026-07-08 A | 2026-08-26 | S06A-PR-3180 SS+5d | 33% | 118d |
| S06A-PR-3210 |  | IDT Station - Structure, Sheeting & Fasteners-Receipt At Site-Lot-04 | 4d | 2026-07-08 A | 2026-08-29 | S06A-PR-3200 FF+3d, S06A-PR-3200 SS+3d | 33% | 118d |
| S06A-PR-3220 |  | IDT Station - Structure, Sheeting & Fasteners-Dispatch For Site-Lot-05 | 6d | 2026-07-08 A | 2026-08-26 | S06A-PR-3200 SS+5d, S06A-PR-3130 | 33% | 118d |
| S06A-PR-3230 |  | IDT Station - Structure, Sheeting & Fasteners-Receipt At Site-Lot-05 | 6d | 2026-07-08 A | 2026-08-29 | S06A-PR-3220 SS+3d, S06A-PR-3220 FF+3d | 33% | 118d |
|  | 15 | **LT CABLE - SUPPORT STRUCTURE** |  | 2026-04-10 | 2026-09-20 |  |  |  |
| S06A-PR-3240 |  | LT Cable - Support Structure-BOQ & Tech Specs Release | 2d | 2026-04-10 A | 2026-04-11 A | S06A-MS-1010 FS+50d | 100% |  |
| S06A-PR-3250 |  | LT Cable - Support Structure-TBER | 2d | 2026-04-13 A | 2026-04-16 A | S06A-PR-3240 FF, S06A-PR-3240 | 100% |  |
| S06A-PR-3260 |  | LT Cable - Support Structure-Purchase Requisition | 1d | 2026-04-17 A | 2026-04-17 A | S06A-PR-3250 | 100% |  |
| S06A-PR-3270 |  | LT Cable - Support Structure-Note For Approval | 1d | 2026-04-25 A | 2026-04-28 A | S06A-PR-3260 | 100% |  |
| S06A-PR-3280 |  | LT Cable - Support Structure-LOI / PO Release | 2d | 2026-04-29 A | 2026-04-30 A | S06A-PR-3270 | 100% |  |
| S06A-PR-3290 |  | LT Cable - Support Structure-Manufacturing Clearance & Manufacturing | 40d | 2026-05-02 A | 2026-07-01 A | S06A-PR-3280 FS+21d | 100% |  |
| S06A-PR-3300 |  | LT Cable - Support Structure-Dispatch For Site-Lot-01 | 6d | 2026-08-23 | 2026-08-28 | S06A-PR-3290 SS+14d |  | 104d |
| S06A-PR-3310 |  | LT Cable - Support Structure-Receipt At Site-Lot-01 | 6d | 2026-08-26 | 2026-08-31 | S06A-PR-3300 FF+3d, S06A-PR-3300 SS+3d |  | 119d |
| S06A-PR-3320 |  | LT Cable - Support Structure-Dispatch For Site-Lot-02 | 6d | 2026-08-28 | 2026-09-02 | S06A-PR-3300 SS+5d |  | 104d |
| S06A-PR-3330 |  | LT Cable - Support Structure-Receipt At Site-Lot-02 | 6d | 2026-08-31 | 2026-09-05 | S06A-PR-3320 SS+3d, S06A-PR-3320 FF+3d |  | 114d |
| S06A-PR-3340 |  | LT Cable - Support Structure-Dispatch For Site-Lot-03 | 6d | 2026-09-02 | 2026-09-07 | S06A-PR-3320 SS+5d |  | 104d |
| S06A-PR-3350 |  | LT Cable - Support Structure-Receipt At Site-Lot-03 | 6d | 2026-09-05 | 2026-09-10 | S06A-PR-3340 SS+3d, S06A-PR-3340 FF+3d |  | 110d |
| S06A-PR-3360 |  | LT Cable - Support Structure-Dispatch For Site-Lot-04 | 6d | 2026-09-07 | 2026-09-12 | S06A-PR-3340 SS+5d |  | 104d |
| S06A-PR-3370 |  | LT Cable - Support Structure-Receipt At Site-Lot-04 | 6d | 2026-09-10 | 2026-09-15 | S06A-PR-3360 FF+3d, S06A-PR-3360 SS+3d |  | 105d |
| S06A-PR-3380 |  | LT Cable - Support Structure-Dispatch For Site-Lot-05 | 6d | 2026-09-12 | 2026-09-17 | S06A-PR-3360 SS+5d, S06A-PR-3290 |  | 104d |
| S06A-PR-3390 |  | LT Cable - Support Structure-Receipt At Site-Lot-05 | 6d | 2026-09-15 | 2026-09-20 | S06A-PR-3380 SS+3d, S06A-PR-3380 FF+3d |  | 104d |
|  | 16 | **LT CABLE - FASTENERS** |  | 2026-03-25 | 2026-09-20 |  |  |  |
| S06A-PR-3400 |  | LT Cable - Fasteners-BOQ & Tech Specs Release | 2d | 2026-03-25 A | 2026-03-26 A | S06A-MS-1010 FS+50d | 100% |  |
| S06A-PR-3410 |  | LT Cable - Fasteners-TBER | 3d | 2026-03-27 A | 2026-03-28 A | S06A-PR-3400 FF, S06A-PR-3400 | 100% |  |
| S06A-PR-3420 |  | LT Cable - Fasteners-Purchase Requisition | 2d | 2026-03-29 A | 2026-03-30 A | S06A-PR-3410 | 100% |  |
| S06A-PR-3430 |  | LT Cable - Fasteners-Note For Approval | 1d | 2026-04-01 A | 2026-04-02 A | S06A-PR-3420 | 100% |  |
| S06A-PR-3440 |  | LT Cable - Fasteners-LOI / PO Release | 2d | 2026-04-02 A | 2026-04-02 A | S06A-PR-3430 | 100% |  |
| S06A-PR-3450 |  | LT Cable - Fasteners-Manufacturing Clearance & Manufacturing | 40d | 2026-04-15 A | 2026-06-24 A | S06A-PR-3440 FS+16d | 100% |  |
| S06A-PR-3460 |  | LT Cable - Fasteners-Dispatch For Site-Lot-01 | 6d | 2026-08-23 | 2026-08-28 | S06A-PR-3450 SS+14d |  | 104d |
| S06A-PR-3470 |  | LT Cable - Fasteners-Receipt At Site-Lot-01 | 6d | 2026-08-26 | 2026-08-31 | S06A-PR-3460 FF+3d, S06A-PR-3460 SS+3d |  | 119d |
| S06A-PR-3480 |  | LT Cable - Fasteners-Dispatch For Site-Lot-02 | 6d | 2026-08-28 | 2026-09-02 | S06A-PR-3460 SS+5d |  | 104d |
| S06A-PR-3490 |  | LT Cable - Fasteners-Receipt At Site-Lot-02 | 6d | 2026-08-31 | 2026-09-05 | S06A-PR-3480 SS+3d, S06A-PR-3480 FF+3d |  | 114d |
| S06A-PR-3500 |  | LT Cable - Fasteners-Dispatch For Site-Lot-03 | 6d | 2026-09-02 | 2026-09-07 | S06A-PR-3480 SS+5d |  | 104d |
| S06A-PR-3510 |  | LT Cable - Fasteners-Receipt At Site-Lot-03 | 6d | 2026-09-05 | 2026-09-10 | S06A-PR-3500 SS+3d, S06A-PR-3500 FF+3d |  | 110d |
| S06A-PR-3520 |  | LT Cable - Fasteners-Dispatch For Site-Lot-04 | 6d | 2026-09-07 | 2026-09-12 | S06A-PR-3500 SS+5d |  | 104d |
| S06A-PR-3530 |  | LT Cable - Fasteners-Receipt At Site-Lot-04 | 6d | 2026-09-10 | 2026-09-15 | S06A-PR-3520 FF+3d, S06A-PR-3520 SS+3d |  | 105d |
| S06A-PR-3540 |  | LT Cable - Fasteners-Dispatch For Site-Lot-05 | 6d | 2026-09-12 | 2026-09-17 | S06A-PR-3520 SS+5d, S06A-PR-3450 |  | 104d |
| S06A-PR-3550 |  | LT Cable - Fasteners-Receipt At Site-Lot-05 | 6d | 2026-09-15 | 2026-09-20 | S06A-PR-3540 SS+3d, S06A-PR-3540 FF+3d |  | 104d |
|  | 17 | **LT CABLE - MESSENGER WIRE** |  | 2026-03-25 | 2026-09-18 |  |  |  |
| S06A-PR-3560 |  | LT Cable - Messenger Wire-BOQ & Tech Specs Release | 2d | 2026-03-25 A | 2026-03-26 A | S06A-MS-1010 FS+50d | 100% |  |
| S06A-PR-3570 |  | LT Cable - Messenger Wire-TBER | 3d | 2026-03-27 A | 2026-03-28 A | S06A-PR-3560 FF, S06A-PR-3560 | 100% |  |
| S06A-PR-3580 |  | LT Cable - Messenger Wire-Purchase Requisition | 2d | 2026-03-30 A | 2026-03-30 A | S06A-PR-3570 | 100% |  |
| S06A-PR-3590 |  | LT Cable - Messenger Wire-Note For Approval | 1d | 2026-04-11 A | 2026-04-13 A | S06A-PR-3580 | 100% |  |
| S06A-PR-3600 |  | LT Cable - Messenger Wire-LOI / PO Release | 2d | 2026-04-14 A | 2026-04-14 A | S06A-PR-3590 | 100% |  |
| S06A-PR-3610 |  | LT Cable - Messenger Wire-Manufacturing Clearance & Manufacturing | 40d | 2026-05-15 A | 2026-09-09 | S06A-PR-3600 FS+16d | 65% | 106d |
| S06A-PR-3620 |  | LT Cable - Messenger Wire-Dispatch For Site-Lot-01 | 6d | 2026-06-22 A | 2026-06-23 A | S06A-PR-3610 SS+14d | 100% |  |
| S06A-PR-3630 |  | LT Cable - Messenger Wire-Receipt At Site-Lot-01 | 6d | 2026-06-22 A | 2026-06-23 A | S06A-PR-3620 FF+3d, S06A-PR-3620 SS+3d | 100% |  |
| S06A-PR-3640 |  | LT Cable - Messenger Wire-Dispatch For Site-Lot-02 | 6d | 2026-06-22 A | 2026-06-23 A | S06A-PR-3620 SS+5d | 100% |  |
| S06A-PR-3660 |  | LT Cable - Messenger Wire-Dispatch For Site-Lot-03 | 6d | 2026-06-22 A | 2026-06-23 A | S06A-PR-3640 SS+5d | 100% |  |
| S06A-PR-3650 |  | LT Cable - Messenger Wire-Receipt At Site-Lot-02 | 6d | 2026-06-23 A | 2026-06-24 A | S06A-PR-3640 SS+3d, S06A-PR-3640 FF+3d | 100% |  |
| S06A-PR-3670 |  | LT Cable - Messenger Wire-Receipt At Site-Lot-03 | 6d | 2026-06-23 A | 2026-06-24 A | S06A-PR-3660 SS+3d, S06A-PR-3660 FF+3d | 100% |  |
| S06A-PR-3680 |  | LT Cable - Messenger Wire-Dispatch For Site-Lot-04 | 6d | 2026-08-23 | 2026-08-28 | S06A-PR-3660 SS+5d |  | 119d |
| S06A-PR-3690 |  | LT Cable - Messenger Wire-Receipt At Site-Lot-04 | 6d | 2026-08-26 | 2026-08-31 | S06A-PR-3680 FF+3d, S06A-PR-3680 SS+3d |  | 120d |
| S06A-PR-3700 |  | LT Cable - Messenger Wire-Dispatch For Site-Lot-05 | 6d | 2026-09-10 | 2026-09-15 | S06A-PR-3680 SS+5d, S06A-PR-3610 |  | 106d |
| S06A-PR-3710 |  | LT Cable - Messenger Wire-Receipt At Site-Lot-05 | 6d | 2026-09-13 | 2026-09-18 | S06A-PR-3700 SS+3d, S06A-PR-3700 FF+3d |  | 106d |
|  | 18 | **LT CABLE - CLAMPS** |  | 2026-04-10 | 2026-10-11 |  |  |  |
| S06A-PR-3720 |  | LT Cable - Clamps-BOQ & Tech Specs Release | 2d | 2026-04-10 A | 2026-04-11 A | S06A-MS-1010 FS+50d | 100% |  |
| S06A-PR-3730 |  | LT Cable - Clamps-TBER | 3d | 2026-04-13 A | 2026-04-16 A | S06A-PR-3720 FF, S06A-PR-3720 | 100% |  |
| S06A-PR-3740 |  | LT Cable - Clamps-Purchase Requisition | 2d | 2026-04-17 A | 2026-04-18 A | S06A-PR-3730 | 100% |  |
| S06A-PR-3750 |  | LT Cable - Clamps-Note For Approval | 1d | 2026-04-25 A | 2026-04-25 A | S06A-PR-3740 | 100% |  |
| S06A-PR-3760 |  | LT Cable - Clamps-LOI / PO Release | 2d | 2026-04-27 A | 2026-04-29 A | S06A-PR-3750 | 100% |  |
| S06A-PR-3770 |  | LT Cable - Clamps-Manufacturing Clearance & Manufacturing | 40d | 2026-08-23 | 2026-10-01 | S06A-PR-3760 FS+16d |  | 84d |
| S06A-PR-3780 |  | LT Cable - Clamps-Dispatch For Site-Lot-01 | 6d | 2026-09-06 | 2026-09-11 | S06A-PR-3770 SS+14d |  | 90d |
| S06A-PR-3790 |  | LT Cable - Clamps-Receipt At Site-Lot-01 | 6d | 2026-09-09 | 2026-09-14 | S06A-PR-3780 FF+3d, S06A-PR-3780 SS+3d |  | 105d |
| S06A-PR-3800 |  | LT Cable - Clamps-Dispatch For Site-Lot-02 | 6d | 2026-09-11 | 2026-09-16 | S06A-PR-3780 SS+5d |  | 90d |
| S06A-PR-3810 |  | LT Cable - Clamps-Receipt At Site-Lot-02 | 6d | 2026-09-14 | 2026-09-19 | S06A-PR-3800 SS+3d, S06A-PR-3800 FF+3d |  | 100d |
| S06A-PR-3820 |  | LT Cable - Clamps-Dispatch For Site-Lot-03 | 6d | 2026-09-16 | 2026-09-21 | S06A-PR-3800 SS+5d |  | 90d |
| S06A-PR-3830 |  | LT Cable - Clamps-Receipt At Site-Lot-03 | 6d | 2026-09-19 | 2026-09-24 | S06A-PR-3820 SS+3d, S06A-PR-3820 FF+3d |  | 96d |

| ID | WBS | Task | Duration | Start | Finish | Predecessors | Complete | Total float |
| --- | --- | --- | --- | --- | --- | --- | --- | --- |
| S06A-PR-3840 |  | LT Cable - Clamps-Dispatch For Site-Lot-04 | 6d | 2026-09-21 | 2026-09-26 | S06A-PR-3820 SS+5d |  | 90d |
| S06A-PR-3850 |  | LT Cable - Clamps-Receipt At Site-Lot-04 | 6d | 2026-09-24 | 2026-09-29 | S06A-PR-3840 FF+3d, S06A-PR-3840 SS+3d |  | 91d |
| S06A-PR-3860 |  | LT Cable - Clamps-Dispatch For Site-Lot-05 | 6d | 2026-10-03 | 2026-10-08 | S06A-PR-3840 SS+5d, S06A-PR-3770 |  | 84d |
| S06A-PR-3870 |  | LT Cable - Clamps-Receipt At Site-Lot-05 | 6d | 2026-10-06 | 2026-10-11 | S06A-PR-3860 SS+3d, S06A-PR-3860 FF+3d |  | 84d |
|  | 19 | **LT CABLE - HANGERS** |  | 2026-02-02 | 2026-08-31 |  |  |  |
| S06A-PR-3880 |  | LT Cable - Hangers-BOQ & Tech Specs Release | 2d | 2026-02-02 A | 2026-02-03 A | S06A-MS-1010 FS+50d | 100% |  |
| S06A-PR-3890 |  | LT Cable - Hangers-TBER | 7d | 2026-02-04 A | 2026-02-10 A | S06A-PR-3880 FF, S06A-PR-3880 | 100% |  |
| S06A-PR-3900 |  | LT Cable - Hangers-Purchase Requisition | 2d | 2026-02-11 A | 2026-02-12 A | S06A-PR-3890 | 100% |  |
| S06A-PR-3910 |  | LT Cable - Hangers-Note For Approval | 4d | 2026-02-13 A | 2026-02-16 A | S06A-PR-3900 | 100% |  |
| S06A-PR-3920 |  | LT Cable - Hangers-LOI / PO Release | 1d | 2026-02-17 A | 2026-02-17 A | S06A-PR-3910 | 100% |  |
| S06A-PR-3930 |  | LT Cable - Hangers-Manufacturing Clearance & Manufacturing | 40d | 2026-03-05 A | 2026-04-25 A | S06A-PR-3920 FS+60d | 100% |  |
| S06A-PR-3940 |  | LT Cable - Hangers-Dispatch For Site-Lot-01 | 6d | 2026-05-26 A | 2026-05-28 A | S06A-PR-3930 SS+14d | 100% |  |
| S06A-PR-3960 |  | LT Cable - Hangers-Dispatch For Site-Lot-02 | 6d | 2026-05-26 A | 2026-05-28 A | S06A-PR-3940 SS+5d | 100% |  |
| S06A-PR-3980 |  | LT Cable - Hangers-Dispatch For Site-Lot-03 | 6d | 2026-05-26 A | 2026-05-28 A | S06A-PR-3960 SS+5d | 100% |  |
| S06A-PR-3990 |  | LT Cable - Hangers-Receipt At Site-Lot-03 | 6d | 2026-05-26 A | 2026-05-28 A | S06A-PR-3980 SS+3d, S06A-PR-3980 FF+3d | 100% |  |
| S06A-PR-4000 |  | LT Cable - Hangers-Dispatch For Site-Lot-04 | 6d | 2026-05-26 A | 2026-08-24 | S06A-PR-3980 SS+5d | 80% | 120d |
| S06A-PR-4010 |  | LT Cable - Hangers-Receipt At Site-Lot-04 | 6d | 2026-05-26 A | 2026-08-27 | S06A-PR-4000 FF+3d, S06A-PR-4000 SS+3d | 80% | 120d |
| S06A-PR-3950 |  | LT Cable - Hangers-Receipt At Site-Lot-01 | 6d | 2026-05-28 A | 2026-05-30 A | S06A-PR-3940 FF+3d, S06A-PR-3940 SS+3d | 100% |  |
| S06A-PR-3970 |  | LT Cable - Hangers-Receipt At Site-Lot-02 | 6d | 2026-05-28 A | 2026-05-30 A | S06A-PR-3960 SS+3d, S06A-PR-3960 FF+3d | 100% |  |
| S06A-PR-4020 |  | LT Cable - Hangers-Dispatch For Site-Lot-05 | 6d | 2026-08-23 | 2026-08-28 | S06A-PR-4000 SS+5d, S06A-PR-3930 |  | 124d |
| S06A-PR-4030 |  | LT Cable - Hangers-Receipt At Site-Lot-05 | 6d | 2026-08-26 | 2026-08-31 | S06A-PR-4020 SS+3d, S06A-PR-4020 FF+3d |  | 124d |
|  | 20 | **LT CABLE** |  | 2026-01-30 | 2026-10-14 |  |  |  |
| S06A-PR-4040 |  | LT Cable-BOQ & Tech Specs Release | 2d | 2026-01-30 A | 2026-01-31 A | S06A-EN-1730 SS+26d | 100% |  |
| S06A-PR-4050 |  | LT Cable-TBER | 1d | 2026-02-02 A | 2026-02-02 A | S06A-PR-4040 FF, S06A-PR-4040 | 100% |  |
| S06A-PR-4060 |  | LT Cable-Purchase Requisition | 1d | 2026-02-03 A | 2026-02-03 A | S06A-PR-4050 | 100% |  |
| S06A-PR-4070 |  | LT Cable-Note For Approval | 15d | 2026-02-04 A | 2026-02-18 A | S06A-PR-4060 | 100% |  |
| S06A-PR-4080 |  | LT Cable-LOI / PO Release | 1d | 2026-02-19 A | 2026-02-19 A | S06A-PR-4070 | 100% |  |
| S06A-PR-4090 |  | LT Cable-Manufacturing Clearance & Manufacturing | 40d | 2026-04-03 A | 2026-08-23 | S06A-PR-4080 FS+123d | 50% | 86d |
| S06A-PR-4100 |  | LT Cable-Dispatch For Site-Lot-01 | 6d | 2026-08-23 | 2026-08-28 | S06A-PR-4090 SS |  | 86d |
| S06A-PR-4110 |  | LT Cable-Receipt At Site-Lot-01 | 6d | 2026-08-26 | 2026-08-31 | S06A-PR-4100 FF+3d, S06A-PR-4100 SS+3d |  | 123d |
| S06A-PR-4120 |  | LT Cable-Dispatch For Site-Lot-02 | 6d | 2026-08-28 | 2026-09-02 | S06A-PR-4100 SS+5d |  | 86d |
| S06A-PR-4130 |  | LT Cable-Receipt At Site-Lot-02 | 6d | 2026-08-31 | 2026-09-05 | S06A-PR-4120 SS+3d, S06A-PR-4120 FF+3d |  | 118d |
| S06A-PR-4140 |  | LT Cable-Dispatch For Site-Lot-03 | 6d | 2026-09-02 | 2026-09-07 | S06A-PR-4120 SS+5d |  | 86d |
| S06A-PR-4150 |  | LT Cable-Receipt At Site-Lot-03 | 6d | 2026-09-05 | 2026-09-10 | S06A-PR-4140 SS+3d, S06A-PR-4140 FF+3d |  | 112d |
| S06A-PR-4160 |  | LT Cable-Dispatch For Site-Lot-04 | 6d | 2026-09-17 | 2026-09-22 | S06A-PR-4140 SS+15d |  | 86d |
| S06A-PR-4170 |  | LT Cable-Receipt At Site-Lot-04 | 6d | 2026-09-20 | 2026-09-25 | S06A-PR-4160 FF+3d, S06A-PR-4160 SS+3d |  | 97d |
| S06A-PR-4180 |  | LT Cable-Dispatch For Site-Lot-05 | 6d | 2026-10-03 | 2026-10-08 | S06A-PR-4160 SS+15d, S06A-PR-4090 |  | 86d |
| S06A-PR-4190 |  | LT Cable-Receipt At Site-Lot-05 | 9d | 2026-10-06 | 2026-10-14 | S06A-PR-4180 SS+3d, S06A-PR-4180 FF+3d |  | 86d |
|  | 21 | **CONTROL CABLES** |  | 2026-01-30 | 2026-11-08 |  |  |  |
| S06A-PR-4200 |  | Control Cables-BOQ & Tech Specs Release | 2d | 2026-01-30 A | 2026-01-31 A | S06A-MS-1010, S06A-EN-1790 SS+26d | 100% |  |
| S06A-PR-4210 |  | Control Cables-TBER | 1d | 2026-02-02 A | 2026-02-02 A | S06A-PR-4200 FF, S06A-PR-4200 | 100% |  |
| S06A-PR-4220 |  | Control Cables-Purchase Requisition | 1d | 2026-02-03 A | 2026-02-03 A | S06A-PR-4210 | 100% |  |
| S06A-PR-4230 |  | Control Cables-Note For Approval | 15d | 2026-02-04 A | 2026-02-18 A | S06A-PR-4220 | 100% |  |
| S06A-PR-4240 |  | Control Cables-LOI / PO Release | 1d | 2026-02-19 A | 2026-02-19 A | S06A-PR-4230 | 100% |  |
| S06A-PR-4250 |  | Control Cables-Manufacturing Clearance & Manufacturing | 40d | 2026-04-15 A | 2026-10-30 | S06A-PR-4240 FS+123d | 80% | 67d |
| S06A-PR-4260 |  | Control Cables-Dispatch For Site-Lot-01 | 6d | 2026-08-23 | 2026-08-28 | S06A-PR-4250 SS |  | 115d |
| S06A-PR-4270 |  | Control Cables-Receipt At Site-Lot-01 | 6d | 2026-08-26 | 2026-08-31 | S06A-PR-4260 FF+3d, S06A-PR-4260 SS+3d |  | 132d |
| S06A-PR-4280 |  | Control Cables-Dispatch For Site-Lot-02 | 6d | 2026-08-28 | 2026-09-02 | S06A-PR-4260 SS+5d |  | 115d |
| S06A-PR-4290 |  | Control Cables-Receipt At Site-Lot-02 | 6d | 2026-08-31 | 2026-09-05 | S06A-PR-4280 SS+3d, S06A-PR-4280 FF+3d |  | 126d |
| S06A-PR-4300 |  | Control Cables-Dispatch For Site-Lot-03 | 6d | 2026-09-02 | 2026-09-07 | S06A-PR-4280 SS+5d |  | 115d |
| S06A-PR-4310 |  | Control Cables-Receipt At Site-Lot-03 | 6d | 2026-09-05 | 2026-09-10 | S06A-PR-4300 SS+3d, S06A-PR-4300 FF+3d |  | 121d |
| S06A-PR-4320 |  | Control Cables-Dispatch For Site-Lot-04 | 6d | 2026-09-07 | 2026-09-12 | S06A-PR-4300 SS+5d |  | 115d |
| S06A-PR-4330 |  | Control Cables-Receipt At Site-Lot-04 | 6d | 2026-09-10 | 2026-09-15 | S06A-PR-4320 FF+3d, S06A-PR-4320 SS+3d |  | 116d |
| S06A-PR-4340 |  | Control Cables-Dispatch For Site-Lot-05 | 6d | 2026-10-31 | 2026-11-05 | S06A-PR-4320 SS+5d, S06A-PR-4250 |  | 67d |
| S06A-PR-4350 |  | Control Cables-Receipt At Site-Lot-05 | 6d | 2026-11-03 | 2026-11-08 | S06A-PR-4340 SS+3d, S06A-PR-4340 FF+3d |  | 67d |
|  | 22 | **HT CABLE** |  | 2026-02-05 | 2026-10-28 |  |  |  |
| S06A-PR-4360 |  | Ht Cable-BOQ & Tech Specs Release | 2d | 2026-02-05 A | 2026-02-06 A | S06A-EN-1700 SS+16d | 100% |  |
| S06A-PR-4370 |  | Ht Cable-TBER | 1d | 2026-02-07 A | 2026-02-07 A | S06A-PR-4360 FF, S06A-PR-4360 | 100% |  |
| S06A-PR-4380 |  | HT Cable-Purchase Requisition | 1d | 2026-02-09 A | 2026-02-09 A | S06A-PR-4370 | 100% |  |
| S06A-PR-4390 |  | HT Cable-Note For Approval | 9d | 2026-02-10 A | 2026-02-16 A | S06A-PR-4380 | 100% |  |
| S06A-PR-4400 |  | Ht Cable-LOI / PO Release | 1d | 2026-02-19 A | 2026-02-19 A | S06A-PR-4390 | 100% |  |
| S06A-PR-4410 |  | HT Cable-Manufacturing Clearance & Manufacturing | 40d | 2026-05-02 A | 2026-10-19 | S06A-PR-4400 FS+16d | 12% | 82d |
| S06A-PR-4420 |  | HT Cable-Dispatch For Site-Lot-01 | 6d | 2026-08-23 | 2026-08-28 | S06A-PR-4410 SS+40d |  | 116d |
| S06A-PR-4430 |  | HT Cable-Receipt At Site-Lot-01 | 6d | 2026-08-26 | 2026-08-31 | S06A-PR-4420 FF+3d, S06A-PR-4420 SS+3d |  | 135d |
| S06A-PR-4440 |  | HT Cable-Dispatch For Site-Lot-02 | 6d | 2026-08-28 | 2026-09-02 | S06A-PR-4420 SS+5d |  | 116d |
| S06A-PR-4450 |  | HT Cable-Receipt At Site-Lot-02 | 6d | 2026-08-31 | 2026-09-05 | S06A-PR-4440 SS+3d, S06A-PR-4440 FF+3d |  | 130d |
| S06A-PR-4460 |  | HT Cable-Dispatch For Site-Lot-03 | 6d | 2026-09-02 | 2026-09-07 | S06A-PR-4440 SS+5d |  | 116d |
| S06A-PR-4470 |  | HT Cable-Receipt At Site-Lot-03 | 6d | 2026-09-05 | 2026-09-10 | S06A-PR-4460 SS+3d, S06A-PR-4460 FF+3d |  | 125d |
| S06A-PR-4480 |  | HT Cable-Dispatch For Site-Lot-04 | 6d | 2026-09-07 | 2026-09-12 | S06A-PR-4460 SS+5d |  | 116d |
| S06A-PR-4490 |  | HT Cable-Receipt At Site-Lot-04 | 6d | 2026-09-10 | 2026-09-15 | S06A-PR-4480 FF+3d, S06A-PR-4480 SS+3d |  | 116d |

| ID | WBS | Task | Duration | Start | Finish | Predecessors | Complete | Total float |
| --- | --- | --- | --- | --- | --- | --- | --- | --- |
| S06A-PR-4500 |  | HT Cable-Dispatch For Site-Lot-05 | 6d | 2026-10-20 | 2026-10-25 | S06A-PR-4480 SS+5d, S06A-PR-4410 |  | 82d |
| S06A-PR-4510 |  | HT Cable-Receipt At Site-Lot-05 | 6d | 2026-10-23 | 2026-10-28 | S06A-PR-4500 SS+3d, S06A-PR-4500 FF+3d |  | 82d |
|  | 23 | **FIBER OPTIC CABLE** |  | 2026-02-09 | 2026-10-28 |  |  |  |
| S06A-PR-4520 |  | Fiber Optic Cable-BOQ & Tech Specs Release | 2d | 2026-02-09 A | 2026-02-10 A | S06A-MS-1010 FS+50d | 100% |  |
| S06A-PR-4530 |  | Fiber Optic Cable-TBER | 1d | 2026-02-11 A | 2026-02-11 A | S06A-PR-4520 FF, S06A-PR-4520 | 100% |  |
| S06A-PR-4540 |  | Fiber Optic Cable-Purchase Requisition | 1d | 2026-02-12 A | 2026-02-12 A | S06A-PR-4530 | 100% |  |
| S06A-PR-4550 |  | Fiber Optic Cable-Note For Approval | 5d | 2026-02-13 A | 2026-02-17 A | S06A-PR-4540 | 100% |  |
| S06A-PR-4560 |  | Fiber Optic Cable-LOI / PO Release | 1d | 2026-02-18 A | 2026-02-18 A | S06A-PR-4550 | 100% |  |
| S06A-PR-4570 |  | Fiber Optic Cable-Manufacturing Clearance & Manufacturing | 58d | 2026-08-23 | 2026-10-20 | S06A-PR-4560 FS+60d |  | 76d |
| S06A-PR-4580 |  | Fiber Optic Cable-Dispatch For Site-Lot-01 | 6d | 2026-09-06 | 2026-09-11 | S06A-PR-4570 SS+14d |  | 100d |
| S06A-PR-4590 |  | Fiber Optic Cable-Receipt At Site-Lot-01 | 6d | 2026-09-09 | 2026-09-14 | S06A-PR-4580 FF+3d, S06A-PR-4580 SS+3d |  | 111d |
| S06A-PR-4600 |  | Fiber Optic Cable-Dispatch For Site-Lot-02 | 6d | 2026-09-11 | 2026-09-16 | S06A-PR-4580 SS+5d |  | 100d |
| S06A-PR-4610 |  | Fiber Optic Cable-Receipt At Site-Lot-02 | 6d | 2026-09-14 | 2026-09-19 | S06A-PR-4600 SS+3d, S06A-PR-4600 FF+3d |  | 110d |
| S06A-PR-4620 |  | Fiber Optic Cable-Dispatch For Site-Lot-03 | 6d | 2026-09-16 | 2026-09-21 | S06A-PR-4600 SS+5d |  | 100d |
| S06A-PR-4630 |  | Fiber Optic Cable-Receipt At Site-Lot-03 | 6d | 2026-09-18 | 2026-09-23 | S06A-PR-4620 SS+2d, S06A-PR-4620 FF+2d |  | 106d |
| S06A-PR-4640 |  | Fiber Optic Cable-Dispatch For Site-Lot-04 | 6d | 2026-09-21 | 2026-09-26 | S06A-PR-4620 SS+5d |  | 100d |
| S06A-PR-4650 |  | Fiber Optic Cable-Receipt At Site-Lot-04 | 6d | 2026-09-23 | 2026-09-28 | S06A-PR-4640 FF+2d, S06A-PR-4640 SS+2d |  | 101d |
| S06A-PR-4660 |  | Fiber Optic Cable-Dispatch For Site-Lot-05 | 6d | 2026-10-21 | 2026-10-26 | S06A-PR-4640 SS+5d, S06A-PR-4570 |  | 76d |
| S06A-PR-4670 |  | Fiber Optic Cable-Receipt At Site-Lot-05 | 6d | 2026-10-23 | 2026-10-28 | S06A-PR-4660 SS+2d, S06A-PR-4660 FF+2d |  | 76d |
|  | 24 | **INVERTER STRUCTURE - SUPPORT BEAM & COLUMN** |  | 2026-04-11 | 2026-09-20 |  |  |  |
| S06A-PR-4680 |  | Inverter Structure - Support Beam & Column-BOQ & Tech Specs Release | 2d | 2026-04-11 A | 2026-04-12 A | S06A-MS-1010, S06A-EN-1210 SS+15d | 100% |  |
| S06A-PR-4690 |  | Inverter Structure - Support Beam & Column-TBER | 3d | 2026-04-13 A | 2026-04-15 A | S06A-PR-4680 FF, S06A-PR-4680 | 100% |  |
| S06A-PR-4700 |  | Inverter Structure - Support Beam & Column-Purchase Requistion | 2d | 2026-04-17 A | 2026-04-17 A | S06A-PR-4690 | 100% |  |
| S06A-PR-4710 |  | Inverter Structure - Support Beam & Column-Note For Approval | 1d | 2026-04-25 A | 2026-04-28 A | S06A-PR-4700 | 100% |  |
| S06A-PR-4720 |  | Inverter Structure - Support Beam & Column-LOI / PO Release | 2d | 2026-04-29 A | 2026-04-30 A | S06A-PR-4710 | 100% |  |
| S06A-PR-4730 |  | Inverter Structure - Support Beam & Column-Manufacturing Clearance & Manufacturing | 40d | 2026-06-22 A | 2026-07-01 A | S06A-PR-4720 FS+17d | 100% |  |
| S06A-PR-4740 |  | Inverter Structure - Support Beam & Column-Dispatch For Site-Lot-01 | 6d | 2026-08-23 | 2026-08-28 | S06A-PR-4730 SS+14d |  | 112d |
| S06A-PR-4750 |  | Inverter Structure - Support Beam & Column-Receipt At Site-Lot-01 | 6d | 2026-08-26 | 2026-08-31 | S06A-PR-4740 FF+3d, S06A-PR-4740 SS+3d |  | 132d |
| S06A-PR-4760 |  | Inverter Structure - Support Beam & Column-Dispatch For Site-Lot-02 | 6d | 2026-08-28 | 2026-09-02 | S06A-PR-4740 SS+5d |  | 112d |
| S06A-PR-4770 |  | Inverter Structure - Support Beam & Column-Receipt At Site-Lot-02 | 6d | 2026-08-31 | 2026-09-05 | S06A-PR-4760 SS+3d, S06A-PR-4760 FF+3d |  | 127d |
| S06A-PR-4780 |  | Inverter Structure - Support Beam & Column-Dispatch For Site-Lot-03 | 6d | 2026-09-02 | 2026-09-07 | S06A-PR-4760 SS+5d |  | 112d |
| S06A-PR-4790 |  | Inverter Structure - Support Beam & Column-Receipt At Site-Lot-03 | 6d | 2026-09-05 | 2026-09-10 | S06A-PR-4780 SS+3d, S06A-PR-4780 FF+3d |  | 122d |
| S06A-PR-4800 |  | Inverter Structure - Support Beam & Column-Dispatch For Site-Lot-04 | 6d | 2026-09-07 | 2026-09-12 | S06A-PR-4780 SS+5d |  | 112d |
| S06A-PR-4810 |  | Inverter Structure - Support Beam & Column-Receipt At Site-Lot-04 | 6d | 2026-09-10 | 2026-09-15 | S06A-PR-4800 FF+3d, S06A-PR-4800 SS+3d |  | 117d |
| S06A-PR-4820 |  | Inverter Structure - Support Beam & Column-Dispatch For Site-Lot-05 | 6d | 2026-09-12 | 2026-09-17 | S06A-PR-4800 SS+5d, S06A-PR-4730 |  | 112d |
| S06A-PR-4830 |  | Inverter Structure - Support Beam & Column-Receipt At Site-Lot-05 | 6d | 2026-09-15 | 2026-09-20 | S06A-PR-4820 SS+3d, S06A-PR-4820 FF+3d |  | 112d |
|  | 25 | **INVERTER STRUCTURE - FASTENERS** |  | 2026-04-11 | 2026-10-11 |  |  |  |
| S06A-PR-4840 |  | Inverter Structure - Fasteners-BOQ & Tech Specs Release | 2d | 2026-04-11 A | 2026-04-12 A | S06A-MS-1010, S06A-EN-1210 SS+15d | 100% |  |
| S06A-PR-4850 |  | Inverter Structure - Fasteners-TBER | 3d | 2026-04-13 A | 2026-04-15 A | S06A-PR-4840 FF, S06A-PR-4840 | 100% |  |
| S06A-PR-4860 |  | Inverter Structure - Fasteners-Purchase Requisition | 2d | 2026-04-17 A | 2026-04-17 A | S06A-PR-4850 | 100% |  |
| S06A-PR-4870 |  | Inverter Structure - Fasteners-Note For Approval | 1d | 2026-04-25 A | 2026-04-28 A | S06A-PR-4860 | 100% |  |
| S06A-PR-4880 |  | Inverter Structure - Fasteners-LOI / PO Release | 2d | 2026-04-29 A | 2026-04-30 A | S06A-PR-4870 | 100% |  |
| S06A-PR-4890 |  | Inverter Structure - Fasteners-Manufacturing Clearance & Manufacturing | 40d | 2026-08-23 | 2026-10-01 | S06A-PR-4880 FS+17d |  | 86d |
| S06A-PR-4900 |  | Inverter Structure - Fasteners-Dispatch For Site-Lot-01 | 6d | 2026-09-06 | 2026-09-11 | S06A-PR-4890 SS+14d |  | 92d |
| S06A-PR-4910 |  | Inverter Structure - Fasteners-Receipt At Site-Lot-01 | 6d | 2026-09-09 | 2026-09-14 | S06A-PR-4900 FF+3d, S06A-PR-4900 SS+3d |  | 118d |
| S06A-PR-4920 |  | Inverter Structure - Fasteners-Dispatch For Site-Lot-02 | 6d | 2026-09-11 | 2026-09-16 | S06A-PR-4900 SS+5d |  | 92d |
| S06A-PR-4930 |  | Inverter Structure - Fasteners-Receipt At Site-Lot-02 | 6d | 2026-09-14 | 2026-09-19 | S06A-PR-4920 SS+3d, S06A-PR-4920 FF+3d |  | 107d |
| S06A-PR-4940 |  | Inverter Structure - Fasteners-Dispatch For Site-Lot-03 | 6d | 2026-09-16 | 2026-09-21 | S06A-PR-4920 SS+5d |  | 92d |
| S06A-PR-4950 |  | Inverter Structure - Fasteners-Receipt At Site-Lot-03 | 6d | 2026-09-19 | 2026-09-24 | S06A-PR-4940 SS+3d, S06A-PR-4940 FF+3d |  | 102d |
| S06A-PR-4960 |  | Inverter Structure - Fasteners-Dispatch For Site-Lot-04 | 6d | 2026-09-21 | 2026-09-26 | S06A-PR-4940 SS+5d |  | 92d |
| S06A-PR-4970 |  | Inverter Structure - Fasteners-Receipt At Site-Lot-04 | 6d | 2026-09-24 | 2026-09-29 | S06A-PR-4960 FF+3d, S06A-PR-4960 SS+3d |  | 103d |
| S06A-PR-4980 |  | Inverter Structure - Fasteners-Dispatch For Site-Lot-05 | 6d | 2026-10-03 | 2026-10-08 | S06A-PR-4960 SS+5d, S06A-PR-4890 |  | 86d |
| S06A-PR-4990 |  | Inverter Structure - Fasteners-Receipt At Site-Lot-05 | 6d | 2026-10-06 | 2026-10-11 | S06A-PR-4980 SS+3d, S06A-PR-4980 FF+3d |  | 86d |
|  | 26 | **INVERTER STRUCTURE - CANOPY** |  | 2026-04-11 | 2026-10-11 |  |  |  |
| S06A-PR-5000 |  | Inverter Structure - Canopy-BOQ & Tech Specs Release | 2d | 2026-04-11 A | 2026-04-13 A | S06A-EN-1200 SS+15d | 100% |  |
| S06A-PR-5010 |  | Inverter Structure - Canopy-TBER | 3d | 2026-04-13 A | 2026-04-16 A | S06A-PR-5000 FF, S06A-PR-5000 | 100% |  |
| S06A-PR-5020 |  | Inverter Structure - Canopy-Purchase Requisition | 2d | 2026-04-17 A | 2026-04-17 A | S06A-PR-5010 | 100% |  |
| S06A-PR-5030 |  | Inverter Structure - Canopy-Note For Approval | 1d | 2026-04-25 A | 2026-04-28 A | S06A-PR-5020 | 100% |  |
| S06A-PR-5040 |  | Inverter Structure - Canopy-LOI / PO Release | 2d | 2026-04-29 A | 2026-04-30 A | S06A-PR-5030 | 100% |  |
| S06A-PR-5050 |  | Inverter Structure - Canopy-Manufacturing Clearance & Manufacturing | 40d | 2026-08-23 | 2026-10-01 | S06A-PR-5040 FS+18d |  | 92d |
| S06A-PR-5060 |  | Inverter Structure - Canopy-Dispatch For Site-Lot-01 | 6d | 2026-09-06 | 2026-09-11 | S06A-PR-5050 SS+14d |  | 98d |
| S06A-PR-5070 |  | Inverter Structure - Canopy-Receipt At Site-Lot-01 | 6d | 2026-09-09 | 2026-09-14 | S06A-PR-5060 FF+3d, S06A-PR-5060 SS+3d |  | 118d |
| S06A-PR-5080 |  | Inverter Structure - Canopy-Dispatch For Site-Lot-02 | 6d | 2026-09-11 | 2026-09-16 | S06A-PR-5060 SS+5d |  | 98d |
| S06A-PR-5090 |  | Inverter Structure - Canopy-Receipt At Site-Lot-02 | 6d | 2026-09-14 | 2026-09-19 | S06A-PR-5080 SS+3d, S06A-PR-5080 FF+3d |  | 113d |
| S06A-PR-5100 |  | Inverter Structure - Canopy-Dispatch For Site-Lot-03 | 6d | 2026-09-16 | 2026-09-21 | S06A-PR-5080 SS+5d |  | 98d |
| S06A-PR-5110 |  | Inverter Structure - Canopy-Receipt At Site-Lot-03 | 6d | 2026-09-19 | 2026-09-24 | S06A-PR-5100 SS+3d, S06A-PR-5100 FF+3d |  | 108d |
| S06A-PR-5120 |  | Inverter Structure - Canopy-Dispatch For Site-Lot-04 | 6d | 2026-09-21 | 2026-09-26 | S06A-PR-5100 SS+5d |  | 98d |
| S06A-PR-5130 |  | Inverter Structure - Canopy-Receipt At Site-Lot-04 | 6d | 2026-09-24 | 2026-09-29 | S06A-PR-5120 FF+3d, S06A-PR-5120 SS+3d |  | 103d |
| S06A-PR-5140 |  | Inverter Structure - Canopy-Dispatch For Site-Lot-05 | 6d | 2026-10-03 | 2026-10-08 | S06A-PR-5120 SS+5d, S06A-PR-5050 |  | 92d |
| S06A-PR-5150 |  | Inverter Structure - Canopy-Receipt At Site-Lot-05 | 6d | 2026-10-06 | 2026-10-11 | S06A-PR-5140 SS+3d, S06A-PR-5140 FF+3d |  | 92d |

| ID | WBS | Task | Duration | Start | Finish | Predecessors | Complete | Total float |
| --- | --- | --- | --- | --- | --- | --- | --- | --- |
|  | 27 | **INVERTER STRUCTURE - SELF TAPPING SCREW** |  | 2026-04-11 | 2026-10-11 |  |  |  |
| S06A-PR-5160 |  | Inverter Structure - Self Tapping Screw-BOQ & Tech Specs Release | 2d | 2026-04-11 A | 2026-04-14 A | S06A-EN-1210 FS+15d | 100% |  |
| S06A-PR-5170 |  | Inverter Structure - Self Tapping Screw-TBER | 3d | 2026-04-15 A | 2026-04-16 A | S06A-PR-5160 FF, S06A-PR-5160 | 100% |  |
| S06A-PR-5180 |  | Inverter Structure - Self Tapping Screw-Purchase Requisition | 2d | 2026-04-17 A | 2026-04-17 A | S06A-PR-5170 | 100% |  |
| S06A-PR-5190 |  | Inverter Structure - Self Tapping Screw-Note For Approval | 1d | 2026-04-25 A | 2026-04-28 A | S06A-PR-5180 | 100% |  |
| S06A-PR-5200 |  | Inverter Structure - Self Tapping Screw-LOI / PO Release | 2d | 2026-04-29 A | 2026-04-30 A | S06A-PR-5190 | 100% |  |
| S06A-PR-5210 |  | Inverter Structure - Self Tapping Screw-Manufacturing Clearance & Manufacturing | 40d | 2026-08-23 | 2026-10-01 | S06A-PR-5200 FS+10d |  | 92d |
| S06A-PR-5220 |  | Inverter Structure - Self Tapping Screw-Dispatch For Site-Lot-01 | 6d | 2026-09-06 | 2026-09-11 | S06A-PR-5210 SS+14d |  | 98d |
| S06A-PR-5230 |  | Inverter Structure - Self Tapping Screw-Receipt At Site-Lot-01 | 6d | 2026-09-09 | 2026-09-14 | S06A-PR-5220 FF+3d, S06A-PR-5220 SS+3d |  | 118d |
| S06A-PR-5240 |  | Inverter Structure - Self Tapping Screw-Dispatch For Site-Lot-02 | 6d | 2026-09-11 | 2026-09-16 | S06A-PR-5220 SS+5d |  | 98d |
| S06A-PR-5250 |  | Inverter Structure - Self Tapping Screw-Receipt At Site-Lot-02 | 6d | 2026-09-14 | 2026-09-19 | S06A-PR-5240 SS+3d, S06A-PR-5240 FF+3d |  | 113d |
| S06A-PR-5260 |  | Inverter Structure - Self Tapping Screw-Dispatch For Site-Lot-03 | 6d | 2026-09-16 | 2026-09-21 | S06A-PR-5240 SS+5d |  | 98d |
| S06A-PR-5270 |  | Inverter Structure - Self Tapping Screw-Receipt At Site-Lot-03 | 6d | 2026-09-19 | 2026-09-24 | S06A-PR-5260 SS+3d, S06A-PR-5260 FF+3d |  | 108d |
| S06A-PR-5280 |  | Inverter Structure - Self Tapping Screw-Dispatch For Site-Lot-04 | 6d | 2026-09-21 | 2026-09-26 | S06A-PR-5260 SS+5d |  | 98d |
| S06A-PR-5290 |  | Inverter Structure - Self Tapping Screw-Receipt At Site-Lot-04 | 6d | 2026-09-24 | 2026-09-29 | S06A-PR-5280 FF+3d, S06A-PR-5280 SS+3d |  | 103d |
| S06A-PR-5300 |  | Inverter Structure - Self Tapping Screw-Dispatch For Site-Lot-05 | 6d | 2026-10-03 | 2026-10-08 | S06A-PR-5280 SS+5d, S06A-PR-5210 |  | 92d |
| S06A-PR-5310 |  | Inverter Structure - Self Tapping Screw-Receipt At Site-Lot-05 | 6d | 2026-10-06 | 2026-10-11 | S06A-PR-5300 SS+3d, S06A-PR-5300 FF+3d |  | 92d |
|  | 28 | **ROBOTIC CLEANING SYSTEM - ROBOTS (INCL DOCKING & RETURN STATION) (IMPORTED FROM CHINA)** |  | 2026-09-16 | 2026-12-19 |  |  |  |
| S06A-PR-5320 |  | Robotic Cleaning System - Robots (Incl Docking & Return Station)-BOQ & Tech Specs Release | 7d | 2026-09-16 | 2026-09-22 | S06A-MS-1010, S06A-EN-1800 SS+24d |  | 22d |
| S06A-PR-5330 |  | Robotic Cleaning System - Robots (Incl Docking & Return Station)-TBER | 12d | 2026-09-18 | 2026-09-29 | S06A-PR-5320 FF, S06A-PR-5320 SS+2d |  | 22d |
| S06A-PR-5340 |  | Robotic Cleaning System - Robots (Incl Docking & Return Station)-Purchase Requistion | 5d | 2026-09-30 | 2026-10-05 | S06A-PR-5330 |  | 22d |
| S06A-PR-5350 |  | Robotic Cleaning System - Robots (Incl Docking & Return Station)-Note For Approval | 5d | 2026-10-06 | 2026-10-10 | S06A-PR-5340 |  | 22d |
| S06A-PR-5360 |  | Robotic Cleaning System - Robots (Incl Docking & Return Station)-LOI / PO Release | 5d | 2026-10-11 | 2026-10-15 | S06A-PR-5350 |  | 22d |
| S06A-PR-5370 |  | Robotic Cleaning System - Robots (Incl Docking & Return Station)-Manufacturing Clearance & Manufacturing | 25d | 2026-10-26 | 2026-11-19 | S06A-PR-5360 FS+10d |  | 22d |
| S06A-PR-5380 |  | Robotic Cleaning System - Robots (Incl Docking & Return Station)-Dispatch From China-Lot-01 | 2d | 2026-11-05 | 2026-11-06 | S06A-PR-5370 SS+10d |  | 25d |
| S06A-PR-5390 |  | Robotic Cleaning System - Robots (Incl Docking & Return Station)-Transportation & Custom Clearance-Lot-01 | 20d | 2026-11-07 | 2026-11-26 | S06A-PR-5380 |  | 39d |
| S06A-PR-5410 |  | Robotic Cleaning System - Robots (Incl Docking & Return Station)-Dispatch From China-Lot-02 | 2d | 2026-11-08 | 2026-11-09 | S06A-PR-5380 FS+1d |  | 25d |
| S06A-PR-5420 |  | Robotic Cleaning System - Robots (Incl Docking & Return Station)-Transportation & Custom Clearance-Lot-02 | 20d | 2026-11-10 | 2026-11-29 | S06A-PR-5410 |  | 36d |
| S06A-PR-5440 |  | Robotic Cleaning System - Robots (Incl Docking & Return Station)-Dispatch From China-Lot-03 | 2d | 2026-11-11 | 2026-11-12 | S06A-PR-5410 FS+1d |  | 25d |
| S06A-PR-5450 |  | Robotic Cleaning System - Robots (Incl Docking & Return Station)-Transportation & Custom Clearance-Lot-03 | 20d | 2026-11-13 | 2026-12-02 | S06A-PR-5440 |  | 32d |
| S06A-PR-5470 |  | Robotic Cleaning System - Robots (Incl Docking & Return Station)-Dispatch From China-Lot-04 | 2d | 2026-11-14 | 2026-11-15 | S06A-PR-5440 FS+1d |  | 25d |
| S06A-PR-5480 |  | Robotic Cleaning System - Robots (Incl Docking & Return Station)-Transportation & Custom Clearance-Lot-04 | 20d | 2026-11-16 | 2026-12-05 | S06A-PR-5470 |  | 26d |
| S06A-PR-5500 |  | Robotic Cleaning System - Robots (Incl Docking & Return Station)-Dispatch From China-Lot-05 | 2d | 2026-11-20 | 2026-11-21 | S06A-PR-5470 FS+1d, S06A-PR-5370 |  | 22d |
| S06A-PR-5510 |  | Robotic Cleaning System - Robots (Incl Docking & Return Station)-Transportation & Custom Clearance-Lot-05 | 18d | 2026-11-22 | 2026-12-09 | S06A-PR-5500 |  | 22d |
| S06A-PR-5400 |  | Robotic Cleaning System - Robots (Incl Docking & Return Station)-Receipt At Site-Lot-01 | 4d | 2026-12-02 | 2026-12-05 | S06A-PR-5390 FS+5d |  | 39d |
| S06A-PR-5430 |  | Robotic Cleaning System - Robots (Incl Docking & Return Station)-Receipt At Site-Lot-02 | 4d | 2026-12-05 | 2026-12-08 | S06A-PR-5420 FS+5d |  | 36d |
| S06A-PR-5460 |  | Robotic Cleaning System - Robots (Incl Docking & Return Station)-Receipt At Site-Lot-03 | 4d | 2026-12-08 | 2026-12-11 | S06A-PR-5450 FS+5d |  | 32d |
| S06A-PR-5490 |  | Robotic Cleaning System - Robots (Incl Docking & Return Station)-Receipt At Site-Lot-04 | 4d | 2026-12-13 | 2026-12-16 | S06A-PR-5480 FS+7d |  | 26d |
| S06A-PR-5520 |  | Robotic Cleaning System - Robots (Incl Docking & Return Station)-Receipt At Site-Lot-05 | 3d | 2026-12-17 | 2026-12-19 | S06A-PR-5510 FS+7d |  | 22d |
|  | 29 | **ROBOTIC CLEANING SYSTEM - ROBOTIC STRUCTURE (EXTENDED MMS STRUCTURE)** |  | 2026-08-23 | 2026-12-18 |  |  |  |
| S06A-PR-5530 |  | Robotic Cleaning System - Robotic Structure-BOQ & Tech Specs Release | 7d | 2026-08-23 | 2026-08-29 | S06A-MS-1010 FS+54d |  | 18d |
| S06A-PR-5540 |  | Robotic Cleaning System - Robotic Structure-TBER | 12d | 2026-08-28 | 2026-09-08 | S06A-PR-5530 FF, S06A-PR-5530 SS+5d |  | 18d |
| S06A-PR-5550 |  | Robotic Cleaning System - Robotic Structure-Purchase Requisition | 5d | 2026-09-09 | 2026-09-13 | S06A-PR-5540 |  | 18d |
| S06A-PR-5560 |  | Robotic Cleaning System - Robotic Structure-Note For Approval | 5d | 2026-09-13 | 2026-09-17 | S06A-PR-5550 SS+4d |  | 18d |
| S06A-PR-5570 |  | Robotic Cleaning System - Robotic Structure-LOI / PO Release | 5d | 2026-09-18 | 2026-09-22 | S06A-PR-5560 |  | 18d |
| S06A-PR-5580 |  | Robotic Cleaning System - Robotic Structure-Manufacturing Clearance & Manufacturing | 20d | 2026-11-23 | 2026-12-12 | S06A-PR-5570 FS+60d |  | 18d |
| S06A-PR-5590 |  | Robotic Cleaning System - Robotic Structure-Dispatch For Site-Lot-01 | 6d | 2026-11-28 | 2026-12-03 | S06A-PR-5580 SS+5d |  | 18d |
| S06A-PR-5600 |  | Robotic Cleaning System - Robotic Structure-Receipt At Site-Lot-01 | 6d | 2026-12-01 | 2026-12-06 | S06A-PR-5590 SS+3d, S06A-PR-5590 FF+3d |  | 40d |
| S06A-PR-5610 |  | Robotic Cleaning System - Robotic Structure-Dispatch For Site-Lot-02 | 6d | 2026-12-03 | 2026-12-08 | S06A-PR-5590 SS+5d |  | 18d |
| S06A-PR-5620 |  | Robotic Cleaning System - Robotic Structure-Receipt At Site-Lot-02 | 6d | 2026-12-06 | 2026-12-11 | S06A-PR-5610 SS+3d, S06A-PR-5610 FF+3d |  | 31d |
| S06A-PR-5630 |  | Robotic Cleaning System - Robotic Structure-Dispatch For Site-Lot-03 | 4d | 2026-12-08 | 2026-12-11 | S06A-PR-5610 SS+5d |  | 18d |
| S06A-PR-5640 |  | Robotic Cleaning System - Robotic Structure-Receipt At Site-Lot-03 | 4d | 2026-12-11 | 2026-12-14 | S06A-PR-5630 SS+3d, S06A-PR-5630 FF+3d |  | 25d |
| S06A-PR-5650 |  | Robotic Cleaning System - Robotic Structure-Dispatch For Site-Lot-04 | 2d | 2026-12-13 | 2026-12-14 | S06A-PR-5630 SS+5d |  | 18d |
| S06A-PR-5670 |  | Robotic Cleaning System - Robotic Structure-Dispatch For Site-Lot-05 | 2d | 2026-12-15 | 2026-12-16 | S06A-PR-5650 SS+2d, S06A-PR-5580 |  | 18d |
| S06A-PR-5660 |  | Robotic Cleaning System - Robotic Structure-Receipt At Site-Lot-04 | 2d | 2026-12-16 | 2026-12-17 | S06A-PR-5650 FF+3d, S06A-PR-5650 SS+3d |  | 19d |
| S06A-PR-5680 |  | Robotic Cleaning System - Robotic Structure-Receipt At Site-Lot-05 | 2d | 2026-12-17 | 2026-12-18 | S06A-PR-5670 SS+2d, S06A-PR-5670 FF+2d |  | 18d |
|  | 30 | **DC CABLE** |  | 2026-01-30 | 2026-11-30 |  |  |  |
| S06A-PR-5690 |  | DC Cable-BOQ & Tech Specs Release | 1d | 2026-01-30 A | 2026-01-30 A | S06A-EN-1710 SS+16d | 100% |  |
| S06A-PR-5700 |  | DC Cable-TBER | 1d | 2026-01-31 A | 2026-01-31 A | S06A-PR-5690 FF, S06A-PR-5690 | 100% |  |
| S06A-PR-5710 |  | DC Cable-Purchase Requisition | 1d | 2026-02-02 A | 2026-02-02 A | S06A-PR-5700 | 100% |  |
| S06A-PR-5720 |  | DC Cable-Note For Approval | 16d | 2026-02-03 A | 2026-02-18 A | S06A-PR-5710 | 100% |  |
| S06A-PR-5730 |  | DC Cable-LOI / PO Release | 1d | 2026-02-19 A | 2026-02-19 A | S06A-PR-5720 | 100% |  |
| S06A-PR-5740 |  | DC Cable-Manufacturing Clearance & Manufacturing | 40d | 2026-10-13 | 2026-11-21 | S06A-PR-5730 FS+233d |  | 37d |
| S06A-PR-5750 |  | DC Cable-Dispatch For Site-Lot-01 | 6d | 2026-10-27 | 2026-11-01 | S06A-PR-5740 SS+14d |  | 43d |
| S06A-PR-5760 |  | DC Cable-Receipt At Site-Lot-01 | 6d | 2026-10-30 | 2026-11-04 | S06A-PR-5750 FF+3d, S06A-PR-5750 SS+3d |  | 63d |
| S06A-PR-5770 |  | DC Cable-Dispatch For Site-Lot-02 | 6d | 2026-11-01 | 2026-11-06 | S06A-PR-5750 SS+5d |  | 43d |
| S06A-PR-5780 |  | DC Cable-Receipt At Site-Lot-02 | 6d | 2026-11-04 | 2026-11-09 | S06A-PR-5770 SS+3d, S06A-PR-5770 FF+3d |  | 58d |
| S06A-PR-5790 |  | DC Cable-Dispatch For Site-Lot-03 | 6d | 2026-11-06 | 2026-11-11 | S06A-PR-5770 SS+5d |  | 43d |
| S06A-PR-5800 |  | DC Cable-Receipt At Site-Lot-03 | 6d | 2026-11-09 | 2026-11-14 | S06A-PR-5790 SS+3d, S06A-PR-5790 FF+3d |  | 53d |
| S06A-PR-5810 |  | DC Cable-Dispatch For Site-Lot-04 | 6d | 2026-11-11 | 2026-11-16 | S06A-PR-5790 SS+5d |  | 43d |

| ID | WBS | Task | Duration | Start | Finish | Predecessors | Complete | Total float |
| --- | --- | --- | --- | --- | --- | --- | --- | --- |
| S06A-PR-5820 |  | DC Cable-Receipt At Site-Lot-04 | 6d | 2026-11-14 | 2026-11-19 | S06A-PR-5810 FF+3d, S06A-PR-5810 SS+3d |  | 48d |
| S06A-PR-5830 |  | DC Cable-Dispatch For Site-Lot-05 | 6d | 2026-11-22 | 2026-11-27 | S06A-PR-5810 SS+5d, S06A-PR-5740 |  | 37d |
| S06A-PR-5840 |  | DC Cable-Receipt At Site-Lot-05 | 6d | 2026-11-25 | 2026-11-30 | S06A-PR-5830 SS+3d, S06A-PR-5830 FF+3d |  | 37d |
|  | 31 | **MC4 CONNECTOR** |  | 2026-01-30 | 2026-10-11 |  |  |  |
| S06A-PR-5850 |  | Mc4 Connector-BOQ & Tech Specs Release | 2d | 2026-01-30 A | 2026-01-31 A | S06A-EN-1820 SS+26d | 100% |  |
| S06A-PR-5860 |  | Mc4 Connector-TBER | 1d | 2026-02-02 A | 2026-02-02 A | S06A-PR-5850 FF, S06A-PR-5850 | 100% |  |
| S06A-PR-5870 |  | Mc4 Connector-Purchase Requisition | 1d | 2026-02-03 A | 2026-02-03 A | S06A-PR-5860 | 100% |  |
| S06A-PR-5880 |  | Mc4 Connector-Note For Approval | 6d | 2026-02-04 A | 2026-02-09 A | S06A-PR-5870 | 100% |  |
| S06A-PR-5890 |  | Mc4 Connector-LOI / PO Release | 1d | 2026-02-10 A | 2026-02-10 A | S06A-PR-5880 | 100% |  |
| S06A-PR-5900 |  | Mc4 Connector-Manufacturing Clearance & Manufacturing | 40d | 2026-07-19 A | 2026-10-01 | S06A-PR-5890 FS+70d |  | 94d |
| S06A-PR-5910 |  | Mc4 Connector-Dispatch For Site-Lot-01 | 6d | 2026-08-23 | 2026-08-28 | S06A-PR-5900 SS+14d |  | 114d |
| S06A-PR-5920 |  | Mc4 Connector-Receipt At Site-Lot-01 | 6d | 2026-08-26 | 2026-08-31 | S06A-PR-5910 FF+3d, S06A-PR-5910 SS+3d |  | 134d |
| S06A-PR-5930 |  | Mc4 Connector-Dispatch For Site-Lot-02 | 6d | 2026-08-28 | 2026-09-02 | S06A-PR-5910 SS+5d |  | 114d |
| S06A-PR-5940 |  | Mc4 Connector-Receipt For Site-Lot-02 | 6d | 2026-08-31 | 2026-09-05 | S06A-PR-5930 SS+3d, S06A-PR-5930 FF+3d |  | 129d |
| S06A-PR-5950 |  | Mc4 Connector-Dispatch For Site-Lot-03 | 6d | 2026-09-02 | 2026-09-07 | S06A-PR-5930 SS+5d |  | 114d |
| S06A-PR-5960 |  | Mc4 Connector-Receipt For Site-Lot-03 | 6d | 2026-09-05 | 2026-09-10 | S06A-PR-5950 SS+3d, S06A-PR-5950 FF+3d |  | 124d |
| S06A-PR-5970 |  | Mc4 Connector-Dispatch For Site-Lot-04 | 6d | 2026-09-07 | 2026-09-12 | S06A-PR-5950 SS+5d |  | 114d |
| S06A-PR-5980 |  | Mc4 Connector-Receipt For Site-Lot-04 | 6d | 2026-09-10 | 2026-09-15 | S06A-PR-5970 FF+3d, S06A-PR-5970 SS+3d |  | 119d |
| S06A-PR-5990 |  | Mc4 Connector-Dispatch For Site-Lot-05 | 6d | 2026-10-03 | 2026-10-08 | S06A-PR-5970 SS+5d, S06A-PR-5900 |  | 94d |
| S06A-PR-6000 |  | Mc4 Connector-Receipt For Site-Lot-05 | 6d | 2026-10-06 | 2026-10-11 | S06A-PR-5990 SS+3d, S06A-PR-5990 FF+3d |  | 94d |
|  | 32 | **MODULE (IMPORTED FROM CHINA)** |  | 2026-03-21 | 2027-01-07 |  |  |  |
| S06A-PR-6010 |  | Module-BOQ & Tech Specs Release | 7d | 2026-03-21 A | 2026-03-26 A | S06A-MS-1010 FS+55d | 100% |  |
| S06A-PR-6020 |  | Module-TBER | 12d | 2026-03-27 A | 2026-04-10 A | S06A-PR-6010 FF, S06A-PR-6010 SS+5d | 100% |  |
| S06A-PR-6030 |  | Module-Purchase Requisition | 5d | 2026-08-23 | 2026-08-27 | S06A-PR-6020 |  | -17d |
| S06A-PR-6040 |  | Module-Note For Approval | 5d | 2026-08-27 | 2026-08-31 | S06A-PR-6030 SS+4d |  | -17d |
| S06A-PR-6050 |  | Module-LOI / PO Release | 5d | 2026-09-01 | 2026-09-05 | S06A-PR-6040 |  | -17d |
| S06A-PR-6060 |  | Module-Manufacturing Clearance & Manufacturing | 55d | 2026-10-25 | 2026-12-18 | S06A-PR-6050 FS+48d |  | -17d |
| S06A-PR-6070 |  | Module-Dispatch From China-Lot-01 | 2d | 2026-10-30 | 2026-10-31 | S06A-PR-6060 SS+5d |  | -15d |
| S06A-PR-6080 |  | Module-Transportation & Custom Clearance-Lot-01 | 15d | 2026-11-01 | 2026-11-15 | S06A-PR-6070 |  | 26d |
| S06A-PR-6100 |  | Module-Dispatch From China-Lot-02 | 2d | 2026-11-04 | 2026-11-05 | S06A-PR-6070 SS+5d |  | -15d |
| S06A-PR-6130 |  | Module-Dispatch From China-Lot-03 | 2d | 2026-11-09 | 2026-11-10 | S06A-PR-6100 SS+5d |  | -15d |
| S06A-PR-6110 |  | Module-Transportation & Custom Clearance-Lot-02 | 15d | 2026-11-13 | 2026-11-27 | S06A-PR-6100 FS+7d |  | 17d |
| S06A-PR-6090 |  | Module-Receipt At Site-Lot-01 | 3d | 2026-11-18 | 2026-11-20 | S06A-PR-6080 FS+2d |  | 26d |
| S06A-PR-6140 |  | Module-Transportation & Custom Clearance-Lot-03 | 14d | 2026-11-18 | 2026-12-01 | S06A-PR-6130 FS+7d |  | 12d |
| S06A-PR-6120 |  | Module-Receipt Site At-Lot-02 | 3d | 2026-11-29 | 2026-12-01 | S06A-PR-6110 FS+1d |  | 17d |
| S06A-PR-6150 |  | Module-Receipt Site At-Lot-03 | 3d | 2026-12-03 | 2026-12-05 | S06A-PR-6140 FS+1d |  | 12d |
| S06A-PR-6160 |  | Module-Dispatch From China-Lot-04 | 2d | 2026-12-06 | 2026-12-07 | S06A-PR-6130 SS+27d |  | -15d |
| S06A-PR-6170 |  | Module-Transportation & Custom Clearance-Lot-04 | 15d | 2026-12-08 | 2026-12-22 | S06A-PR-6160 |  | -15d |
| S06A-PR-6190 |  | Module-Dispatch From China-Lot-05 | 2d | 2026-12-19 | 2026-12-20 | S06A-PR-6160 SS+4d, S06A-PR-6060 |  | -17d |
| S06A-PR-6200 |  | Module-Transportation & Custom Clearance-Lot-05 | 15d | 2026-12-21 | 2027-01-04 | S06A-PR-6190 |  | -17d |
| S06A-PR-6180 |  | Module-Receipt Site At-Lot-04 | 3d | 2026-12-30 | 2027-01-01 | S06A-PR-6170 FS+7d |  | -15d |
| S06A-PR-6210 |  | Module-Receipt Site At-Lot-05 | 2d | 2027-01-06 | 2027-01-07 | S06A-PR-6200 FS+1d |  | -17d |
|  | 33 | **SCADA** |  | 2026-02-09 | 2026-11-20 |  |  |  |
| S06A-PR-6220 |  | SCADA-BOQ & Tech Specs Release | 2d | 2026-02-09 A | 2026-02-10 A | S06A-EN-2100 SS+13d | 100% |  |
| S06A-PR-6230 |  | SCADA-TBER | 1d | 2026-02-11 A | 2026-02-11 A | S06A-PR-6220 FF, S06A-PR-6220 SS+1d | 100% |  |
| S06A-PR-6240 |  | SCADA-Purchase Requisition | 1d | 2026-02-12 A | 2026-02-12 A | S06A-PR-6230 | 100% |  |
| S06A-PR-6250 |  | SCADA-Note For Approval | 4d | 2026-02-13 A | 2026-02-16 A | S06A-PR-6240 SS+1d | 100% |  |
| S06A-PR-6260 |  | SCADA-LOI / PO Release | 1d | 2026-02-17 A | 2026-02-17 A | S06A-PR-6250 | 100% |  |
| S06A-PR-6270 |  | SCADA-Manufacturing Clearance & Manufacturing | 35d | 2026-10-08 | 2026-11-11 | S06A-PR-6260 FS+230d |  | 49d |
| S06A-PR-6280 |  | SCADA-Dispatch For Site-Lot-01 | 6d | 2026-10-22 | 2026-10-27 | S06A-PR-6270 SS+14d |  | 50d |
| S06A-PR-6290 |  | SCADA-Receipt At Site-Lot-01 | 6d | 2026-10-25 | 2026-10-30 | S06A-PR-6280 FF+3d, S06A-PR-6280 SS+3d |  | 67d |
| S06A-PR-6300 |  | SCADA-Dispatch For Site-Lot-02 | 6d | 2026-10-27 | 2026-11-01 | S06A-PR-6280 SS+5d |  | 50d |
| S06A-PR-6310 |  | SCADA-Receipt At Site-Lot-02 | 6d | 2026-10-30 | 2026-11-04 | S06A-PR-6300 SS+3d, S06A-PR-6300 FF+3d |  | 61d |
| S06A-PR-6320 |  | SCADA-Dispatch For Site-Lot-03 | 6d | 2026-11-01 | 2026-11-06 | S06A-PR-6300 SS+5d |  | 50d |
| S06A-PR-6330 |  | SCADA-Receipt At Site-Lot-03 | 6d | 2026-11-04 | 2026-11-09 | S06A-PR-6320 SS+3d, S06A-PR-6320 FF+3d |  | 56d |
| S06A-PR-6340 |  | SCADA-Dispatch For Site-Lot-04 | 6d | 2026-11-06 | 2026-11-11 | S06A-PR-6320 SS+5d |  | 50d |
| S06A-PR-6350 |  | SCADA-Receipt At Site-Lot-04 | 6d | 2026-11-09 | 2026-11-14 | S06A-PR-6340 FF+3d, S06A-PR-6340 SS+3d |  | 51d |
| S06A-PR-6360 |  | SCADA-Dispatch For Site-Lot-05 | 6d | 2026-11-12 | 2026-11-17 | S06A-PR-6340 SS+5d, S06A-PR-6270 |  | 49d |
| S06A-PR-6370 |  | SCADA-Receipt At Site-Lot-05 | 6d | 2026-11-15 | 2026-11-20 | S06A-PR-6360 SS+3d, S06A-PR-6360 FF+3d |  | 49d |
|  | 34 | **IDT FENCING & GATE** |  | 2026-04-10 | 2026-12-16 |  |  |  |
| S06A-PR-6380 |  | IDT Fencing & Gate-BOQ & Tech Specs Release | 2d | 2026-04-10 A | 2026-04-11 A | S06A-EN-1100 SS+12d | 100% |  |
| S06A-PR-6390 |  | IDT Fencing & Gate-TBER | 3d | 2026-04-13 A | 2026-04-14 A | S06A-PR-6380 FF, S06A-PR-6380 | 100% |  |
| S06A-PR-6400 |  | IDT Fencing & Gate-Purchase Requistion | 2d | 2026-04-15 A | 2026-04-15 A | S06A-PR-6390 | 100% |  |
| S06A-PR-6410 |  | IDT Fencing & Gate-Note For Approval | 1d | 2026-04-25 A | 2026-04-28 A | S06A-PR-6400 | 100% |  |
| S06A-PR-6420 |  | IDT Fencing & Gate-LOI / PO Release | 2d | 2026-04-29 A | 2026-04-30 A | S06A-PR-6410 | 100% |  |
| S06A-PR-6430 |  | IDT Fencing & Gate-Manufacturing Clearance & Manufacturing | 40d | 2026-10-29 | 2026-12-07 | S06A-PR-6420 FS+179d |  | 35d |
| S06A-PR-6440 |  | IDT Fencing & Gate-Dispatch For Site-Lot-01 | 6d | 2026-11-12 | 2026-11-17 | S06A-PR-6430 SS+14d |  | 41d |
| S06A-PR-6450 |  | IDT Fencing & Gate-Receipt At Site-Lot-01 | 6d | 2026-11-15 | 2026-11-20 | S06A-PR-6440 FF+3d, S06A-PR-6440 SS+3d |  | 58d |
| S06A-PR-6460 |  | IDT Fencing & Gate-Dispatch For Site-Lot-02 | 6d | 2026-11-17 | 2026-11-22 | S06A-PR-6440 SS+5d |  | 41d |
| S06A-PR-6470 |  | IDT Fencing & Gate-Receipt At Site-Lot-02 | 6d | 2026-11-20 | 2026-11-25 | S06A-PR-6460 SS+3d, S06A-PR-6460 FF+3d |  | 52d |

| ID | WBS | Task | Duration | Start | Finish | Predecessors | Complete | Total float |
| --- | --- | --- | --- | --- | --- | --- | --- | --- |
| S06A-PR-6480 |  | IDT Fencing & Gate-Dispatch For Site-Lot-03 | 6d | 2026-11-22 | 2026-11-27 | S06A-PR-6460 SS+5d |  | 41d |
| S06A-PR-6490 |  | IDT Fencing & Gate-Receipt At Site-Lot-03 | 6d | 2026-11-25 | 2026-11-30 | S06A-PR-6480 SS+3d, S06A-PR-6480 FF+3d |  | 47d |
| S06A-PR-6500 |  | IDT Fencing & Gate-Dispatch For Site-Lot-04 | 6d | 2026-11-27 | 2026-12-02 | S06A-PR-6480 SS+5d |  | 41d |
| S06A-PR-6510 |  | IDT Fencing & Gate-Receipt At Site-Lot-04 | 6d | 2026-11-30 | 2026-12-05 | S06A-PR-6500 FF+3d, S06A-PR-6500 SS+3d |  | 42d |
| S06A-PR-6520 |  | IDT Fencing & Gate-Dispatch For Site-Lot-05 | 6d | 2026-12-08 | 2026-12-13 | S06A-PR-6500 SS+5d, S06A-PR-6430 |  | 35d |
| S06A-PR-6530 |  | IDT Fencing & Gate-Receipt At Site-Lot-05 | 6d | 2026-12-11 | 2026-12-16 | S06A-PR-6520 SS+3d, S06A-PR-6520 FF+3d |  | 35d |
|  | 35 | **ELECTRICAL AC/DC WORKS** |  | 2026-07-06 | 2027-01-06 |  |  |  |
| S06A-PR-6540 |  | Electrical AC/DC Works-BOQ & Tech Specs Release | 2d | 2026-07-06 A | 2026-07-07 A | S06A-EN-1570, S06A-EN-1580 FS+23d | 100% |  |
| S06A-PR-6570 |  | Electrical AC/DC Works-Note For Approval | 1d | 2026-07-08 A | 2026-07-09 A | S06A-PR-6560 | 100% |  |
| S06A-PR-6550 |  | Electrical AC/DC Works-TBER | 3d | 2026-07-14 A | 2026-07-16 A | S06A-PR-6540 FF, S06A-PR-6540 | 100% |  |
| S06A-PR-6560 |  | Electrical AC/DC Works-Purchase Requisition | 2d | 2026-07-17 A | 2026-07-18 A | S06A-PR-6550 | 100% |  |
| S06A-PR-6580 |  | Electrical AC/DC Works-LOI / PO Release | 2d | 2026-07-17 A | 2026-07-17 A | S06A-PR-6570 | 100% |  |
| S06A-PR-6590 |  | Electrical AC/DC Works-Manufacturing Clearance & Manufacturing | 40d | 2026-11-19 | 2026-12-28 | S06A-PR-6580 FS+122d |  | 10d |
| S06A-PR-6600 |  | Electrical AC/DC Works-Dispatch For Site-Lot-01 | 6d | 2026-12-03 | 2026-12-08 | S06A-PR-6590 SS+14d |  | 15d |
| S06A-PR-6610 |  | Electrical AC/DC Works-Receipt At Site-Lot-01 | 6d | 2026-12-05 | 2026-12-10 | S06A-PR-6600 FF+2d, S06A-PR-6600 SS+2d |  | 32d |
| S06A-PR-6620 |  | Electrical AC/DC Works-Dispatch For Site-Lot-02 | 6d | 2026-12-08 | 2026-12-13 | S06A-PR-6600 SS+5d |  | 15d |
| S06A-PR-6630 |  | Electrical AC/DC Works-Receipt At Site-Lot-02 | 6d | 2026-12-11 | 2026-12-16 | S06A-PR-6620 SS+3d, S06A-PR-6620 FF+3d |  | 27d |
| S06A-PR-6640 |  | Electrical AC/DC Works-Dispatch For Site-Lot-03 | 6d | 2026-12-13 | 2026-12-18 | S06A-PR-6620 SS+5d |  | 15d |
| S06A-PR-6650 |  | Electrical AC/DC Works-Receipt At Site-Lot-03 | 6d | 2026-12-16 | 2026-12-21 | S06A-PR-6640 SS+3d, S06A-PR-6640 FF+3d |  | 22d |
| S06A-PR-6660 |  | Electrical AC/DC Works-Dispatch For Site-Lot-04 | 6d | 2026-12-18 | 2026-12-23 | S06A-PR-6640 SS+5d |  | 15d |
| S06A-PR-6670 |  | Electrical AC/DC Works-Receipt At Site-Lot-04 | 6d | 2026-12-21 | 2026-12-26 | S06A-PR-6660 FF+3d, S06A-PR-6660 SS+3d |  | 15d |
| S06A-PR-6680 |  | Electrical AC/DC Works-Dispatch For Site-Lot-05 | 6d | 2026-12-29 | 2027-01-03 | S06A-PR-6660 SS+5d, S06A-PR-6590 |  | 10d |
| S06A-PR-6690 |  | Electrical AC/DC Works-Receipt At Site-Lot-05 | 6d | 2027-01-01 | 2027-01-06 | S06A-PR-6680 SS+3d, S06A-PR-6680 FF+3d |  | 10d |
|  | 2 | **PROCUREMENT- ORDERING-SERVICE** |  | 2026-03-27 | 2026-07-23 |  |  |  |
|  | 1 | **CIVIL, MMS & MODULE INSTALLATION WORKS** |  | 2026-03-27 | 2026-04-03 |  |  |  |
| S06A-PR-6700 |  | Civil, MMS & Module Installation Works-Boq & Tech Specs Release | 7d | 2026-03-27 A | 2026-03-28 A | S06A-EN-1050 SS+20d | 100% |  |
| S06A-PR-6710 |  | Civil, MMS & Module Installation Works-TBER | 12d | 2026-03-28 A | 2026-03-28 A | S06A-PR-6700 FF, S06A-PR-6700 SS | 100% |  |
| S06A-PR-6720 |  | Civil, MMS & Module Installation Works-Purchase Requistion | 1d | 2026-03-30 A | 2026-03-31 A | S06A-PR-6710 | 100% |  |
| S06A-PR-6730 |  | Civil, MMS & Module Installation Works-Note For Approval | 5d | 2026-04-01 A | 2026-04-02 A | S06A-PR-6720 SS | 100% |  |
| S06A-PR-6740 |  | Civil, MMS & Module Installation Works-LOI / PO Release | 5d | 2026-04-03 A | 2026-04-03 A | S06A-PR-6730 | 100% |  |
|  | 2 | **ELECTRICAL AC DC WORKS** |  | 2026-07-06 | 2026-07-23 |  |  |  |
| S06A-PR-6750 |  | Electrical AC DC Works-BOQ & Tech Specs Release | 7d | 2026-07-06 A | 2026-07-07 A | S06A-PR-4040 | 100% |  |
| S06A-PR-6770 |  | Electrical AC DC Works-Purchase Requisition | 5d | 2026-07-09 A | 2026-07-10 A | S06A-PR-6760 | 100% |  |
| S06A-PR-6760 |  | Electrical AC DC Works-TBER | 12d | 2026-07-12 A | 2026-07-23 A | S06A-PR-6750 FF, S06A-PR-6750 SS | 100% |  |
| S06A-PR-6780 |  | Electrical AC DC Works-Note For Approval | 5d | 2026-07-16 A | 2026-07-17 A | S06A-PR-6770 SS | 100% |  |
| S06A-PR-6790 |  | Electrical AC DC Works-LOI / PO Release | 5d | 2026-07-17 A | 2026-07-17 A | S06A-PR-6780 | 100% |  |
|  | 5 | **CONSTRUCTION & COMMISIONING** |  | 2026-04-02 | 2027-02-28 |  |  |  |
|  | 1 | **PHASE-1 (50MW)** |  | 2026-04-30 | 2027-01-15 |  |  |  |
|  | 1 | **BLOCK-01** |  | 2026-10-01 | 2027-01-14 |  |  |  |
|  | 1 | **CONSTRUCTION-PV AREA-DC SIDE** |  | 2026-10-01 | 2026-12-31 |  |  |  |
| S06A-CC-1000 |  | Block-01 -Piling - MMS (Marking, Auguring & Concreting) | 30d | 2026-10-01 | 2026-10-31 | S06A-PR-1070 SS, S06A-PR-6740 SS, S06A-EN-2120 SF, S06A-EN-1420 SS |  | 47.7d |
| S06A-CC-1010 |  | Block-01 -Pile Capping | 30d | 2026-10-07 | 2026-11-05 | S06A-CC-1000 FF+5d, S06A-CC-1000 SS+5d |  | 60.7d |
| S06A-CC-1050 |  | Block-01 -Array Earthing | 23d | 2026-10-10 | 2026-11-01 | S06A-PR-2510 SS, S06A-CC-1000 FF+1d, S06A-CC-1000 SS+7d, S06A-EN-2310 |  | 60.7d |
| S06A-CC-1020 |  | Block-01 -Piling - LT Cable Hanger System | 19d | 2026-10-13 | 2026-10-31 | S06A-PR-1390 SS, S06A-CC-1000 FF, S06A-CC-1000 SS, S06A-EN-2880 |  | 53.7d |
| S06A-CC-1030 |  | Block-01 -Piling - Inverters | 15d | 2026-10-17 | 2026-10-31 | S06A-PR-1230 SS, S06A-CC-1000 FF, S06A-CC-1000 SS, S06A-EN-2120 |  | 63.7d |
| S06A-CC-1060 |  | Block-01 -MMS Erection - Torque Tube/Raftar | 26d | 2026-10-20 | 2026-11-14 | S06A-PR-1710 SS, S06A-CC-1050 FF, S06A-CC-1000 FF+14d, S06A-CC-1000 SS+14d, S06A-EN-1490, S06A-EN-1500 |  | 47.7d |
| S06A-CC-1040 |  | Block-01 -Piling - Robotic Docking System | 10d | 2026-10-23 | 2026-11-01 | S06A-PR-1550 SS, S06A-CC-1000 FF, S06A-CC-1000 SS |  | 68.7d |
| S06A-CC-1070 |  | Block-01 -MMS Erection - Transmission Shaft/Bracing | 26d | 2026-10-24 | 2026-11-18 | S06A-PR-1710 SS, S06A-CC-1060 FF+4d, S06A-CC-1060 SS+4d |  | 49.7d |
| S06A-CC-1080 |  | Block-01 -MMS Erection - Purlin | 26d | 2026-10-24 | 2026-11-18 | S06A-PR-1710 SS, S06A-CC-1010 FF, S06A-CC-1060 FF+4d, S06A-CC-1060 SS+4d |  | 47.7d |
| S06A-CC-1090 |  | Block-01 -MMS - RFI Completion | 28d | 2026-10-24 | 2026-11-20 | S06A-CC-1070 FF, S06A-CC-1080 FF, S06A-CC-1080 SS |  | 47.7d |
| S06A-CC-1100 |  | Block-01 -Module Installation | 40d | 2026-11-18 | 2026-12-27 | S06A-PR-6090 SS, S06A-CC-1090 FF+8d, S06A-CC-1090 SS+4d, S06A-EN-1630, S06A-EN-2070 |  | 26.7d |
| S06A-CC-1110 |  | Block-01 -Module - RFI Completion | 40d | 2026-11-22 | 2026-12-31 | S06A-CC-1100 FF+4d, S06A-CC-1100 SS+4d |  | 32.7d |
| S06A-CC-1120 |  | Block-01 -DC Cable Laying | 30d | 2026-11-28 | 2026-12-27 | S06A-CC-1100 SS+10d, S06A-CC-1060 SS+17d, S06A-PR-5760 SS |  | 33.7d |
| S06A-CC-1150 |  | Block-01 -Robotic Structure - Docking Station Installation | 10d | 2026-12-01 | 2026-12-10 | S06A-PR-5600 SS, S06A-CC-1040, S06A-CC-1060 FF+2d, S06A-CC-1060 SS+2d, S06A-EN-1310 |  | 39.7d |
| S06A-CC-1160 |  | Block-01 -Robotic Structure - Reverse Station Installation | 10d | 2026-12-01 | 2026-12-10 | S06A-PR-5600 SS, S06A-CC-1040, S06A-CC-1060 FF+2d, S06A-CC-1060 SS+2d |  | 47.7d |
| S06A-CC-1180 |  | Block-01 -Robot Installation | 30d | 2026-12-02 | 2026-12-31 | S06A-PR-5400 SS, S06A-CC-1150 FF+4d, S06A-CC-1150 SS, S06A-CC-1100 FF+2d, S06A-CC-1100 SS+2d, S06A-EN-1550 |  | 38.7d |
| S06A-CC-1130 |  | Block-01 -Module Interconnection & MC4 Termination | 25d | 2026-12-05 | 2026-12-29 | S06A-CC-1100 FF+1d, S06A-PR-5920 SS, S06A-CC-1120 FF+2d, S06A-CC-1120 SS+2d |  | 33.7d |
| S06A-CC-1140 |  | Block-01 -VOC Testing | 22d | 2026-12-10 | 2026-12-31 | S06A-CC-1100 FF+2d, S06A-CC-1360, S06A-CC-1130 FF+2d, S06A-CC-1130 SS+2d |  | 33.7d |
| S06A-CC-1170 |  | Block-01 -Robotic Structure - Bridges Installation | 20d | 2026-12-10 | 2026-12-29 | S06A-PR-5600 SS, S06A-CC-1100 FF+2d, S06A-CC-1100 SS+2d |  | 46.7d |
|  | 2 | **CONSTRUCTION-PV AREA-AC SIDE** |  | 2026-10-01 | 2026-12-14 |  |  |  |
| S06A-CC-1190 |  | Block-01 -IDT Foundation Up To Rail | 21d | 2026-10-01 | 2026-10-22 | S06A-PR-2990 SS+3d, S06A-PR-2830 SS, S06A-PR-2670 FS+3d, S06A-EN-1070 |  | 47.7d |
| S06A-CC-1200 |  | Block-01 -HT & LT Station - Slab | 15d | 2026-10-01 | 2026-10-16 | S06A-PR-2830 SS, S06A-PR-2670 FS+3d, S06A-EN-1170, S06A-EN-1180 |  | 64.7d |
| S06A-CC-1300 |  | Block-01 -HT Cable Laying | 7d | 2026-10-01 | 2026-10-08 | S06A-PR-4430 SS, S06A-EN-1940 |  | 98.7d |
| S06A-CC-1310 |  | Block-01 -FO Cable Laying | 7d | 2026-10-01 | 2026-10-08 | S06A-PR-4590 FS+4d, S06A-CC-1300 FF, S06A-CC-1300 SS, S06A-EN-1960 |  | 98.7d |
| S06A-CC-1210 |  | Block-01 -HT LT Station - Staircase | 2d | 2026-10-20 | 2026-10-21 | S06A-CC-1200 FS+3d |  | 87.7d |
| S06A-CC-1220 |  | Block-01 -HT & LT Station - Shed Installation | 5d | 2026-10-20 | 2026-10-24 | S06A-PR-3150 SS, S06A-CC-1200 FS+3d |  | 64.7d |
| S06A-CC-1240 |  | Block-01 -IDT Foundation - Grade Slab Casting & Dyke Wall | 9d | 2026-10-23 | 2026-10-31 | S06A-CC-1190 |  | 70.7d |
| S06A-CC-1250 |  | Block-01 -NIFPS Foundation | 10d | 2026-10-23 | 2026-11-01 | S06A-CC-1190, S06A-EN-1090 |  | 47.7d |
| S06A-CC-1260 |  | Block-01 -BOT Foundation | 10d | 2026-10-23 | 2026-11-01 | S06A-CC-1190 |  | 69.7d |
| S06A-CC-1270 |  | Block-01 -Aux Transformer Foundation | 5d | 2026-10-23 | 2026-10-27 | S06A-CC-1190 |  | 68.7d |

| ID | WBS | Task | Duration | Start | Finish | Predecessors | Complete | Total float |
| --- | --- | --- | --- | --- | --- | --- | --- | --- |
| S06A-CC-1350 |  | Block-01 -IDT Erection | 5d | 2026-10-23 | 2026-10-27 | S06A-PR-6790, S06A-PR-2030 SS, S06A-CC-1190 |  | 57.7d |
| S06A-CC-1230 |  | Block-01 -HT & LT Station - Sheeting Installation | 2d | 2026-10-25 | 2026-10-26 | S06A-PR-3150 SS, S06A-CC-1220 |  | 64.7d |
| S06A-CC-1330 |  | Block-01 -HT Panel Erection | 1d | 2026-10-27 | 2026-10-27 | S06A-PR-6790, S06A-PR-2190 SS, S06A-CC-1230 SS+2d, S06A-EN-1810 |  | 71.7d |
| S06A-CC-1340 |  | Block-01 -LT Panel Erection | 6d | 2026-10-29 | 2026-11-03 | S06A-PR-6790, S06A-PR-2350 SS, S06A-CC-1230 FS+2d, S06A-EN-1740, S06A-EN-1750 |  | 64.7d |
| S06A-CC-1320 |  | Block-01 -Control Cable Laying | 5d | 2026-10-30 | 2026-11-04 | S06A-PR-4270 SS, S06A-CC-1370 FF, S06A-CC-1370 SS, S06A-EN-2030 |  | 67d |
| S06A-CC-1370 |  | Block-01 -SCADA & SACU Installation | 5d | 2026-10-30 | 2026-11-04 | S06A-PR-6290, S06A-CC-1230 |  | 67d |
| S06A-CC-1280 |  | Block-01 -Cable Hanger - Structure & Messenger Wire Erection | 5d | 2026-10-31 | 2026-11-04 | S06A-PR-3950 SS, S06A-PR-3790 SS, S06A-PR-3630 SS, S06A-PR-3470 SS, S06A-PR-3310 SS, S06A-CC-1020 FF+4d, S06A-CC-1020 SS+4d, S06A-EN-2880, S06A-EN-1530 |  | 53.7d |
| S06A-CC-1360 |  | Block-01 -Inverter Installation | 7d | 2026-11-03 | 2026-11-09 | S06A-PR-4910 SS, S06A-PR-5230 SS, S06A-PR-5070 SS, S06A-PR-4750 SS, S06A-PR-1870 SS, S06A-CC-1030 FS+2d, S06A-EN-1610 |  | 63.7d |
| S06A-CC-1290 |  | Block-01 -LT Cable Laying | 20d | 2026-11-04 | 2026-11-23 | S06A-CC-1280 FF+4d, S06A-CC-1280 SS+4d, S06A-PR-4110 SS, S06A-EN-2690, S06A-EN-1920, S06A-EN-1970 |  | 53.7d |
| S06A-CC-1400 |  | Block-01 -NIFPS - Installation | 10d | 2026-11-07 | 2026-11-16 | S06A-CC-1350, S06A-PR-2030 SS, S06A-CC-1250 FS+5d, S06A-EN-1660 |  | 47.7d |
| S06A-CC-1380 |  | Block-01 -ACDB Installation | 2d | 2026-12-05 | 2026-12-06 | S06A-PR-6610 SS, S06A-CC-1230, S06A-EN-1760 |  | 34.7d |
| S06A-CC-1390 |  | Block-01 -Aux Transformer - Installation | 4d | 2026-12-05 | 2026-12-08 | S06A-PR-6610 SS, S06A-CC-1270 FS+3d |  | 33.7d |
| S06A-CC-1440 |  | Block-01 -HT Cable Terminations - IDT Side | 2d | 2026-12-05 | 2026-12-06 | S06A-CC-1330, S06A-PR-6610 SS, S06A-CC-1310 FF+2d, S06A-CC-1310 SS+2d, S06A-CC-1300 FF+2d, S06A-CC-1300 SS+2d, S06A-CC-1350 |  | 41.7d |
| S06A-CC-1450 |  | Block-01 -LT Cable Terminations - LT Panel To IDT | 6d | 2026-12-05 | 2026-12-10 | S06A-CC-1340 FF+1d, S06A-PR-6610 SS, S06A-CC-1290 FF+1d, S06A-CC-1290 SS+2d, S06A-CC-1350, S06A-EN-1850 |  | 37.7d |
| S06A-CC-1460 |  | Block-01 -LT Cable Terminations - Inverter To LT Panel | 6d | 2026-12-05 | 2026-12-10 | S06A-CC-1340 FF+1d, S06A-PR-6610 SS, S06A-CC-1290 FF+1d, S06A-CC-1290 SS+2d, S06A-CC-1360 FF+2d, S06A-CC-1360 SS+2d |  | 37.7d |
| S06A-CC-1410 |  | Block-01 -IDT Area - Gravel Filling | 5d | 2026-12-07 | 2026-12-11 | S06A-CC-1400, S06A-CC-1390 SS+1d, S06A-CC-1380, S06A-CC-1370, S06A-CC-1350, S06A-CC-1340, S06A-CC-1330, S06A-CC-1320, S06A-CC-1270, S06A-CC-1260, S06A-CC-1250, S06A-CC-1240, S06A-CC-1200, S06A-CC-1190 |  | 34.7d |
| S06A-CC-1420 |  | Block-01 -IDT Area - Fencing | 5d | 2026-12-09 | 2026-12-13 | S06A-PR-6450 SS, S06A-CC-1410 SS+1d, S06A-CC-1400, S06A-CC-1390, S06A-CC-1380, S06A-CC-1370, S06A-CC-1350, S06A-CC-1340, S06A-CC-1330, S06A-EN-1100 |  | 33.7d |
| S06A-CC-1430 |  | Block-01 -IDT Area - Gate Installation | 1d | 2026-12-14 | 2026-12-14 | S06A-PR-6450 SS, S06A-CC-1420 |  | 33.7d |
|  | 3 | **CONSTRUCTION-PV AREA-PRE COMMISSIONING** |  | 2026-10-28 | 2026-12-19 |  |  |  |
| S06A-CC-1490 |  | Block-01 -HT Panel Testing | 1d | 2026-10-28 | 2026-10-28 | S06A-CC-1230, S06A-CC-1330 |  | 71.7d |
| S06A-CC-1500 |  | Block-01 -LT Panel Testing | 1d | 2026-11-04 | 2026-11-04 | S06A-CC-1340 |  | 64.7d |
| S06A-CC-1470 |  | Block-01 -IDT Filtration | 3d | 2026-11-17 | 2026-11-19 | S06A-CC-1400, S06A-CC-1350 |  | 47.7d |
| S06A-CC-1480 |  | Block-01 -IDT Testing | 2d | 2026-11-20 | 2026-11-21 | S06A-CC-1470, S06A-EN-1680 |  | 47.7d |
| S06A-CC-1510 |  | Block-01 -Inspection Offer To Asset Commissioning Team | 1d | 2026-12-11 | 2026-12-11 | S06A-CC-1460, S06A-CC-1450, S06A-CC-1440 |  | 37.7d |
| S06A-CC-1520 |  | Block-01 -Punch Point Identification By Asset Commissioning Team | 3d | 2026-12-12 | 2026-12-14 | S06A-CC-1510 |  | 37.7d |
| S06A-CC-1530 |  | Block-01 -Punch Point Rectification And Pre Charging Sign Off | 5d | 2026-12-15 | 2026-12-19 | S06A-CC-1520 |  | 37.7d |
|  | 4 | **CONSTRUCTION-COMMISSIONING** |  | 2026-11-22 | 2027-01-14 |  |  |  |
| S06A-CC-1540 |  | Block-01 -CEA Application | 1d | 2026-11-22 | 2026-11-22 | S06A-PR-6090, S06A-CC-1500, S06A-CC-1490, S06A-CC-1480 |  | 47.7d |
| S06A-CC-1550 |  | Block-01 -CEA Inspection | 1d | 2026-12-15 | 2026-12-15 | S06A-CC-1210, S06A-CC-1430, S06A-CC-1540 FS+8d |  | 33.7d |
| S06A-CC-1560 |  | Block-01 -CEA Compliance & Approval | 5d | 2026-12-16 | 2026-12-20 | S06A-CC-1550 |  | 33.7d |
| S06A-CC-1570 |  | Block-01 -First Time Charging - Application | 1d | 2026-12-28 | 2026-12-28 | S06A-CC-1100, S06A-CC-1140 SS+3d, S06A-CC-1560 |  | 26.7d |
| S06A-CC-1580 |  | Block-01 -First Time Charging - Approval | 2d | 2026-12-29 | 2026-12-30 | S06A-CC-1570 |  | 26.7d |
| S06A-CC-1590 |  | Block-01 -First Time Charging | 1d | 2026-12-31 | 2026-12-31 | S06A-CC-1530, S06A-CC-1580, S06A-CI-1010, PR-CA-27-014, PR-CA-27-013 |  | 26.7d |
| S06A-CC-1600 |  | Block-01 -Tracker Commissioning - SCADA | 8d | 2026-12-31 | 2027-01-07 | S06A-CC-1590 SS |  | 31.7d |
| S06A-CC-1610 |  | Block-01 -Robot Commissioning - SCADA | 12d | 2026-12-31 | 2027-01-11 | S06A-CC-1590 SS, S06A-CC-1170 SS+2d, S06A-CC-1160, S06A-CC-1180 FF, S06A-CC-1180 SS+4d, S06A-CC-1570, S06A-CC-1370 |  | 27.7d |
| S06A-CC-1620 |  | Block-01 -Trial Operation | 1d | 2027-01-07 | 2027-01-07 | S06A-CC-1110, S06A-CC-1140 FF, S06A-CC-1590 SS+7d |  | 26.7d |
| S06A-CC-1630 |  | Block-01 -Trial Run Certificate | 1d | 2027-01-10 | 2027-01-10 | S06A-CC-1620 FS+2d |  | 26.7d |
| S06A-CC-1640 |  | Block-01 -COD | 2d | 2027-01-13 | 2027-01-14 | S06A-CC-1610, S06A-CC-1630 FS+2d, S06A-CC-1600, PR-CA-27-010 |  | 26.7d |
|  | 2 | **BLOCK-02** |  | 2026-08-16 | 2027-01-15 |  |  |  |
|  | 1 | **CONSTRUCTION-PV AREA-DC SIDE** |  | 2026-10-01 | 2027-01-01 |  |  |  |
| S06A-CC-1650 |  | Block-02 -Piling - MMS (Marking, Auguring & Concreting) | 30d | 2026-10-01 | 2026-10-31 | S06A-PR-1070 SS, S06A-PR-6740 SS, S06A-EN-2130 SS, S06A-EN-1420 SS |  | 45.7d |
| S06A-CC-1660 |  | Block-02 -Pile Capping | 30d | 2026-10-09 | 2026-11-07 | S06A-CC-1650 FF+7d, S06A-CC-1650 SS+7d |  | 56.7d |
| S06A-CC-1700 |  | Block-02 -Array Earthing | 25d | 2026-10-09 | 2026-11-02 | S06A-PR-2510 SS, S06A-CC-1650 FF+1d, S06A-CC-1650 SS+7d, S06A-EN-2320 |  | 57.7d |
| S06A-CC-1670 |  | Block-02 -Piling - LT Cable Hanger System | 20d | 2026-10-12 | 2026-10-31 | S06A-PR-1390 SS, S06A-CC-1650 FF, S06A-CC-1650 SS, S06A-EN-2890 |  | 53.7d |
| S06A-CC-1680 |  | Block-02 -Piling - Inverters | 16d | 2026-10-16 | 2026-10-31 | S06A-PR-1230 SS, S06A-CC-1650 FF, S06A-CC-1650 SS, S06A-EN-2130 |  | 63.7d |
| S06A-CC-1710 |  | Block-02 -MMS Erection - Torque Tube/Raftar | 28d | 2026-10-18 | 2026-11-14 | S06A-PR-1710 SS, S06A-CC-1700 FF, S06A-CC-1650 FF+14d, S06A-CC-1650 SS+14d, S06A-EN-1490, S06A-EN-1500 |  | 45.7d |
| S06A-CC-1720 |  | Block-02 -MMS Erection - Transmission Shaft/Bracing | 28d | 2026-10-22 | 2026-11-18 | S06A-PR-1710 SS, S06A-CC-1710 FF+4d, S06A-CC-1710 SS+4d |  | 49.7d |
| S06A-CC-1730 |  | Block-02 -MMS Erection - Purlin | 28d | 2026-10-22 | 2026-11-18 | S06A-PR-1710 SS, S06A-CC-1660 FF, S06A-CC-1710 FF+4d, S06A-CC-1710 SS+4d |  | 45.7d |
| S06A-CC-1690 |  | Block-02 -Piling - Robotic Docking System | 10d | 2026-10-23 | 2026-11-01 | S06A-PR-1550 SS, S06A-CC-1650 FF, S06A-CC-1650 SS |  | 68.7d |
| S06A-CC-1740 |  | Block-02 -MMS - RFI Completion | 28d | 2026-10-26 | 2026-11-22 | S06A-CC-1720 FF, S06A-CC-1730 FF+4d, S06A-CC-1730 SS+4d |  | 45.7d |
| S06A-CC-1750 |  | Block-02 -Module Installation | 40d | 2026-11-18 | 2026-12-28 | S06A-PR-6090 SS+1d, S06A-CC-1740 FF+8d, S06A-CC-1740 SS+4d, S06A-EN-1630, S06A-EN-2070 |  | 26d |
| S06A-CC-1770 |  | Block-02 -DC Cable Laying | 30d | 2026-11-19 | 2026-12-19 | S06A-PR-5760 SS, S06A-CC-1750 SS+1d, S06A-CC-1710 SS+17d |  | 42d |
| S06A-CC-1760 |  | Block-02 -Module - RFI Completion | 40d | 2026-11-22 | 2027-01-01 | S06A-CC-1750 FF+4d, S06A-CC-1750 SS+4d |  | 32d |
| S06A-CC-1800 |  | Block-02 -Robotic Structure - Docking Station Installation | 10d | 2026-12-01 | 2026-12-10 | S06A-PR-5600 SS, S06A-CC-1690, S06A-CC-1710 FF+2d, S06A-CC-1710 SS+2d, S06A-EN-1310 |  | 39.7d |
| S06A-CC-1810 |  | Block-02 -Robotic Structure - Reverse Station Installation | 10d | 2026-12-01 | 2026-12-10 | S06A-PR-5600 SS, S06A-CC-1690, S06A-CC-1710 FF+2d, S06A-CC-1710 SS+2d |  | 47.7d |
| S06A-CC-1830 |  | Block-02 -Robot Installation | 30d | 2026-12-02 | 2026-12-31 | S06A-PR-5400 SS, S06A-CC-1800 FF, S06A-CC-1800 SS, S06A-CC-1750 FF, S06A-CC-1750 SS, S06A-EN-1550 |  | 38.7d |
| S06A-CC-1780 |  | Block-02 -Module Interconnection & MC4 Termination | 25d | 2026-12-04 | 2026-12-29 | S06A-PR-5920 SS, S06A-CC-1770 FF+2d, S06A-CC-1770 SS+2d, S06A-CC-1750 FF+1d |  | 34d |
| S06A-CC-1790 |  | Block-02 -VOC Testing | 22d | 2026-12-09 | 2026-12-31 | S06A-CC-1780 FF+2d, S06A-CC-1780 SS+2d, S06A-CC-1750 FF+2d, S06A-CC-2040 |  | 34d |
| S06A-CC-1820 |  | Block-02 -Robotic Structure - Bridges Installation | 20d | 2026-12-10 | 2026-12-30 | S06A-PR-5600 SS, S06A-CC-1750 FF+2d, S06A-CC-1750 SS+2d |  | 46d |
|  | 2 | **CONSTRUCTION-PV AREA-AC SIDE** |  | 2026-08-16 | 2026-12-16 |  |  |  |
| S06A-CC-1840 |  | Block-02 -IDT Foundation Up To Rail | 21d | 2026-08-16 A | 2026-10-22 | S06A-PR-2830 SS, S06A-PR-2670 FS+3d, S06A-PR-2990 SS+3d, S06A-EN-1070 | 38% | 47.7d |
| S06A-CC-1850 |  | Block-02 -HT & LT Station - Slab | 15d | 2026-10-01 | 2026-10-16 | S06A-PR-2830 SS, S06A-PR-2670 FS+3d, S06A-EN-1170, S06A-EN-1180 |  | 64.7d |
| S06A-CC-1980 |  | Block-02 -HT Cable Laying | 7d | 2026-10-01 | 2026-10-08 | S06A-PR-4430 SS, S06A-EN-1940 |  | 98.7d |
| S06A-CC-1990 |  | Block-02 -FO Cable Laying | 7d | 2026-10-01 | 2026-10-08 | S06A-PR-4590 FS+4d, S06A-CC-1980 FF, S06A-CC-1980 SS, S06A-EN-1960 |  | 98.7d |
| S06A-CC-1860 |  | Block-02 -HT & LT Station - Shed Installation | 5d | 2026-10-20 | 2026-10-24 | S06A-PR-3150 SS, S06A-CC-1850 FS+3d |  | 64.7d |
| S06A-CC-1950 |  | Block-02 -HT LT Station - Staircase | 2d | 2026-10-20 | 2026-10-21 | S06A-CC-1850 FS+3d |  | 87.7d |
| S06A-CC-1880 |  | Block-02 -IDT Foundation - Grade Slab Casting & Dyke Wall | 9d | 2026-10-23 | 2026-10-31 | S06A-CC-1840 |  | 70.7d |
| S06A-CC-1890 |  | Block-02 -NIFPS Foundation | 10d | 2026-10-23 | 2026-11-01 | S06A-CC-1840, S06A-EN-1090 |  | 47.7d |
| S06A-CC-1900 |  | Block-02 -BOT Foundation | 10d | 2026-10-23 | 2026-11-01 | S06A-CC-1840 |  | 69.7d |
| S06A-CC-1910 |  | Block-02 -Aux Transformer Foundation | 5d | 2026-10-23 | 2026-10-27 | S06A-CC-1840 |  | 68.7d |

| ID | WBS | Task | Duration | Start | Finish | Predecessors | Complete | Total float |
| --- | --- | --- | --- | --- | --- | --- | --- | --- |
| S06A-CC-2030 |  | Block-02 -IDT Erection | 5d | 2026-10-23 | 2026-10-27 | S06A-PR-2030 SS, S06A-CC-1840, S06A-PR-6790 |  | 57.7d |
| S06A-CC-1870 |  | Block-02 -HT & LT Station - Sheeting Installation | 2d | 2026-10-25 | 2026-10-26 | S06A-PR-3150 SS, S06A-CC-1860 |  | 64.7d |
| S06A-CC-2010 |  | Block-02 -HT Panel Erection | 1d | 2026-10-27 | 2026-10-27 | S06A-PR-2190 SS, S06A-CC-1870 SS+2d, S06A-PR-6790, S06A-EN-1810 |  | 71.7d |
| S06A-CC-2020 |  | Block-02 -LT Panel Erection | 6d | 2026-10-29 | 2026-11-03 | S06A-PR-2350 SS, S06A-CC-1870 FS+2d, S06A-PR-6790, S06A-EN-1740, S06A-EN-1750 |  | 64.7d |
| S06A-CC-2000 |  | Block-02 -Control Cable Laying | 5d | 2026-10-30 | 2026-11-04 | S06A-PR-4270 SS, S06A-CC-2050 FF, S06A-CC-2050 SS, S06A-EN-2030 |  | 67d |
| S06A-CC-2050 |  | Block-02 -SCADA & SACU Installation | 5d | 2026-10-30 | 2026-11-04 | S06A-PR-6290, S06A-CC-1870 |  | 67d |
| S06A-CC-1960 |  | Block-02 -Cable Hanger - Structure & Messenger Wire Erection | 5d | 2026-10-31 | 2026-11-04 | S06A-PR-3950 SS, S06A-PR-3790 SS, S06A-PR-3630 SS, S06A-PR-3470 SS, S06A-PR-3310 SS, S06A-CC-1670 FF+4d, S06A-CC-1670 SS+4d, S06A-EN-2890, S06A-EN-1530 |  | 53.7d |
| S06A-CC-2040 |  | Block-02 -Inverter Installation | 7d | 2026-11-03 | 2026-11-09 | S06A-PR-5230 SS, S06A-PR-5070 SS, S06A-PR-4750 SS, S06A-PR-1870 SS, S06A-CC-1680 FS+2d, S06A-PR-4910 SS, S06A-EN-1610 |  | 63.7d |
| S06A-CC-1970 |  | Block-02 -LT Cable Laying | 20d | 2026-11-04 | 2026-11-23 | S06A-CC-1960 FF+4d, S06A-CC-1960 SS+4d, S06A-PR-4110 SS, S06A-EN-2700, S06A-EN-1920, S06A-EN-1970 |  | 53.7d |
| S06A-CC-2080 |  | Block-02 -NIFPS - Installation | 10d | 2026-11-07 | 2026-11-16 | S06A-PR-2030 SS, S06A-CC-1890 FS+5d, S06A-CC-2030, S06A-EN-1660 |  | 47.7d |
| S06A-CC-2060 |  | Block-02 -ACDB Installation | 2d | 2026-12-05 | 2026-12-06 | S06A-PR-6610 SS, S06A-CC-1870, S06A-EN-1760 |  | 34.7d |
| S06A-CC-2090 |  | Block-02 -HT Cable Terminations - IDT Side | 2d | 2026-12-05 | 2026-12-06 | S06A-PR-6610 SS, S06A-CC-1990 FF+2d, S06A-CC-1990 SS+2d, S06A-CC-1980 FF+2d, S06A-CC-1980 SS+2d, S06A-CC-2030, S06A-CC-2010 |  | 41.7d |
| S06A-CC-2100 |  | Block-02 -LT Cable Terminations - LT Panel To IDT | 7d | 2026-12-05 | 2026-12-11 | S06A-PR-6610 SS, S06A-CC-1970 FF+1d, S06A-CC-1970 SS+2d, S06A-CC-2030, S06A-CC-2020 FF+1d, S06A-EN-1850 |  | 36.7d |
| S06A-CC-2110 |  | Block-02 -LT Cable Terminations - Inverter To LT Panel | 7d | 2026-12-05 | 2026-12-11 | S06A-PR-6610 SS, S06A-CC-1970 FF+1d, S06A-CC-1970 SS+2d, S06A-CC-2040 FF+2d, S06A-CC-2040 SS+2d, S06A-CC-2020 FF+1d |  | 36.7d |
| S06A-CC-2070 |  | Block-02 -Aux Transformer - Installation | 4d | 2026-12-06 | 2026-12-10 | S06A-CC-1910 FS+3d, S06A-PR-6610 SS+2d |  | 32d |
| S06A-CC-1940 |  | Block-02 -IDT Area - Gravel Filling | 5d | 2026-12-07 | 2026-12-12 | S06A-CC-2000, S06A-CC-1910, S06A-CC-1900, S06A-CC-1890, S06A-CC-1880, S06A-CC-1850, S06A-CC-1840, S06A-CC-2080, S06A-CC-2070 SS+1d, S06A-CC-2060, S06A-CC-2050, S06A-CC-2030, S06A-CC-2020, S06A-CC-2010 |  | 34d |
| S06A-CC-1920 |  | Block-02 -IDT Area - Fencing | 5d | 2026-12-10 | 2026-12-15 | S06A-PR-6450 SS, S06A-CC-1940 SS+1d, S06A-CC-2080, S06A-CC-2070, S06A-CC-2060, S06A-CC-2050, S06A-CC-2030, S06A-CC-2020, S06A-CC-2010, S06A-EN-1100 |  | 32d |
| S06A-CC-1930 |  | Block-02 -IDT Area - Gate Installation | 1d | 2026-12-15 | 2026-12-16 | S06A-PR-6450 SS, S06A-CC-1920 |  | 32d |
|  | 3 | **CONSTRUCTION-PV AREA-PRE COMMISSIONING** |  | 2026-10-28 | 2026-12-20 |  |  |  |
| S06A-CC-2140 |  | Block-02 -HT Panel Testing | 1d | 2026-10-28 | 2026-10-28 | S06A-CC-2010, S06A-CC-1870 |  | 71.7d |
| S06A-CC-2150 |  | Block-02 -LT Panel Testing | 1d | 2026-11-04 | 2026-11-04 | S06A-CC-2020 |  | 64.7d |
| S06A-CC-2120 |  | Block-02 -IDT Filtration | 3d | 2026-11-17 | 2026-11-19 | S06A-CC-2030, S06A-CC-2080 |  | 47.7d |
| S06A-CC-2130 |  | Block-02 -IDT Testing | 2d | 2026-11-20 | 2026-11-21 | S06A-CC-2120, S06A-EN-1680 |  | 47.7d |
| S06A-CC-2160 |  | Block-02 -Inspection Offer To Asset Commissioning Team | 1d | 2026-12-12 | 2026-12-12 | S06A-CC-2110, S06A-CC-2100, S06A-CC-2090 |  | 36.7d |
| S06A-CC-2170 |  | Block-02 -Punch Point Identification By Asset Commissioning Team | 3d | 2026-12-13 | 2026-12-15 | S06A-CC-2160 |  | 36.7d |
| S06A-CC-2180 |  | Block-02 -Punch Point Rectification And Pre Charging Sign Off | 5d | 2026-12-16 | 2026-12-20 | S06A-CC-2170 |  | 36.7d |
|  | 4 | **CONSTRUCTION-COMMISSIONING** |  | 2026-11-22 | 2027-01-15 |  |  |  |
| S06A-CC-2190 |  | Block-02 -CEA Application | 1d | 2026-11-22 | 2026-11-22 | S06A-CC-2150, S06A-CC-2140, S06A-CC-2130, S06A-PR-6090 |  | 47.7d |
| S06A-CC-2200 |  | Block-02 -CEA Inspection | 1d | 2026-12-16 | 2026-12-17 | S06A-CC-1950, S06A-CC-1930, S06A-CC-2190 FS+8d |  | 32d |
| S06A-CC-2210 |  | Block-02 -CEA Compliance & Approval | 5d | 2026-12-17 | 2026-12-22 | S06A-CC-2200 |  | 32d |
| S06A-CC-2220 |  | Block-02 -First Time Charging - Application | 1d | 2026-12-28 | 2026-12-29 | S06A-CC-1790 SS+3d, S06A-CC-2210, S06A-CC-1750 |  | 26d |
| S06A-CC-2230 |  | Block-02 -First Time Charging - Approval | 2d | 2026-12-29 | 2026-12-31 | S06A-CC-2220 |  | 26d |
| S06A-CC-2240 |  | Block-02 -First Time Charging | 1d | 2026-12-31 | 2027-01-01 | S06A-CC-2180, S06A-CC-2230, S06A-CI-1010, PR-CA-27-014, PR-CA-27-013 |  | 26d |
| S06A-CC-2250 |  | Block-02 -Tracker Commissioning - SCADA | 8d | 2026-12-31 | 2027-01-08 | S06A-CC-2240 SS |  | 31d |
| S06A-CC-2260 |  | Block-02 -Robot Commissioning - SCADA | 12d | 2026-12-31 | 2027-01-12 | S06A-CC-1820 SS+2d, S06A-CC-1810, S06A-CC-1830 FF, S06A-CC-1830 SS+4d, S06A-CC-2220, S06A-CC-2050, S06A-CC-2240 SS |  | 27d |
| S06A-CC-2270 |  | Block-02 -Trial Operation | 1d | 2027-01-07 | 2027-01-08 | S06A-CC-2240 SS+7d, S06A-CC-1760, S06A-CC-1790 FF |  | 26d |
| S06A-CC-2280 |  | Block-02 -Trial Run Certificate | 1d | 2027-01-10 | 2027-01-11 | S06A-CC-2270 FS+2d |  | 26d |
| S06A-CC-2290 |  | Block-02 -COD | 2d | 2027-01-13 | 2027-01-15 | S06A-CC-2280 FS+2d, S06A-CC-2260, S06A-CC-2250, PR-CA-27-010 |  | 26d |
|  | 3 | **BLOCK-03** |  | 2026-04-30 | 2027-01-15 |  |  |  |
|  | 1 | **CONSTRUCTION-PV AREA-DC SIDE** |  | 2026-10-01 | 2027-01-01 |  |  |  |
| S06A-CC-2300 |  | Block-03 -Piling - MMS (Marking, Auguring & Concreting) | 30d | 2026-10-01 | 2026-10-31 | S06A-PR-1070 SS, S06A-PR-6740 SS, S06A-EN-2140 SS, S06A-EN-1420 SS |  | 45.7d |
| S06A-CC-2310 |  | Block-03 -Pile Capping | 30d | 2026-10-09 | 2026-11-07 | S06A-CC-2300 FF+7d, S06A-CC-2300 SS+7d |  | 56.7d |
| S06A-CC-2350 |  | Block-03 -Array Earthing | 25d | 2026-10-09 | 2026-11-02 | S06A-PR-2510 SS, S06A-CC-2300 FF+1d, S06A-CC-2300 SS+7d, S06A-EN-2330 |  | 57.7d |
| S06A-CC-2320 |  | Block-03 -Piling - LT Cable Hanger System | 20d | 2026-10-12 | 2026-10-31 | S06A-PR-1390 SS, S06A-CC-2300 FF, S06A-CC-2300 SS, S06A-EN-2900 |  | 53.7d |
| S06A-CC-2330 |  | Block-03 -Piling - Inverters | 16d | 2026-10-16 | 2026-10-31 | S06A-PR-1230 SS, S06A-CC-2300 FF, S06A-CC-2300 SS, S06A-EN-2140 |  | 63.7d |
| S06A-CC-2360 |  | Block-03 -MMS Erection - Torque Tube/Raftar | 28d | 2026-10-18 | 2026-11-14 | S06A-PR-1710 SS, S06A-CC-2350 FF, S06A-CC-2300 FF+14d, S06A-CC-2300 SS+14d, S06A-EN-1490, S06A-EN-1500 |  | 45.7d |
| S06A-CC-2370 |  | Block-03 -MMS Erection - Transmission Shaft/Bracing | 28d | 2026-10-22 | 2026-11-18 | S06A-PR-1710 SS, S06A-CC-2360 FF+4d, S06A-CC-2360 SS+4d |  | 49.7d |
| S06A-CC-2380 |  | Block-03 -MMS Erection - Purlin | 28d | 2026-10-22 | 2026-11-18 | S06A-PR-1710 SS, S06A-CC-2310 FF, S06A-CC-2360 FF+4d, S06A-CC-2360 SS+4d |  | 45.7d |
| S06A-CC-2340 |  | Block-03 -Piling - Robotic Docking System | 10d | 2026-10-23 | 2026-11-01 | S06A-PR-1550 SS, S06A-CC-2300 FF, S06A-CC-2300 SS |  | 68.7d |
| S06A-CC-2390 |  | Block-03 -MMS - RFI Completion | 28d | 2026-10-26 | 2026-11-22 | S06A-CC-2370 FF, S06A-CC-2380 FF+4d, S06A-CC-2380 SS+4d |  | 45.7d |
| S06A-CC-2400 |  | Block-03 -Module Installation | 40d | 2026-11-18 | 2026-12-28 | S06A-PR-6090 SS+1d, S06A-CC-2390 FF+8d, S06A-CC-2390 SS+4d, S06A-EN-1630, S06A-EN-2070 |  | 26d |
| S06A-CC-2420 |  | Block-03 -DC Cable Laying | 30d | 2026-11-19 | 2026-12-19 | S06A-CC-2400 SS+1d, S06A-CC-2360 SS+17d, S06A-PR-5760 SS |  | 42d |
| S06A-CC-2410 |  | Block-03 -Module - RFI Completion | 40d | 2026-11-22 | 2027-01-01 | S06A-CC-2400 FF+4d, S06A-CC-2400 SS+4d |  | 32d |
| S06A-CC-2450 |  | Block-03 -Robotic Structure - Docking Station Installation | 10d | 2026-12-01 | 2026-12-10 | S06A-PR-5600 SS, S06A-CC-2340, S06A-CC-2360 FF+2d, S06A-CC-2360 SS+2d, S06A-EN-1310 |  | 39.7d |
| S06A-CC-2460 |  | Block-03 -Robotic Structure - Reverse Station Installation | 10d | 2026-12-01 | 2026-12-10 | S06A-PR-5600 SS, S06A-CC-2340, S06A-CC-2360 FF+2d, S06A-CC-2360 SS+2d |  | 47.7d |
| S06A-CC-2480 |  | Block-03 -Robot Installation | 30d | 2026-12-02 | 2026-12-31 | S06A-PR-5400 SS, S06A-CC-2450 FF+4d, S06A-CC-2450 SS, S06A-CC-2400 FF+2d, S06A-CC-2400 SS+2d, S06A-EN-1550 |  | 38.7d |
| S06A-CC-2430 |  | Block-03 -Module Interconnection & MC4 Termination | 25d | 2026-12-04 | 2026-12-29 | S06A-CC-2400 FF+1d, S06A-PR-5920 SS, S06A-CC-2420 FF+2d, S06A-CC-2420 SS+2d |  | 34d |
| S06A-CC-2440 |  | Block-03 -VOC Testing | 22d | 2026-12-09 | 2026-12-31 | S06A-CC-2400 FF+2d, S06A-CC-2690, S06A-CC-2430 FF+2d, S06A-CC-2430 SS+2d |  | 34d |
| S06A-CC-2470 |  | Block-03 -Robotic Structure - Bridges Installation | 20d | 2026-12-10 | 2026-12-30 | S06A-PR-5600 SS, S06A-CC-2400 FF+2d, S06A-CC-2400 SS+2d |  | 46d |
|  | 2 | **CONSTRUCTION-PV AREA-AC SIDE** |  | 2026-04-30 | 2026-12-16 |  |  |  |
| S06A-CC-2490 |  | Block-03 -IDT Foundation Up To Rail | 21d | 2026-04-30 A | 2026-10-07 | S06A-PR-2990 SS+3d, S06A-PR-2830 SS, S06A-PR-2670 FS+3d, S06A-EN-1070 | 75% | 63.5d |
| S06A-CC-2500 |  | Block-03 -HT & LT Station - Slab | 15d | 2026-05-11 A | 2026-10-07 | S06A-PR-2830 SS, S06A-PR-2670 FS+3d, S06A-EN-1170, S06A-EN-1180 | 62% | 73.7d |
| S06A-CC-2630 |  | Block-03 -HT Cable Laying | 7d | 2026-10-01 | 2026-10-08 | S06A-PR-4430 SS, S06A-EN-1940 |  | 98.7d |
| S06A-CC-2640 |  | Block-03 -FO Cable Laying | 7d | 2026-10-01 | 2026-10-08 | S06A-PR-4590 FS+4d, S06A-CC-2630 FF, S06A-CC-2630 SS, S06A-EN-1960 |  | 98.7d |
| S06A-CC-2530 |  | Block-03 -IDT Foundation - Grade Slab Casting & Dyke Wall | 9d | 2026-10-07 | 2026-10-16 | S06A-CC-2490 |  | 86.5d |
| S06A-CC-2540 |  | Block-03 -NIFPS Foundation | 10d | 2026-10-07 | 2026-10-17 | S06A-CC-2490, S06A-EN-1090 |  | 63.5d |
| S06A-CC-2550 |  | Block-03 -BOT Foundation | 10d | 2026-10-07 | 2026-10-17 | S06A-CC-2490 |  | 85.5d |
| S06A-CC-2560 |  | Block-03 -Aux Transformer Foundation | 5d | 2026-10-07 | 2026-10-12 | S06A-CC-2490 |  | 84.5d |
| S06A-CC-2680 |  | Block-03 -IDT Erection | 5d | 2026-10-07 | 2026-10-12 | S06A-PR-6790, S06A-PR-2030 SS, S06A-CC-2490 |  | 73.5d |
| S06A-CC-2510 |  | Block-03 -HT & LT Station - Shed Installation | 5d | 2026-10-11 | 2026-10-15 | S06A-PR-3150 SS, S06A-CC-2500 FS+3d |  | 73.7d |

| ID | WBS | Task | Duration | Start | Finish | Predecessors | Complete | Total float |
| --- | --- | --- | --- | --- | --- | --- | --- | --- |
| S06A-CC-2600 |  | Block-03 -HT LT Station - Staircase | 2d | 2026-10-11 | 2026-10-12 | S06A-CC-2500 FS+3d |  | 96.7d |
| S06A-CC-2520 |  | Block-03 -HT & LT Station - Sheeting Installation | 2d | 2026-10-16 | 2026-10-17 | S06A-PR-3150 SS, S06A-CC-2510 |  | 73.7d |
| S06A-CC-2660 |  | Block-03 -HT Panel Erection | 1d | 2026-10-18 | 2026-10-18 | S06A-PR-6790, S06A-PR-2190 SS, S06A-CC-2520 SS+2d, S06A-EN-1810 |  | 80.7d |
| S06A-CC-2670 |  | Block-03 -LT Panel Erection | 6d | 2026-10-20 | 2026-10-25 | S06A-PR-6790, S06A-PR-2350 SS, S06A-CC-2520 FS+2d, S06A-EN-1740, S06A-EN-1750 |  | 73.7d |
| S06A-CC-2730 |  | Block-03 -NIFPS - Installation | 10d | 2026-10-22 | 2026-11-01 | S06A-CC-2680, S06A-PR-2030 SS, S06A-CC-2540 FS+5d, S06A-EN-1660 |  | 63.5d |
| S06A-CC-2650 |  | Block-03 -Control Cable Laying | 5d | 2026-10-30 | 2026-11-04 | S06A-PR-4270 SS, S06A-CC-2700 FF, S06A-CC-2700 SS, S06A-EN-2030 |  | 67d |
| S06A-CC-2700 |  | Block-03 -SCADA & SACU Installation | 5d | 2026-10-30 | 2026-11-04 | S06A-PR-6290, S06A-CC-2520 |  | 67d |
| S06A-CC-2610 |  | Block-03 -Cable Hanger - Structure & Messenger Wire Erection | 5d | 2026-10-31 | 2026-11-04 | S06A-PR-3950 SS, S06A-PR-3790 SS, S06A-PR-3630 SS, S06A-PR-3470 SS, S06A-PR-3310 SS, S06A-CC-2320 FF+4d, S06A-CC-2320 SS+4d, S06A-EN-2900, S06A-EN-1530 |  | 53.7d |
| S06A-CC-2690 |  | Block-03 -Inverter Installation | 7d | 2026-11-03 | 2026-11-09 | S06A-PR-4910 SS, S06A-PR-5230 SS, S06A-PR-5070 SS, S06A-PR-4750 SS, S06A-PR-1870 SS, S06A-CC-2330 FS+2d, S06A-EN-1610 |  | 63.7d |
| S06A-CC-2620 |  | Block-03 -LT Cable Laying | 20d | 2026-11-04 | 2026-11-23 | S06A-CC-2610 FF+4d, S06A-CC-2610 SS+4d, S06A-PR-4110 SS, S06A-EN-2710, S06A-EN-1920, S06A-EN-1970 |  | 53.7d |
| S06A-CC-2710 |  | Block-03 -ACDB Installation | 2d | 2026-12-05 | 2026-12-06 | S06A-PR-6610 SS, S06A-CC-2520, S06A-EN-1760 |  | 34.7d |
| S06A-CC-2740 |  | Block-03 -HT Cable Terminations - IDT Side | 2d | 2026-12-05 | 2026-12-06 | S06A-CC-2660, S06A-PR-6610 SS, S06A-CC-2640 FF+2d, S06A-CC-2640 SS+2d, S06A-CC-2630 FF+2d, S06A-CC-2630 SS+2d, S06A-CC-2680 |  | 41.7d |
| S06A-CC-2750 |  | Block-03 -LT Cable Terminations - LT Panel To IDT | 7d | 2026-12-05 | 2026-12-11 | S06A-CC-2670 FF+1d, S06A-PR-6610 SS, S06A-CC-2620 FF+1d, S06A-CC-2620 SS+2d, S06A-CC-2680, S06A-EN-1850 |  | 36.7d |
| S06A-CC-2760 |  | Block-03 -LT Cable Terminations - Inverter To LT Panel | 7d | 2026-12-05 | 2026-12-11 | S06A-CC-2670 FF+1d, S06A-PR-6610 SS, S06A-CC-2620 FF+1d, S06A-CC-2620 SS+2d, S06A-CC-2690 FF+2d, S06A-CC-2690 SS+2d |  | 36.7d |
| S06A-CC-2720 |  | Block-03 -Aux Transformer - Installation | 4d | 2026-12-06 | 2026-12-10 | S06A-PR-6610 SS+2d, S06A-CC-2560 FS+3d |  | 32d |
| S06A-CC-2590 |  | Block-03 -IDT Area - Gravel Filling | 5d | 2026-12-07 | 2026-12-12 | S06A-CC-2730, S06A-CC-2720 SS+1d, S06A-CC-2710, S06A-CC-2700, S06A-CC-2680, S06A-CC-2670, S06A-CC-2660, S06A-CC-2650, S06A-CC-2560, S06A-CC-2550, S06A-CC-2540, S06A-CC-2530, S06A-CC-2500, S06A-CC-2490 |  | 34d |
| S06A-CC-2570 |  | Block-03 -IDT Area - Fencing | 5d | 2026-12-10 | 2026-12-15 | S06A-PR-6450 SS, S06A-CC-2590 SS+1d, S06A-CC-2730, S06A-CC-2720, S06A-CC-2710, S06A-CC-2700, S06A-CC-2680, S06A-CC-2670, S06A-CC-2660, S06A-EN-1100 |  | 32d |
| S06A-CC-2580 |  | Block-03 -IDT Area - Gate Installation | 1d | 2026-12-15 | 2026-12-16 | S06A-PR-6450 SS, S06A-CC-2570 |  | 32d |
|  | 3 | **CONSTRUCTION-PV AREA-PRE COMMISSIONING** |  | 2026-10-19 | 2026-12-20 |  |  |  |
| S06A-CC-2790 |  | Block-03 -HT Panel Testing | 1d | 2026-10-19 | 2026-10-19 | S06A-CC-2520, S06A-CC-2660 |  | 80.7d |
| S06A-CC-2800 |  | Block-03 -LT Panel Testing | 1d | 2026-10-26 | 2026-10-26 | S06A-CC-2670 |  | 73.7d |
| S06A-CC-2770 |  | Block-03 -IDT Filtration | 3d | 2026-11-01 | 2026-11-04 | S06A-CC-2730, S06A-CC-2680 |  | 63.5d |
| S06A-CC-2780 |  | Block-03 -IDT Testing | 2d | 2026-11-04 | 2026-11-06 | S06A-CC-2770, S06A-EN-1680 |  | 63.5d |
| S06A-CC-2810 |  | Block-03 -Inspection Offer To Asset Commissioning Team | 1d | 2026-12-12 | 2026-12-12 | S06A-CC-2760, S06A-CC-2750, S06A-CC-2740 |  | 36.7d |
| S06A-CC-2820 |  | Block-03 -Punch Point Identification By Asset Commissioning Team | 3d | 2026-12-13 | 2026-12-15 | S06A-CC-2810 |  | 36.7d |
| S06A-CC-2830 |  | Block-03 -Punch Point Rectification And Pre Charging Sign Off | 5d | 2026-12-16 | 2026-12-20 | S06A-CC-2820 |  | 36.7d |
|  | 4 | **CONSTRUCTION-COMMISSIONING** |  | 2026-11-20 | 2027-01-15 |  |  |  |
| S06A-CC-2840 |  | Block-03 -CEA Application | 1d | 2026-11-20 | 2026-11-21 | S06A-PR-6090, S06A-CC-2800, S06A-CC-2790, S06A-CC-2780 |  | 49d |
| S06A-CC-2850 |  | Block-03 -CEA Inspection | 1d | 2026-12-16 | 2026-12-17 | S06A-CC-2600, S06A-CC-2580, S06A-CC-2840 FS+8d |  | 32d |
| S06A-CC-2860 |  | Block-03 -CEA Compliance & Approval | 5d | 2026-12-17 | 2026-12-22 | S06A-CC-2850 |  | 32d |
| S06A-CC-2870 |  | Block-03 -First Time Charging - Application | 1d | 2026-12-28 | 2026-12-29 | S06A-CC-2400, S06A-CC-2440 SS+3d, S06A-CC-2860 |  | 26d |
| S06A-CC-2880 |  | Block-03 -First Time Charging - Approval | 2d | 2026-12-29 | 2026-12-31 | S06A-CC-2870 |  | 26d |
| S06A-CC-2890 |  | Block-03 -First Time Charging | 1d | 2026-12-31 | 2027-01-01 | S06A-CC-2830, S06A-CC-2880, S06A-CI-1010, PR-CA-23-020, PR-CA-27-014, PR-CA-27-013, PR-CA-16-020 |  | 26d |
| S06A-CC-2900 |  | Block-03 -Tracker Commissioning - SCADA | 8d | 2026-12-31 | 2027-01-08 | S06A-CC-2890 SS |  | 31d |
| S06A-CC-2910 |  | Block-03 -Robot Commissioning - SCADA | 12d | 2026-12-31 | 2027-01-12 | S06A-CC-2890 SS, S06A-CC-2470 SS+2d, S06A-CC-2460, S06A-CC-2480 FF, S06A-CC-2480 SS+4d, S06A-CC-2870, S06A-CC-2700 |  | 27d |
| S06A-CC-2920 |  | Block-03 -Trial Operation | 1d | 2027-01-07 | 2027-01-08 | S06A-CC-2410, S06A-CC-2440 FF, S06A-CC-2890 SS+7d |  | 26d |
| S06A-CC-2930 |  | Block-03 -Trial Run Certificate | 1d | 2027-01-10 | 2027-01-11 | S06A-CC-2920 FS+2d |  | 26d |
| S06A-CC-2940 |  | Block-03 -COD | 2d | 2027-01-13 | 2027-01-15 | S06A-CC-2910, S06A-CC-2930 FS+2d, S06A-CC-2900, PR-CA-27-010 |  | 26d |
|  | 4 | **BLOCK-04** |  | 2026-04-30 | 2027-01-15 |  |  |  |
|  | 1 | **CONSTRUCTION-PV AREA-DC SIDE** |  | 2026-10-01 | 2027-01-01 |  |  |  |
| S06A-CC-2950 |  | Block-04 -Piling - MMS (Marking, Auguring & Concreting) | 30d | 2026-10-01 | 2026-10-31 | S06A-PR-1070 SS, S06A-PR-6740 SS, S06A-EN-2150 SS, S06A-EN-1420 SS |  | 45.7d |
| S06A-CC-2960 |  | Block-04 -Pile Capping | 30d | 2026-10-09 | 2026-11-07 | S06A-CC-2950 FF+7d, S06A-CC-2950 SS+7d |  | 56.7d |
| S06A-CC-3000 |  | Block-04 -Array Earthing | 25d | 2026-10-09 | 2026-11-02 | S06A-PR-2510 SS, S06A-CC-2950 FF+1d, S06A-CC-2950 SS+7d, S06A-EN-2340 |  | 57.7d |
| S06A-CC-2970 |  | Block-04 -Piling - LT Cable Hanger System | 20d | 2026-10-12 | 2026-10-31 | S06A-PR-1390 SS, S06A-CC-2950 FF, S06A-CC-2950 SS, S06A-EN-2910 |  | 53.7d |
| S06A-CC-2980 |  | Block-04 -Piling - Inverters | 16d | 2026-10-16 | 2026-10-31 | S06A-PR-1230 SS, S06A-CC-2950 FF, S06A-CC-2950 SS, S06A-EN-2150 |  | 63.7d |
| S06A-CC-3010 |  | Block-04 -MMS Erection - Torque Tube/Raftar | 28d | 2026-10-18 | 2026-11-14 | S06A-PR-1710 SS, S06A-CC-3000 FF, S06A-CC-2950 FF+14d, S06A-CC-2950 SS+14d, S06A-EN-1490, S06A-EN-1500 |  | 45.7d |
| S06A-CC-3020 |  | Block-04 -MMS Erection - Transmission Shaft/Bracing | 28d | 2026-10-22 | 2026-11-18 | S06A-PR-1710 SS, S06A-CC-3010 FF+4d, S06A-CC-3010 SS+4d |  | 49.7d |
| S06A-CC-3030 |  | Block-04 -MMS Erection - Purlin | 28d | 2026-10-22 | 2026-11-18 | S06A-PR-1710 SS, S06A-CC-2960 FF, S06A-CC-3010 FF+4d, S06A-CC-3010 SS+4d |  | 45.7d |
| S06A-CC-2990 |  | Block-04 -Piling - Robotic Docking System | 10d | 2026-10-23 | 2026-11-01 | S06A-PR-1550 SS, S06A-CC-2950 FF, S06A-CC-2950 SS |  | 68.7d |
| S06A-CC-3040 |  | Block-04 -MMS - RFI Completion | 28d | 2026-10-26 | 2026-11-22 | S06A-CC-3020 FF, S06A-CC-3030 FF+4d, S06A-CC-3030 SS+4d |  | 45.7d |
| S06A-CC-3050 |  | Block-04 -Module Installation | 40d | 2026-11-18 | 2026-12-28 | S06A-PR-6090 SS+1d, S06A-CC-3040 FF+8d, S06A-CC-3040 SS+4d, S06A-EN-1630, S06A-EN-2070 |  | 26d |
| S06A-CC-3070 |  | Block-04 -DC Cable Laying | 30d | 2026-11-19 | 2026-12-19 | S06A-CC-3050 SS+1d, S06A-CC-3010 SS+17d, S06A-PR-5760 SS |  | 42d |
| S06A-CC-3060 |  | Block-04 -Module - RFI Completion | 40d | 2026-11-22 | 2027-01-01 | S06A-CC-3050 FF+4d, S06A-CC-3050 SS+4d |  | 32d |
| S06A-CC-3100 |  | Block-04 -Robotic Structure - Docking Station Installation | 10d | 2026-12-01 | 2026-12-10 | S06A-PR-5600 SS, S06A-CC-2990, S06A-CC-3010 FF+2d, S06A-CC-3010 SS+2d, S06A-EN-1310 |  | 39.7d |
| S06A-CC-3110 |  | Block-04 -Robotic Structure - Reverse Station Installation | 10d | 2026-12-01 | 2026-12-10 | S06A-PR-5600 SS, S06A-CC-2990, S06A-CC-3010 FF+2d, S06A-CC-3010 SS+2d |  | 47.7d |
| S06A-CC-3130 |  | Block-04 -Robot Installation | 30d | 2026-12-02 | 2026-12-31 | S06A-PR-5400 SS, S06A-CC-3100 FF, S06A-CC-3100 SS, S06A-CC-3050 FF, S06A-CC-3050 SS, S06A-EN-1550 |  | 38.7d |
| S06A-CC-3080 |  | Block-04 -Module Interconnection & MC4 Termination | 25d | 2026-12-04 | 2026-12-29 | S06A-CC-3050 FF+1d, S06A-PR-5920 SS, S06A-CC-3070 FF+2d, S06A-CC-3070 SS+2d |  | 34d |
| S06A-CC-3090 |  | Block-04 -VOC Testing | 22d | 2026-12-09 | 2026-12-31 | S06A-CC-3050 FF+2d, S06A-CC-3360, S06A-CC-3080 FF+2d, S06A-CC-3080 SS+2d |  | 34d |
| S06A-CC-3120 |  | Block-04 -Robotic Structure - Bridges Installation | 20d | 2026-12-10 | 2026-12-30 | S06A-PR-5600 SS, S06A-CC-3050 FF+2d, S06A-CC-3050 SS+2d |  | 46d |
|  | 2 | **CONSTRUCTION-PV AREA-AC SIDE** |  | 2026-04-30 | 2026-12-16 |  |  |  |
| S06A-CC-3160 |  | Block-04 -IDT Foundation Up To Rail | 21d | 2026-04-30 A | 2026-10-07 | S06A-PR-2990 SS+3d, S06A-PR-2830 SS, S06A-PR-2670 FS+3d, S06A-EN-1070 | 75% | 62.7d |
| S06A-CC-3170 |  | Block-04 -HT & LT Station - Slab | 15d | 2026-05-18 A | 2026-10-07 | S06A-PR-2830 SS, S06A-PR-2670 FS+3d, S06A-EN-1170, S06A-EN-1180 | 62% | 73.7d |
| S06A-CC-3300 |  | Block-04 -HT Cable Laying | 7d | 2026-10-01 | 2026-10-08 | S06A-PR-4430 SS, S06A-EN-1940 |  | 98.7d |
| S06A-CC-3310 |  | Block-04 -FO Cable Laying | 7d | 2026-10-01 | 2026-10-08 | S06A-PR-4590 FS+4d, S06A-CC-3300 FF, S06A-CC-3300 SS, S06A-EN-1960 |  | 98.7d |
| S06A-CC-3200 |  | Block-04 -IDT Foundation - Grade Slab Casting & Dyke Wall | 9d | 2026-10-08 | 2026-10-16 | S06A-CC-3160 |  | 85.7d |
| S06A-CC-3210 |  | Block-04 -NIFPS Foundation | 10d | 2026-10-08 | 2026-10-17 | S06A-CC-3160, S06A-EN-1090 |  | 62.7d |
| S06A-CC-3220 |  | Block-04 -BOT Foundation | 10d | 2026-10-08 | 2026-10-17 | S06A-CC-3160 |  | 84.7d |
| S06A-CC-3230 |  | Block-04 -Aux Transformer Foundation | 5d | 2026-10-08 | 2026-10-12 | S06A-CC-3160 |  | 83.7d |
| S06A-CC-3350 |  | Block-04 -IDT Erection | 5d | 2026-10-08 | 2026-10-12 | S06A-PR-6790, S06A-PR-2030 SS, S06A-CC-3160 |  | 72.7d |
| S06A-CC-3180 |  | Block-04 -HT & LT Station - Shed Installation | 5d | 2026-10-11 | 2026-10-15 | S06A-PR-3150 SS, S06A-CC-3170 FS+3d |  | 73.7d |

| ID | WBS | Task | Duration | Start | Finish | Predecessors | Complete | Total float |
| --- | --- | --- | --- | --- | --- | --- | --- | --- |
| S06A-CC-3270 |  | Block-04 -HT LT Station - Staircase | 2d | 2026-10-11 | 2026-10-12 | S06A-CC-3170 FS+3d |  | 96.7d |
| S06A-CC-3190 |  | Block-04 -HT & LT Station - Sheeting Installation | 2d | 2026-10-16 | 2026-10-17 | S06A-PR-3150 SS, S06A-CC-3180 |  | 73.7d |
| S06A-CC-3330 |  | Block-04 -HT Panel Erection | 1d | 2026-10-18 | 2026-10-18 | S06A-PR-6790, S06A-PR-2190 SS, S06A-CC-3190 SS+2d, S06A-EN-1810 |  | 80.7d |
| S06A-CC-3340 |  | Block-04 -LT Panel Erection | 6d | 2026-10-20 | 2026-10-25 | S06A-PR-6790, S06A-PR-2350 SS, S06A-CC-3190 FS+2d, S06A-EN-1740, S06A-EN-1750 |  | 73.7d |
| S06A-CC-3400 |  | Block-04 -NIFPS - Installation | 10d | 2026-10-23 | 2026-11-01 | S06A-CC-3350, S06A-PR-2030 SS, S06A-CC-3210 FS+5d, S06A-EN-1660 |  | 62.7d |
| S06A-CC-3320 |  | Block-04 -Control Cable Laying | 5d | 2026-10-30 | 2026-11-04 | S06A-PR-4270 SS, S06A-CC-3370 FF, S06A-CC-3370 SS, S06A-EN-2030 |  | 67d |
| S06A-CC-3370 |  | Block-04 -SCADA & SACU Installation | 5d | 2026-10-30 | 2026-11-04 | S06A-PR-6290, S06A-CC-3190 |  | 67d |
| S06A-CC-3280 |  | Block-04 -Cable Hanger - Structure & Messenger Wire Erection | 5d | 2026-10-31 | 2026-11-04 | S06A-PR-3950 SS, S06A-PR-3790 SS, S06A-PR-3630 SS, S06A-PR-3470 SS, S06A-PR-3310 SS, S06A-CC-2970 FF+4d, S06A-CC-2970 SS+4d, S06A-EN-2910, S06A-EN-1530 |  | 53.7d |
| S06A-CC-3360 |  | Block-04 -Inverter Installation | 7d | 2026-11-03 | 2026-11-09 | S06A-PR-4910 SS, S06A-PR-5230 SS, S06A-PR-5070 SS, S06A-PR-4750 SS, S06A-PR-1870 SS, S06A-CC-2980 FS+2d, S06A-EN-1610 |  | 63.7d |
| S06A-CC-3290 |  | Block-04 -LT Cable Laying | 20d | 2026-11-04 | 2026-11-23 | S06A-CC-3280 FF+4d, S06A-CC-3280 SS+4d, S06A-PR-4110 SS, S06A-EN-2720, S06A-EN-1920, S06A-EN-1970 |  | 53.7d |
| S06A-CC-3140 |  | Block-04 -LT Cable Terminations - LT Panel To IDT | 7d | 2026-12-05 | 2026-12-11 | S06A-CC-3340 FF+1d, S06A-PR-6610 SS, S06A-CC-3290 FF+1d, S06A-CC-3290 SS+2d, S06A-CC-3350, S06A-EN-1850 |  | 36.7d |
| S06A-CC-3150 |  | Block-04 -LT Cable Terminations - Inverter To LT Panel | 7d | 2026-12-05 | 2026-12-11 | S06A-CC-3340 FF+1d, S06A-PR-6610 SS, S06A-CC-3290 FF+1d, S06A-CC-3290 SS+2d, S06A-CC-3360 FF+2d, S06A-CC-3360 SS+2d |  | 36.7d |
| S06A-CC-3380 |  | Block-04 -ACDB Installation | 2d | 2026-12-05 | 2026-12-06 | S06A-PR-6610 SS, S06A-CC-3190, S06A-EN-1760 |  | 34.7d |
| S06A-CC-3410 |  | Block-04 -HT Cable Terminations - IDT Side | 2d | 2026-12-05 | 2026-12-06 | S06A-CC-3330, S06A-PR-6610 SS, S06A-CC-3310 FF+2d, S06A-CC-3310 SS+2d, S06A-CC-3300 FF+2d, S06A-CC-3300 SS+2d, S06A-CC-3350 |  | 41.7d |
| S06A-CC-3390 |  | Block-04 -Aux Transformer - Installation | 4d | 2026-12-06 | 2026-12-10 | S06A-PR-6610 SS+2d, S06A-CC-3230 FS+3d |  | 32d |
| S06A-CC-3260 |  | Block-04 -IDT Area - Gravel Filling | 5d | 2026-12-07 | 2026-12-12 | S06A-CC-3400, S06A-CC-3390 SS+1d, S06A-CC-3380, S06A-CC-3370, S06A-CC-3350, S06A-CC-3340, S06A-CC-3330, S06A-CC-3320, S06A-CC-3230, S06A-CC-3220, S06A-CC-3210, S06A-CC-3200, S06A-CC-3170, S06A-CC-3160 |  | 34d |
| S06A-CC-3240 |  | Block-04 -IDT Area - Fencing | 5d | 2026-12-10 | 2026-12-15 | S06A-PR-6450 SS, S06A-CC-3260 SS+1d, S06A-CC-3400, S06A-CC-3390, S06A-CC-3380, S06A-CC-3370, S06A-CC-3350, S06A-CC-3340, S06A-CC-3330, S06A-EN-1100 |  | 32d |
| S06A-CC-3250 |  | Block-04 -IDT Area - Gate Installation | 1d | 2026-12-15 | 2026-12-16 | S06A-PR-6450 SS, S06A-CC-3240 |  | 32d |
|  | 3 | **CONSTRUCTION-PV AREA-PRE COMMISSIONING** |  | 2026-10-19 | 2026-12-20 |  |  |  |
| S06A-CC-3440 |  | Block-04 -HT Panel Testing | 1d | 2026-10-19 | 2026-10-19 | S06A-CC-3190, S06A-CC-3330 |  | 80.7d |
| S06A-CC-3450 |  | Block-04 -LT Panel Testing | 1d | 2026-10-26 | 2026-10-26 | S06A-CC-3340 |  | 73.7d |
| S06A-CC-3420 |  | Block-04 -IDT Filtration | 3d | 2026-11-02 | 2026-11-04 | S06A-CC-3400, S06A-CC-3350 |  | 62.7d |
| S06A-CC-3430 |  | Block-04 -IDT Testing | 2d | 2026-11-05 | 2026-11-06 | S06A-CC-3420, S06A-EN-1680 |  | 62.7d |
| S06A-CC-3460 |  | Block-04 -Inspection Offer To Asset Commissioning Team | 1d | 2026-12-12 | 2026-12-12 | S06A-CC-3150, S06A-CC-3140, S06A-CC-3410 |  | 36.7d |
| S06A-CC-3470 |  | Block-04 -Punch Point Identification By Asset Commissioning Team | 3d | 2026-12-13 | 2026-12-15 | S06A-CC-3460 |  | 36.7d |
| S06A-CC-3480 |  | Block-04 -Punch Point Rectification And Pre Charging Sign Off | 5d | 2026-12-16 | 2026-12-20 | S06A-CC-3470 |  | 36.7d |
|  | 4 | **CONSTRUCTION-COMMISSIONING** |  | 2026-11-20 | 2027-01-15 |  |  |  |
| S06A-CC-3490 |  | Block-04 -CEA Application | 1d | 2026-11-20 | 2026-11-21 | S06A-PR-6090, S06A-CC-3450, S06A-CC-3440, S06A-CC-3430 |  | 49d |
| S06A-CC-3500 |  | Block-04 -CEA Inspection | 1d | 2026-12-16 | 2026-12-17 | S06A-CC-3270, S06A-CC-3250, S06A-CC-3490 FS+8d |  | 32d |
| S06A-CC-3510 |  | Block-04 -CEA Compliance & Approval | 5d | 2026-12-17 | 2026-12-22 | S06A-CC-3500 |  | 32d |
| S06A-CC-3520 |  | Block-04 -First Time Charging - Application | 1d | 2026-12-28 | 2026-12-29 | S06A-CC-3050, S06A-CC-3090 SS+3d, S06A-CC-3510 |  | 26d |
| S06A-CC-3530 |  | Block-04 -First Time Charging - Approval | 2d | 2026-12-29 | 2026-12-31 | S06A-CC-3520 |  | 26d |
| S06A-CC-3540 |  | Block-04 -First Time Charging | 1d | 2026-12-31 | 2027-01-01 | S06A-CC-3480, S06A-CC-3530, S06A-CI-1010, PR-CA-23-020, PR-CA-27-014, PR-CA-27-013, PR-CA-16-020 |  | 26d |
| S06A-CC-3550 |  | Block-04 -Tracker Commissioning - SCADA | 8d | 2026-12-31 | 2027-01-08 | S06A-CC-3540 SS |  | 31d |
| S06A-CC-3560 |  | Block-04 -Robot Commissioning - SCADA | 12d | 2026-12-31 | 2027-01-12 | S06A-CC-3540 SS, S06A-CC-3120 SS+2d, S06A-CC-3110, S06A-CC-3130 FF, S06A-CC-3130 SS+4d, S06A-CC-3520, S06A-CC-3370 |  | 27d |
| S06A-CC-3570 |  | Block-04 -Trial Operation | 1d | 2027-01-07 | 2027-01-08 | S06A-CC-3060, S06A-CC-3090 FF, S06A-CC-3540 SS+7d |  | 26d |
| S06A-CC-3580 |  | Block-04 -Trial Run Certificate | 1d | 2027-01-10 | 2027-01-11 | S06A-CC-3570 FS+2d |  | 26d |
| S06A-CC-3590 |  | Block-04 -COD | 2d | 2027-01-13 | 2027-01-15 | S06A-CC-3560, S06A-CC-3580 FS+2d, S06A-CC-3550, PR-CA-27-010 |  | 26d |
|  | 2 | **PHASE-2 (50MW)** |  | 2026-04-30 | 2027-01-24 |  |  |  |
|  | 1 | **BLOCK-05** |  | 2026-04-30 | 2027-01-24 |  |  |  |
|  | 1 | **CONSTRUCTION-PV AREA-DC SIDE** |  | 2026-10-01 | 2027-01-10 |  |  |  |
| S06A-CC-3600 |  | Block-05 -Piling - MMS (Marking, Auguring & Concreting) | 29d | 2026-10-01 | 2026-10-30 | S06A-PR-6740 SS, S06A-EN-2160 SS, S06A-EN-1420 SS, S06A-PR-1090 SS |  | 47.7d |
| S06A-CC-3610 |  | Block-05 -Pile Capping | 30d | 2026-10-08 | 2026-11-06 | S06A-CC-3600 FF+6d, S06A-CC-3600 SS+6d |  | 58.7d |
| S06A-CC-3650 |  | Block-05 -Array Earthing | 25d | 2026-10-08 | 2026-11-01 | S06A-CC-3600 FF+1d, S06A-CC-3600 SS+6d, S06A-EN-2350, S06A-PR-2530 SS |  | 59.7d |
| S06A-CC-3620 |  | Block-05 -Piling - LT Cable Hanger System | 20d | 2026-10-11 | 2026-10-30 | S06A-CC-3600 FF, S06A-CC-3600 SS, S06A-EN-2920, S06A-PR-1410 SS |  | 54.7d |
| S06A-CC-3630 |  | Block-05 -Piling - Inverters | 15d | 2026-10-16 | 2026-10-30 | S06A-CC-3600 FF, S06A-CC-3600 SS, S06A-EN-2160, S06A-PR-1250 SS |  | 64.7d |
| S06A-CC-3660 |  | Block-05 -MMS Erection - Torque Tube/Raftar | 28d | 2026-10-17 | 2026-11-13 | S06A-CC-3650 FF, S06A-CC-3600 FF+14d, S06A-CC-3600 SS+14d, S06A-EN-1490, S06A-EN-1500, S06A-PR-1730 SS |  | 47.7d |
| S06A-CC-3670 |  | Block-05 -MMS Erection - Transmission Shaft/Bracing | 28d | 2026-10-21 | 2026-11-17 | S06A-CC-3660 FF+4d, S06A-CC-3660 SS+4d, S06A-PR-1730 SS |  | 51.7d |
| S06A-CC-3680 |  | Block-05 -MMS Erection - Purlin | 28d | 2026-10-21 | 2026-11-17 | S06A-CC-3610 FF, S06A-CC-3660 FF+4d, S06A-CC-3660 SS+4d, S06A-PR-1730 SS |  | 47.7d |
| S06A-CC-3690 |  | Block-05 -MMS - RFI Completion | 28d | 2026-10-25 | 2026-11-21 | S06A-CC-3670 FF, S06A-CC-3680 FF+4d, S06A-CC-3680 SS+4d |  | 47.7d |
| S06A-CC-3640 |  | Block-05 -Piling - Robotic Docking System | 10d | 2026-10-28 | 2026-11-06 | S06A-CC-3600 FF, S06A-CC-3600 SS, S06A-PR-1570 SS |  | 59.7d |
| S06A-CC-3700 |  | Block-05 -Module Installation | 39d | 2026-11-29 | 2027-01-06 | S06A-CC-3690 FF+8d, S06A-CC-3690 SS+4d, S06A-EN-1630 SS, S06A-EN-2070, S06A-PR-6120 SS |  | 16.7d |
| S06A-CC-3720 |  | Block-05 -DC Cable Laying | 30d | 2026-11-30 | 2026-12-29 | S06A-CC-3700 SS+1d, S06A-CC-3660 SS+17d, S06A-PR-5780 SS |  | 31.7d |
| S06A-CC-3710 |  | Block-05 -Module - RFI Completion | 40d | 2026-12-02 | 2027-01-10 | S06A-CC-3700 FF+3d, S06A-CC-3700 SS+3d |  | 22.7d |
| S06A-CC-3750 |  | Block-05 -Robotic Structure - Docking Station Installation | 10d | 2026-12-06 | 2026-12-15 | S06A-CC-3640, S06A-CC-3660 FF+2d, S06A-CC-3660 SS+2d, S06A-EN-1310, S06A-PR-5620 SS |  | 30.7d |
| S06A-CC-3760 |  | Block-05 -Robotic Structure - Reverse Station Installation | 10d | 2026-12-06 | 2026-12-15 | S06A-CC-3640, S06A-CC-3660 FF+2d, S06A-CC-3660 SS+2d, S06A-PR-5620 SS |  | 42.7d |
| S06A-CC-3780 |  | Block-05 -Robot Installation | 30d | 2026-12-10 | 2027-01-08 | S06A-CC-3750 FF+4d, S06A-CC-3750 SS+4d, S06A-CC-3700 FF+2d, S06A-CC-3700 SS+2d, S06A-EN-1550, S06A-PR-5430 SS |  | 30.7d |
| S06A-CC-3730 |  | Block-05 -Module Interconnection & MC4 Termination | 25d | 2026-12-14 | 2027-01-07 | S06A-CC-3700 FF+1d, S06A-CC-3720 FF+2d, S06A-CC-3720 SS+2d, S06A-PR-5940 SS |  | 24.7d |
| S06A-CC-3740 |  | Block-05 -VOC Testing | 22d | 2026-12-19 | 2027-01-09 | S06A-CC-3700 FF+2d, S06A-CC-3990, S06A-CC-3730 FF+2d, S06A-CC-3730 SS+2d |  | 24.7d |
| S06A-CC-3770 |  | Block-05 -Robotic Structure - Bridges Installation | 20d | 2026-12-20 | 2027-01-08 | S06A-CC-3700 FF+2d, S06A-CC-3700 SS+2d, S06A-PR-5620 SS |  | 36.7d |
|  | 2 | **CONSTRUCTION-PV AREA-AC SIDE** |  | 2026-04-30 | 2026-12-20 |  |  |  |
| S06A-CC-3790 |  | Block-05 -IDT Foundation Up To Rail | 21d | 2026-04-30 A | 2026-08-20 A | S06A-EN-1070, S06A-PR-2690 SS, S06A-PR-2850 SS, S06A-PR-3010 SS | 100% |  |
| S06A-CC-3800 |  | Block-05 -HT & LT Station - Slab | 15d | 2026-05-18 A | 2026-07-18 A | S06A-EN-1170 SS, S06A-EN-1180 SS, S06A-PR-2690 SS, S06A-PR-2850 SS | 100% |  |
| S06A-CC-3830 |  | Block-05 -IDT Foundation - Grade Slab Casting & Dyke Wall | 9d | 2026-08-09 A | 2026-10-03 | S06A-CC-3790 FS+1d | 80% | 97.7d |
| S06A-CC-3850 |  | Block-05 -BOT Foundation | 10d | 2026-10-01 | 2026-10-11 | S06A-CC-3790 |  | 89.7d |
| S06A-CC-3930 |  | Block-05 -HT Cable Laying | 7d | 2026-10-01 | 2026-10-08 | S06A-EN-1940, S06A-PR-4450 SS |  | 98.7d |
| S06A-CC-3940 |  | Block-05 -FO Cable Laying | 7d | 2026-10-01 | 2026-10-08 | S06A-CC-3930 FF, S06A-CC-3930 SS, S06A-EN-1960, S06A-PR-4610 SS |  | 98.7d |
| S06A-CC-3980 |  | Block-05 -IDT Erection | 5d | 2026-10-01 | 2026-10-06 | S06A-PR-6790, S06A-CC-3790, S06A-PR-2050 SS |  | 77.7d |
| S06A-CC-3840 |  | Block-05 -NIFPS Foundation | 10d | 2026-10-03 | 2026-10-12 | S06A-CC-3790 FS+1d, S06A-EN-1090 FS+1.11d |  | 66.7d |
| S06A-CC-3860 |  | Block-05 -Aux Transformer Foundation | 5d | 2026-10-03 | 2026-10-07 | S06A-CC-3790 FS+1d |  | 87.7d |

| ID | WBS | Task | Duration | Start | Finish | Predecessors | Complete | Total float |
| --- | --- | --- | --- | --- | --- | --- | --- | --- |
| S06A-CC-3900 |  | Block-05 -HT LT Station - Staircase | 2d | 2026-10-04 | 2026-10-05 | S06A-CC-3800 FS+2d |  | 102.7d |
| S06A-CC-3810 |  | Block-05 -HT & LT Station - Shed Installation | 5d | 2026-10-05 | 2026-10-09 | S06A-CC-3800 FS+3d, S06A-PR-3170 SS |  | 78.7d |
| S06A-CC-3820 |  | Block-05 -HT & LT Station - Sheeting Installation | 2d | 2026-10-10 | 2026-10-11 | S06A-CC-3810, S06A-PR-3170 SS |  | 78.7d |
| S06A-CC-4030 |  | Block-05 -NIFPS - Installation | 10d | 2026-10-18 | 2026-10-27 | S06A-CC-3980, S06A-CC-3840 FS+5d, S06A-EN-1660, S06A-PR-2050 SS |  | 66.7d |
| S06A-CC-3970 |  | Block-05 -LT Panel Erection | 6d | 2026-10-21 | 2026-10-26 | S06A-PR-6790, S06A-CC-3820 FS+2d, S06A-EN-1740, S06A-EN-1750, S06A-PR-2370 SS |  | 71.7d |
| S06A-CC-3960 |  | Block-05 -HT Panel Erection | 1d | 2026-10-23 | 2026-10-23 | S06A-PR-6790, S06A-CC-3820 SS+2d, S06A-EN-1810, S06A-PR-2210 SS |  | 74.7d |
| S06A-CC-3910 |  | Block-05 -Cable Hanger - Structure & Messenger Wire Erection | 5d | 2026-10-30 | 2026-11-03 | S06A-CC-3620 FF+4d, S06A-CC-3620 SS+4d, S06A-EN-2920, S06A-EN-1530, S06A-PR-3330 SS, S06A-PR-3490 SS, S06A-PR-3650 SS, S06A-PR-3810 SS, S06A-PR-3970 SS |  | 54.7d |
| S06A-CC-3990 |  | Block-05 -Inverter Installation | 7d | 2026-11-02 | 2026-11-08 | S06A-CC-3630 FS+2d, S06A-EN-1610, S06A-PR-1890 SS, S06A-PR-4770 SS, S06A-PR-4930, S06A-PR-5090 SS, S06A-PR-5250 SS |  | 64.7d |
| S06A-CC-3920 |  | Block-05 -LT Cable Laying | 20d | 2026-11-03 | 2026-11-22 | S06A-CC-3910 FF+4d, S06A-CC-3910 SS+4d, S06A-EN-2730, S06A-EN-1920, S06A-EN-1970, S06A-PR-4130 SS |  | 54.7d |
| S06A-CC-3950 |  | Block-05 -Control Cable Laying | 5d | 2026-11-04 | 2026-11-09 | S06A-CC-4000 FF, S06A-CC-4000 SS, S06A-EN-2030, S06A-PR-4290 SS |  | 61d |
| S06A-CC-4000 |  | Block-05 -SCADA & SACU Installation | 5d | 2026-11-04 | 2026-11-09 | S06A-CC-3820, S06A-PR-6310 |  | 61d |
| S06A-CC-4010 |  | Block-05 -ACDB Installation | 2d | 2026-12-11 | 2026-12-12 | S06A-CC-3820, S06A-EN-1760, S06A-PR-6630 SS |  | 28.7d |
| S06A-CC-4020 |  | Block-05 -Aux Transformer - Installation | 4d | 2026-12-11 | 2026-12-14 | S06A-CC-3860 FS+3d, S06A-PR-6630 SS |  | 26.7d |
| S06A-CC-4040 |  | Block-05 -HT Cable Terminations - IDT Side | 2d | 2026-12-11 | 2026-12-12 | S06A-CC-3960, S06A-CC-3940 FF+2d, S06A-CC-3940 SS+2d, S06A-CC-3930 FF+2d, S06A-CC-3930 SS+2d, S06A-CC-3980, S06A-PR-6630 SS |  | 35.7d |
| S06A-CC-4050 |  | Block-05 -LT Cable Terminations - LT Panel To IDT | 7d | 2026-12-11 | 2026-12-17 | S06A-CC-3970 FF+1d, S06A-CC-3920 FF+1d, S06A-CC-3920 SS+2d, S06A-CC-3980, S06A-EN-1850, S06A-PR-6630 SS |  | 30.7d |
| S06A-CC-4060 |  | Block-05 -LT Cable Terminations - Inverter To LT Panel | 7d | 2026-12-11 | 2026-12-17 | S06A-CC-3970 FF+1d, S06A-CC-3920 FF+1d, S06A-CC-3920 SS+2d, S06A-CC-3990 FF+2d, S06A-CC-3990 SS+2d, S06A-PR-6630 SS |  | 30.7d |
| S06A-CC-3890 |  | Block-05 -IDT Area - Gravel Filling | 5d | 2026-12-12 | 2026-12-16 | S06A-CC-4030, S06A-CC-4020 SS+1d, S06A-CC-4010 SS, S06A-CC-4000, S06A-CC-3980, S06A-CC-3970, S06A-CC-3960, S06A-CC-3950, S06A-CC-3860, S06A-CC-3850, S06A-CC-3840, S06A-CC-3830, S06A-CC-3800, S06A-CC-3790 |  | 28.7d |
| S06A-CC-3870 |  | Block-05 -IDT Area - Fencing | 5d | 2026-12-15 | 2026-12-19 | S06A-CC-3890 SS+1d, S06A-CC-4030, S06A-CC-4020, S06A-CC-4010, S06A-CC-4000, S06A-CC-3980, S06A-CC-3970, S06A-CC-3960, S06A-EN-1100, S06A-PR-6470 SS |  | 26.7d |
| S06A-CC-3880 |  | Block-05 -IDT Area - Gate Installation | 1d | 2026-12-20 | 2026-12-20 | S06A-CC-3870, S06A-PR-6470 SS |  | 26.7d |
|  | 3 | **CONSTRUCTION-PV AREA-PRE COMMISSIONING** |  | 2026-10-24 | 2026-12-26 |  |  |  |
| S06A-CC-4090 |  | Block-05 -HT Panel Testing | 1d | 2026-10-24 | 2026-10-24 | S06A-CC-3820, S06A-CC-3960 |  | 74.7d |
| S06A-CC-4100 |  | Block-05 -LT Panel Testing | 1d | 2026-10-27 | 2026-10-27 | S06A-CC-3970 |  | 71.7d |
| S06A-CC-4070 |  | Block-05 -IDT Filtration | 3d | 2026-10-28 | 2026-10-30 | S06A-CC-4030, S06A-CC-3980 |  | 66.7d |
| S06A-CC-4080 |  | Block-05 -IDT Testing | 2d | 2026-10-31 | 2026-11-01 | S06A-CC-4070, S06A-EN-1680 |  | 66.7d |
| S06A-CC-4110 |  | Block-05 -Inspection Offer To Asset Commissioning Team | 1d | 2026-12-18 | 2026-12-18 | S06A-CC-4060, S06A-CC-4050, S06A-CC-4040 |  | 30.7d |
| S06A-CC-4120 |  | Block-05 -Punch Point Identification By Asset Commissioning Team | 3d | 2026-12-19 | 2026-12-21 | S06A-CC-4110 |  | 30.7d |
| S06A-CC-4130 |  | Block-05 -Punch Point Rectification And Pre Charging Sign Off | 5d | 2026-12-22 | 2026-12-26 | S06A-CC-4120 |  | 30.7d |
|  | 4 | **CONSTRUCTION-COMMISSIONING** |  | 2026-12-01 | 2027-01-24 |  |  |  |
| S06A-CC-4140 |  | Block-05 -CEA Application | 1d | 2026-12-01 | 2026-12-02 | S06A-CC-4100, S06A-CC-4090, S06A-CC-4080, S06A-PR-6120 |  | 37d |
| S06A-CC-4150 |  | Block-05 -CEA Inspection | 1d | 2026-12-21 | 2026-12-21 | S06A-CC-3900, S06A-CC-3880, S06A-CC-4140 FS+8d |  | 26.7d |
| S06A-CC-4160 |  | Block-05 -CEA Compliance & Approval | 5d | 2026-12-23 | 2026-12-27 | S06A-CC-4150 FS+1d |  | 26.7d |
| S06A-CC-4170 |  | Block-05 -First Time Charging - Application | 1d | 2027-01-07 | 2027-01-07 | S06A-CC-3700, S06A-CC-3740 SS+3d, S06A-CC-4160 |  | 16.7d |
| S06A-CC-4180 |  | Block-05 -First Time Charging - Approval | 2d | 2027-01-08 | 2027-01-09 | S06A-CC-4170 |  | 16.7d |
| S06A-CC-4190 |  | Block-05 -First Time Charging | 1d | 2027-01-10 | 2027-01-10 | S06A-CC-4130, S06A-CC-4180, S06A-CI-1010, PR-CA-27-014, PR-CA-27-013 |  | 16.7d |
| S06A-CC-4200 |  | Block-05 -Tracker Commissioning - SCADA | 8d | 2027-01-10 | 2027-01-17 | S06A-CC-4190 SS |  | 21.7d |
| S06A-CC-4210 |  | Block-05 -Robot Commissioning - SCADA | 12d | 2027-01-10 | 2027-01-21 | S06A-CC-4190 SS, S06A-CC-3770 SS+2d, S06A-CC-3760, S06A-CC-3780 FF, S06A-CC-3780 SS+4d, S06A-CC-4170, S06A-CC-4000 |  | 17.7d |
| S06A-CC-4220 |  | Block-05 -Trial Operation | 1d | 2027-01-17 | 2027-01-17 | S06A-CC-3710, S06A-CC-3740 FF, S06A-CC-4190 SS+7d |  | 16.7d |
| S06A-CC-4230 |  | Block-05 -Trial Run Certificate | 1d | 2027-01-20 | 2027-01-20 | S06A-CC-4220 FS+2d |  | 16.7d |
| S06A-CC-4240 |  | Block-05 -COD | 2d | 2027-01-23 | 2027-01-24 | S06A-CC-4210, S06A-CC-4230 FS+2d, S06A-CC-4200, PR-CA-27-010 |  | 16.7d |
|  | 2 | **BLOCK-06** |  | 2026-04-30 | 2027-01-24 |  |  |  |
|  | 1 | **CONSTRUCTION-PV AREA-DC SIDE** |  | 2026-08-20 | 2027-01-11 |  |  |  |
| S06A-CC-4250 |  | Block-06 -Piling - MMS (Marking, Auguring & Concreting) | 30d | 2026-08-20 A | 2026-10-28 | S06A-PR-6740 SS, S06A-EN-2170 SS, S06A-EN-1420 SS, S06A-PR-1090 SS | 11% | 48.7d |
| S06A-CC-4260 |  | Block-06 -Pile Capping | 30d | 2026-10-09 | 2026-11-07 | S06A-CC-4250 FF+7d, S06A-CC-4250 SS+7d |  | 57.7d |
| S06A-CC-4270 |  | Block-06 -Piling - LT Cable Hanger System | 20d | 2026-10-09 | 2026-10-28 | S06A-CC-4250 FF, S06A-CC-4250 SS, S06A-EN-2930, S06A-PR-1410 SS |  | 56.7d |
| S06A-CC-4300 |  | Block-06 -Array Earthing | 25d | 2026-10-09 | 2026-11-02 | S06A-CC-4250 FF+1d, S06A-CC-4250 SS+7d, S06A-EN-2360, S06A-PR-2530 SS |  | 58.7d |
| S06A-CC-4280 |  | Block-06 -Piling - Inverters | 16d | 2026-10-13 | 2026-10-28 | S06A-CC-4250 FF, S06A-CC-4250 SS, S06A-EN-2170, S06A-PR-1250 SS |  | 66.7d |
| S06A-CC-4310 |  | Block-06 -MMS Erection - Torque Tube/Raftar | 28d | 2026-10-16 | 2026-11-12 | S06A-CC-4300 FF, S06A-CC-4250 FF+14d, S06A-CC-4250 SS+14d, S06A-EN-1490, S06A-EN-1500, S06A-PR-1730 SS |  | 48.7d |
| S06A-CC-4320 |  | Block-06 -MMS Erection - Transmission Shaft/Bracing | 28d | 2026-10-20 | 2026-11-16 | S06A-CC-4310 FF+4d, S06A-CC-4310 SS+4d, S06A-PR-1730 SS |  | 52.7d |
| S06A-CC-4330 |  | Block-06 -MMS Erection - Purlin | 28d | 2026-10-20 | 2026-11-16 | S06A-CC-4260 FF, S06A-CC-4310 FF+4d, S06A-CC-4310 SS+4d, S06A-PR-1730 SS |  | 48.7d |
| S06A-CC-4340 |  | Block-06 -MMS - RFI Completion | 28d | 2026-10-24 | 2026-11-20 | S06A-CC-4320 FF, S06A-CC-4330 FF+4d, S06A-CC-4330 SS+4d |  | 48.7d |
| S06A-CC-4290 |  | Block-06 -Piling - Robotic Docking System | 10d | 2026-10-28 | 2026-11-06 | S06A-CC-4250 FF, S06A-CC-4250 SS, S06A-PR-1570 SS |  | 59.7d |
| S06A-CC-4350 |  | Block-06 -Module Installation | 39d | 2026-11-29 | 2027-01-06 | S06A-CC-4340 FF+8d, S06A-CC-4340 SS+4d, S06A-EN-1630, S06A-EN-2070, S06A-PR-6120 SS |  | 16.7d |
| S06A-CC-4370 |  | Block-06 -DC Cable Laying | 30d | 2026-11-30 | 2026-12-29 | S06A-CC-4350 SS+1d, S06A-CC-4310 SS+17d, S06A-PR-5780 SS |  | 31.7d |
| S06A-CC-4360 |  | Block-06 -Module - RFI Completion | 40d | 2026-12-03 | 2027-01-11 | S06A-CC-4350 FF+4d, S06A-CC-4350 SS+4d |  | 21.7d |
| S06A-CC-4400 |  | Block-06 -Robotic Structure - Docking Station Installation | 10d | 2026-12-06 | 2026-12-15 | S06A-CC-4290, S06A-CC-4310 FF+2d, S06A-CC-4310 SS+2d, S06A-EN-1310, S06A-PR-5620 SS |  | 30.7d |
| S06A-CC-4410 |  | Block-06 -Robotic Structure - Reverse Station Installation | 10d | 2026-12-06 | 2026-12-15 | S06A-CC-4290, S06A-CC-4310 FF+2d, S06A-CC-4310 SS+2d, S06A-PR-5620 SS |  | 42.7d |
| S06A-CC-4430 |  | Block-06 -Robot Installation | 30d | 2026-12-10 | 2027-01-08 | S06A-CC-4400 FF+4d, S06A-CC-4400 SS+4d, S06A-CC-4350 FF+2d, S06A-CC-4350 SS+2d, S06A-EN-1550, S06A-PR-5430 SS |  | 30.7d |
| S06A-CC-4380 |  | Block-06 -Module Interconnection & MC4 Termination | 25d | 2026-12-14 | 2027-01-07 | S06A-CC-4350 FF+1d, S06A-CC-4370 FF+2d, S06A-CC-4370 SS+2d, S06A-PR-5940 SS |  | 24.7d |
| S06A-CC-4390 |  | Block-06 -VOC Testing | 22d | 2026-12-19 | 2027-01-09 | S06A-CC-4350 FF+2d, S06A-CC-4640, S06A-CC-4380 FF+2d, S06A-CC-4380 SS+2d |  | 24.7d |
| S06A-CC-4420 |  | Block-06 -Robotic Structure - Bridges Installation | 20d | 2026-12-20 | 2027-01-08 | S06A-CC-4350 FF+2d, S06A-CC-4350 SS+2d, S06A-PR-5620 SS |  | 36.7d |
|  | 2 | **CONSTRUCTION-PV AREA-AC SIDE** |  | 2026-04-30 | 2026-12-20 |  |  |  |
| S06A-CC-4440 |  | Block-06 -IDT Foundation Up To Rail | 21d | 2026-04-30 A | 2026-10-07 | S06A-EN-1070, S06A-PR-2690 SS, S06A-PR-2850 SS, S06A-PR-3010 SS | 75% | 61.7d |
| S06A-CC-4450 |  | Block-06 -HT & LT Station - Slab | 15d | 2026-05-11 A | 2026-08-12 A | S06A-EN-1170, S06A-EN-1180, S06A-PR-2690 SS, S06A-PR-2850 SS | 100% |  |
| S06A-CC-4480 |  | Block-06 -IDT Foundation - Grade Slab Casting & Dyke Wall | 9d | 2026-07-18 A | 2026-10-06 | S06A-CC-4440 | 40% | 94.7d |
| S06A-CC-4580 |  | Block-06 -HT Cable Laying | 7d | 2026-10-01 | 2026-10-08 | S06A-EN-1940, S06A-PR-4450 SS |  | 98.7d |
| S06A-CC-4590 |  | Block-06 -FO Cable Laying | 7d | 2026-10-01 | 2026-10-08 | S06A-CC-4580 FF, S06A-CC-4580 SS, S06A-EN-1960, S06A-PR-4610 |  | 98.7d |
| S06A-CC-4460 |  | Block-06 -HT & LT Station - Shed Installation | 5d | 2026-10-05 | 2026-10-09 | S06A-CC-4450 FS+3d, S06A-PR-3170 SS |  | 78.7d |
| S06A-CC-4550 |  | Block-06 -HT LT Station - Staircase | 2d | 2026-10-05 | 2026-10-06 | S06A-CC-4450 FS+3d |  | 101.7d |
| S06A-CC-4490 |  | Block-06 -NIFPS Foundation | 10d | 2026-10-08 | 2026-10-17 | S06A-CC-4440, S06A-EN-1090 |  | 61.7d |
| S06A-CC-4500 |  | Block-06 -BOT Foundation | 10d | 2026-10-08 | 2026-10-17 | S06A-CC-4440 |  | 83.7d |

| ID | WBS | Task | Duration | Start | Finish | Predecessors | Complete | Total float |
| --- | --- | --- | --- | --- | --- | --- | --- | --- |
| S06A-CC-4510 |  | Block-06 -Aux Transformer Foundation | 5d | 2026-10-08 | 2026-10-12 | S06A-CC-4440 |  | 82.7d |
| S06A-CC-4630 |  | Block-06 -IDT Erection | 5d | 2026-10-08 | 2026-10-12 | S06A-PR-6790, S06A-CC-4440, S06A-PR-2050 SS |  | 71.7d |
| S06A-CC-4470 |  | Block-06 -HT & LT Station - Sheeting Installation | 2d | 2026-10-10 | 2026-10-11 | S06A-CC-4460, S06A-PR-3170 SS |  | 78.7d |
| S06A-CC-4620 |  | Block-06 -LT Panel Erection | 6d | 2026-10-21 | 2026-10-26 | S06A-PR-6790, S06A-CC-4470 FS+2d, S06A-EN-1740, S06A-EN-1750, S06A-PR-2370 SS |  | 71.7d |
| S06A-CC-4610 |  | Block-06 -HT Panel Erection | 1d | 2026-10-23 | 2026-10-23 | S06A-PR-6790, S06A-CC-4470 SS+2d, S06A-EN-1810, S06A-PR-2210 SS |  | 74.7d |
| S06A-CC-4680 |  | Block-06 -NIFPS - Installation | 10d | 2026-10-23 | 2026-11-01 | S06A-CC-4630, S06A-CC-4490 FS+5d, S06A-EN-1660, S06A-PR-2050 SS |  | 61.7d |
| S06A-CC-4560 |  | Block-06 -Cable Hanger - Structure & Messenger Wire Erection | 5d | 2026-10-28 | 2026-11-01 | S06A-CC-4270 FF+4d, S06A-CC-4270 SS+4d, S06A-EN-2930, S06A-EN-1530, S06A-PR-3330 SS, S06A-PR-3490 SS, S06A-PR-3650 SS, S06A-PR-3810 SS, S06A-PR-3970 SS |  | 56.7d |
| S06A-CC-4640 |  | Block-06 -Inverter Installation | 7d | 2026-10-31 | 2026-11-06 | S06A-CC-4280 FS+2d, S06A-EN-1610, S06A-PR-1890 SS, S06A-PR-4770 SS, S06A-PR-4930, S06A-PR-5090 SS, S06A-PR-5250 SS |  | 66.7d |
| S06A-CC-4570 |  | Block-06 -LT Cable Laying | 20d | 2026-11-01 | 2026-11-20 | S06A-CC-4560 FF+4d, S06A-CC-4560 SS+4d, S06A-EN-2740, S06A-EN-1920, S06A-EN-1970, S06A-PR-4130 SS |  | 56.7d |
| S06A-CC-4600 |  | Block-06 -Control Cable Laying | 5d | 2026-11-04 | 2026-11-09 | S06A-CC-4650 FF, S06A-CC-4650 SS, S06A-EN-2030, S06A-PR-4290 SS |  | 61d |
| S06A-CC-4650 |  | Block-06 -SCADA & SACU Installation | 5d | 2026-11-04 | 2026-11-09 | S06A-CC-4470, S06A-PR-6310 |  | 61d |
| S06A-CC-4660 |  | Block-06 -ACDB Installation | 2d | 2026-12-11 | 2026-12-12 | S06A-CC-4470, S06A-EN-1760, S06A-PR-6630 SS |  | 27.7d |
| S06A-CC-4670 |  | Block-06 -Aux Transformer - Installation | 4d | 2026-12-11 | 2026-12-14 | S06A-CC-4510 FS+3d, S06A-PR-6630 SS |  | 26.7d |
| S06A-CC-4690 |  | Block-06 -HT Cable Terminations - IDT Side | 2d | 2026-12-11 | 2026-12-12 | S06A-CC-4610, S06A-CC-4590 FF+2d, S06A-CC-4590 SS+2d, S06A-CC-4580 FF+2d, S06A-CC-4580 SS+2d, S06A-CC-4630, S06A-PR-6630 SS |  | 35.7d |
| S06A-CC-4700 |  | Block-06 -LT Cable Terminations - LT Panel To IDT | 7d | 2026-12-11 | 2026-12-17 | S06A-CC-4620 FF+1d, S06A-CC-4570 FF+1d, S06A-CC-4570 SS+2d, S06A-CC-4630, S06A-EN-1850, S06A-PR-6630 SS |  | 30.7d |
| S06A-CC-4710 |  | Block-06 -LT Cable Terminations - Inverter To LT Panel | 7d | 2026-12-11 | 2026-12-17 | S06A-CC-4620 FF+1d, S06A-CC-4570 FF+1d, S06A-CC-4570 SS+2d, S06A-CC-4640 FF+2d, S06A-CC-4640 SS+2d, S06A-PR-6630 SS |  | 30.7d |
| S06A-CC-4540 |  | Block-06 -IDT Area - Gravel Filling | 5d | 2026-12-13 | 2026-12-17 | S06A-CC-4680, S06A-CC-4670 SS+1d, S06A-CC-4660, S06A-CC-4650, S06A-CC-4630, S06A-CC-4620, S06A-CC-4610, S06A-CC-4600, S06A-CC-4510, S06A-CC-4500, S06A-CC-4490, S06A-CC-4480, S06A-CC-4450, S06A-CC-4440 |  | 27.7d |
| S06A-CC-4520 |  | Block-06 -IDT Area - Fencing | 5d | 2026-12-15 | 2026-12-19 | S06A-CC-4540 SS+1d, S06A-CC-4680, S06A-CC-4670, S06A-CC-4660, S06A-CC-4650, S06A-CC-4630, S06A-CC-4620, S06A-CC-4610, S06A-EN-1100, S06A-PR-6470 SS |  | 26.7d |
| S06A-CC-4530 |  | Block-06 -IDT Area - Gate Installation | 1d | 2026-12-20 | 2026-12-20 | S06A-CC-4520, S06A-PR-6470 SS |  | 26.7d |
|  | 3 | **CONSTRUCTION-PV AREA-PRE COMMISSIONING** |  | 2026-10-24 | 2026-12-26 |  |  |  |
| S06A-CC-4740 |  | Block-06 -HT Panel Testing | 1d | 2026-10-24 | 2026-10-24 | S06A-CC-4470, S06A-CC-4610 |  | 74.7d |
| S06A-CC-4750 |  | Block-06 -LT Panel Testing | 1d | 2026-10-27 | 2026-10-27 | S06A-CC-4620 |  | 71.7d |
| S06A-CC-4720 |  | Block-06 -IDT Filtration | 3d | 2026-11-02 | 2026-11-04 | S06A-CC-4680, S06A-CC-4630 |  | 61.7d |
| S06A-CC-4730 |  | Block-06 -IDT Testing | 2d | 2026-11-05 | 2026-11-06 | S06A-CC-4720, S06A-EN-1680 |  | 61.7d |
| S06A-CC-4760 |  | Block-06 -Inspection Offer To Asset Commissioning Team | 1d | 2026-12-18 | 2026-12-18 | S06A-CC-4710, S06A-CC-4700, S06A-CC-4690 |  | 30.7d |
| S06A-CC-4770 |  | Block-06 -Punch Point Identification By Asset Commissioning Team | 3d | 2026-12-19 | 2026-12-21 | S06A-CC-4760 |  | 30.7d |
| S06A-CC-4780 |  | Block-06 -Punch Point Rectification And Pre Charging Sign Off | 5d | 2026-12-22 | 2026-12-26 | S06A-CC-4770 |  | 30.7d |
|  | 4 | **CONSTRUCTION-COMMISSIONING** |  | 2026-12-01 | 2027-01-24 |  |  |  |
| S06A-CC-4790 |  | Block-06 -CEA Application | 1d | 2026-12-01 | 2026-12-02 | S06A-CC-4750, S06A-CC-4740, S06A-CC-4730, S06A-PR-6120 |  | 37d |
| S06A-CC-4800 |  | Block-06 -CEA Inspection | 1d | 2026-12-21 | 2026-12-21 | S06A-CC-4550, S06A-CC-4530, S06A-CC-4790 FS+8d |  | 26.7d |
| S06A-CC-4810 |  | Block-06 -CEA Compliance & Approval | 5d | 2026-12-23 | 2026-12-27 | S06A-CC-4800 FS+1d |  | 26.7d |
| S06A-CC-4820 |  | Block-06 -First Time Charging - Application | 1d | 2027-01-07 | 2027-01-07 | S06A-CC-4350, S06A-CC-4390 SS+3d, S06A-CC-4810 |  | 16.7d |
| S06A-CC-4830 |  | Block-06 -First Time Charging - Approval | 2d | 2027-01-08 | 2027-01-09 | S06A-CC-4820 |  | 16.7d |
| S06A-CC-4840 |  | Block-06 -First Time Charging | 1d | 2027-01-10 | 2027-01-10 | S06A-CC-4780, S06A-CC-4830, S06A-CI-1010, PR-CA-23-020, PR-CA-27-014, PR-CA-27-013, PR-CA-16-020 |  | 16.7d |
| S06A-CC-4850 |  | Block-05 -Tracker Commissioning - SCADA | 8d | 2027-01-10 | 2027-01-17 | S06A-CC-4840 SS |  | 21.7d |
| S06A-CC-4860 |  | Block-06 -Robot Commissioning - SCADA | 12d | 2027-01-10 | 2027-01-21 | S06A-CC-4840 SS, S06A-CC-4420 SS+2d, S06A-CC-4410, S06A-CC-4430 FF, S06A-CC-4430 SS+4d, S06A-CC-4820, S06A-CC-4650 |  | 17.7d |
| S06A-CC-4870 |  | Block-06 -Trial Operation | 1d | 2027-01-17 | 2027-01-17 | S06A-CC-4360, S06A-CC-4390 FF, S06A-CC-4840 SS+7d |  | 16.7d |
| S06A-CC-4880 |  | Block-06 -Trial Run Certificate | 1d | 2027-01-20 | 2027-01-20 | S06A-CC-4870 FS+2d |  | 16.7d |
| S06A-CC-4890 |  | Block-06 -COD | 2d | 2027-01-23 | 2027-01-24 | S06A-CC-4860, S06A-CC-4880 FS+2d, S06A-CC-4850, PR-CA-27-010 |  | 16.7d |
|  | 3 | **BLOCK-07** |  | 2026-05-02 | 2027-01-24 |  |  |  |
|  | 1 | **CONSTRUCTION-PV AREA-DC SIDE** |  | 2026-10-01 | 2027-01-11 |  |  |  |
| S06A-CC-4900 |  | Block-07 -Piling - MMS (Marking, Auguring & Concreting) | 30d | 2026-10-01 | 2026-10-31 | S06A-PR-6740 SS, S06A-EN-2180 SS, S06A-EN-1420 SS, S06A-PR-1090 SS |  | 46.7d |
| S06A-CC-4910 |  | Block-07 -Pile Capping | 30d | 2026-10-09 | 2026-11-07 | S06A-CC-4900 FF+7d, S06A-CC-4900 SS+7d |  | 57.7d |
| S06A-CC-4950 |  | Block-07 -Array Earthing | 25d | 2026-10-09 | 2026-11-02 | S06A-CC-4900 FF+1d, S06A-CC-4900 SS+7d, S06A-EN-2370, S06A-PR-2530 SS |  | 58.7d |
| S06A-CC-4920 |  | Block-07 -Piling - LT Cable Hanger System | 20d | 2026-10-12 | 2026-10-31 | S06A-CC-4900 FF, S06A-CC-4900 SS, S06A-EN-2940, S06A-PR-1410 SS |  | 53.7d |
| S06A-CC-4930 |  | Block-07 -Piling - Inverters | 16d | 2026-10-16 | 2026-10-31 | S06A-CC-4900 FF, S06A-CC-4900 SS, S06A-EN-2180, S06A-PR-1250 SS |  | 63.7d |
| S06A-CC-4960 |  | Block-07 -MMS Erection - Torque Tube/Raftar | 28d | 2026-10-18 | 2026-11-14 | S06A-CC-4950 FF, S06A-CC-4900 FF+14d, S06A-CC-4900 SS+14d, S06A-EN-1490, S06A-EN-1500, S06A-PR-1730 SS |  | 46.7d |
| S06A-CC-4970 |  | Block-07 -MMS Erection - Transmission Shaft/Bracing | 28d | 2026-10-22 | 2026-11-18 | S06A-CC-4960 FF+4d, S06A-CC-4960 SS+4d, S06A-PR-1730 SS |  | 50.7d |
| S06A-CC-4980 |  | Block-07 -MMS Erection - Purlin | 28d | 2026-10-22 | 2026-11-18 | S06A-CC-4910 FF, S06A-CC-4960 FF+4d, S06A-CC-4960 SS+4d, S06A-PR-1730 SS |  | 46.7d |
| S06A-CC-4990 |  | Block-07 -MMS - RFI Completion | 28d | 2026-10-26 | 2026-11-22 | S06A-CC-4970 FF, S06A-CC-4980 FF+4d, S06A-CC-4980 SS+4d |  | 46.7d |
| S06A-CC-4940 |  | Block-07 -Piling - Robotic Docking System | 10d | 2026-10-28 | 2026-11-06 | S06A-CC-4900 FF, S06A-CC-4900 SS, S06A-PR-1570 SS |  | 59.7d |
| S06A-CC-5000 |  | Block-07 -Module Installation | 39d | 2026-11-29 | 2027-01-06 | S06A-CC-4990 FF+8d, S06A-CC-4990 SS+4d, S06A-EN-1630, S06A-EN-2070, S06A-PR-6120 SS |  | 16.7d |
| S06A-CC-5020 |  | Block-07 -DC Cable Laying | 30d | 2026-11-30 | 2026-12-29 | S06A-CC-5000 SS+1d, S06A-CC-4960 SS+17d, S06A-PR-5780 SS |  | 31.7d |
| S06A-CC-5010 |  | Block-07 -Module - RFI Completion | 40d | 2026-12-03 | 2027-01-11 | S06A-CC-5000 FF+4d, S06A-CC-5000 SS+4d |  | 21.7d |
| S06A-CC-5050 |  | Block-07 -Robotic Structure - Docking Station Installation | 10d | 2026-12-06 | 2026-12-15 | S06A-CC-4940, S06A-CC-4960 FF+2d, S06A-CC-4960 SS+2d, S06A-EN-1310, S06A-PR-5620 SS |  | 30.7d |
| S06A-CC-5060 |  | Block-07 -Robotic Structure - Reverse Station Installation | 10d | 2026-12-06 | 2026-12-15 | S06A-CC-4940, S06A-CC-4960 FF+2d, S06A-CC-4960 SS+2d, S06A-PR-5620 SS |  | 42.7d |
| S06A-CC-5080 |  | Block-07 -Robot Installation | 30d | 2026-12-10 | 2027-01-08 | S06A-CC-5050 FF+4d, S06A-CC-5050 SS+4d, S06A-CC-5000 FF+2d, S06A-CC-5000 SS+2d, S06A-EN-1550, S06A-PR-5430 SS |  | 30.7d |
| S06A-CC-5030 |  | Block-07 -Module Interconnection & MC4 Termination | 25d | 2026-12-14 | 2027-01-07 | S06A-CC-5000 FF+1d, S06A-CC-5020 FF+2d, S06A-CC-5020 SS+2d, S06A-PR-5940 SS |  | 24.7d |
| S06A-CC-5040 |  | Block-07 -VOC Testing | 22d | 2026-12-19 | 2027-01-09 | S06A-CC-5000 FF+2d, S06A-CC-5290, S06A-CC-5030 FF+2d, S06A-CC-5030 SS+2d |  | 24.7d |
| S06A-CC-5070 |  | Block-07 -Robotic Structure - Bridges Installation | 20d | 2026-12-20 | 2027-01-08 | S06A-CC-5000 FF+2d, S06A-CC-5000 SS+2d, S06A-PR-5620 SS |  | 36.7d |
|  | 2 | **CONSTRUCTION-PV AREA-AC SIDE** |  | 2026-05-02 | 2026-12-20 |  |  |  |
| S06A-CC-5090 |  | Block-07 -IDT Foundation Up To Rail | 21d | 2026-05-02 A | 2026-10-07 | S06A-EN-1070, S06A-PR-2690 SS, S06A-PR-2850 SS, S06A-PR-3010 SS | 75% | 61.7d |
| S06A-CC-5100 |  | Block-07 -HT & LT Station - Slab | 15d | 2026-05-18 A | 2026-07-30 A | S06A-EN-1170, S06A-EN-1180, S06A-PR-2690 SS, S06A-PR-2850 SS | 100% |  |
| S06A-CC-5130 |  | Block-07 -IDT Foundation - Grade Slab Casting & Dyke Wall | 9d | 2026-08-10 A | 2026-10-06 | S06A-CC-5090 | 40% | 94.7d |
| S06A-CC-5230 |  | Block-07 -HT Cable Laying | 7d | 2026-10-01 | 2026-10-08 | S06A-EN-1940, S06A-PR-4450 SS |  | 98.7d |
| S06A-CC-5240 |  | Block-07 -FO Cable Laying | 7d | 2026-10-01 | 2026-10-08 | S06A-CC-5230 FF, S06A-CC-5230 SS, S06A-EN-1960, S06A-PR-4610 |  | 98.7d |
| S06A-CC-5110 |  | Block-07 -HT & LT Station - Shed Installation | 5d | 2026-10-05 | 2026-10-09 | S06A-CC-5100 FS+3d, S06A-PR-3170 SS |  | 78.7d |
| S06A-CC-5200 |  | Block-07 -HT LT Station - Staircase | 2d | 2026-10-05 | 2026-10-06 | S06A-CC-5100 FS+3d |  | 101.7d |
| S06A-CC-5140 |  | Block-07 -NIFPS Foundation | 10d | 2026-10-08 | 2026-10-17 | S06A-CC-5090, S06A-EN-1090 |  | 61.7d |
| S06A-CC-5150 |  | Block-07 -BOT Foundation | 10d | 2026-10-08 | 2026-10-17 | S06A-CC-5090 |  | 83.7d |

| ID | WBS | Task | Duration | Start | Finish | Predecessors | Complete | Total float |
| --- | --- | --- | --- | --- | --- | --- | --- | --- |
| S06A-CC-5160 |  | Block-07 -Aux Transformer Foundation | 5d | 2026-10-08 | 2026-10-12 | S06A-CC-5090 |  | 82.7d |
| S06A-CC-5280 |  | Block-07 -IDT Erection | 5d | 2026-10-08 | 2026-10-12 | S06A-PR-6790, S06A-CC-5090, S06A-PR-2050 SS |  | 71.7d |
| S06A-CC-5120 |  | Block-07 -HT & LT Station - Sheeting Installation | 2d | 2026-10-10 | 2026-10-11 | S06A-CC-5110, S06A-PR-3170 SS |  | 78.7d |
| S06A-CC-5270 |  | Block-07 -LT Panel Erection | 6d | 2026-10-21 | 2026-10-26 | S06A-PR-6790, S06A-CC-5120 FS+2d, S06A-EN-1740, S06A-EN-1750, S06A-PR-2370 SS |  | 71.7d |
| S06A-CC-5260 |  | Block-07 -HT Panel Erection | 1d | 2026-10-23 | 2026-10-23 | S06A-PR-6790, S06A-CC-5120 SS+2d, S06A-EN-1810, S06A-PR-2210 SS |  | 74.7d |
| S06A-CC-5330 |  | Block-07 -NIFPS - Installation | 10d | 2026-10-23 | 2026-11-01 | S06A-CC-5280, S06A-CC-5140 FS+5d, S06A-EN-1660, S06A-PR-2050 SS |  | 61.7d |
| S06A-CC-5210 |  | Block-07 -Cable Hanger - Structure & Messenger Wire Erection | 5d | 2026-10-31 | 2026-11-04 | S06A-CC-4920 FF+4d, S06A-CC-4920 SS+4d, S06A-EN-2940, S06A-EN-1530, S06A-PR-3330 SS, S06A-PR-3490 SS, S06A-PR-3650 SS, S06A-PR-3810 SS, S06A-PR-3970 SS |  | 53.7d |
| S06A-CC-5290 |  | Block-07 -Inverter Installation | 7d | 2026-11-03 | 2026-11-09 | S06A-CC-4930 FS+2d, S06A-EN-1610, S06A-PR-1890 SS, S06A-PR-4770 SS, S06A-PR-4930, S06A-PR-5090 SS, S06A-PR-5250 SS |  | 63.7d |
| S06A-CC-5220 |  | Block-07 -LT Cable Laying | 20d | 2026-11-04 | 2026-11-23 | S06A-CC-5210 FF+4d, S06A-CC-5210 SS+4d, S06A-EN-2750, S06A-EN-1920, S06A-EN-1970, S06A-PR-4130 SS |  | 53.7d |
| S06A-CC-5250 |  | Block-07 -Control Cable Laying | 5d | 2026-11-04 | 2026-11-09 | S06A-CC-5300 FF, S06A-CC-5300 SS, S06A-EN-2030, S06A-PR-4290 SS |  | 61d |
| S06A-CC-5300 |  | Block-07 -SCADA & SACU Installation | 5d | 2026-11-04 | 2026-11-09 | S06A-CC-5120, S06A-PR-6310 |  | 61d |
| S06A-CC-5310 |  | Block-07 -ACDB Installation | 2d | 2026-12-11 | 2026-12-12 | S06A-CC-5120, S06A-EN-1760, S06A-PR-6630 SS |  | 27.7d |
| S06A-CC-5320 |  | Block-07 -Aux Transformer - Installation | 4d | 2026-12-11 | 2026-12-14 | S06A-CC-5160 FS+3d, S06A-PR-6630 SS |  | 26.7d |
| S06A-CC-5340 |  | Block-07 -HT Cable Terminations - IDT Side | 2d | 2026-12-11 | 2026-12-12 | S06A-CC-5260, S06A-CC-5240 FF+2d, S06A-CC-5240 SS+2d, S06A-CC-5230 FF+2d, S06A-CC-5230 SS+2d, S06A-CC-5280, S06A-PR-6630 SS |  | 35.7d |
| S06A-CC-5350 |  | Block-07 -LT Cable Terminations - LT Panel To IDT | 7d | 2026-12-11 | 2026-12-17 | S06A-CC-5270 FF+1d, S06A-CC-5220 FF+1d, S06A-CC-5220 SS+2d, S06A-CC-5280, S06A-EN-1850, S06A-PR-6630 SS |  | 30.7d |
| S06A-CC-5360 |  | Block-07 -LT Cable Terminations - Inverter To LT Panel | 7d | 2026-12-11 | 2026-12-17 | S06A-CC-5270 FF+1d, S06A-CC-5220 FF+1d, S06A-CC-5220 SS+2d, S06A-CC-5290 FF+2d, S06A-CC-5290 SS+2d, S06A-PR-6630 SS |  | 30.7d |
| S06A-CC-5190 |  | Block-07 -IDT Area - Gravel Filling | 5d | 2026-12-13 | 2026-12-17 | S06A-CC-5330, S06A-CC-5320 SS+1d, S06A-CC-5310, S06A-CC-5300, S06A-CC-5280, S06A-CC-5270, S06A-CC-5260, S06A-CC-5250, S06A-CC-5160, S06A-CC-5150, S06A-CC-5140, S06A-CC-5130, S06A-CC-5100, S06A-CC-5090 |  | 27.7d |
| S06A-CC-5170 |  | Block-07 -IDT Area - Fencing | 5d | 2026-12-15 | 2026-12-19 | S06A-CC-5190 SS+1d, S06A-CC-5330, S06A-CC-5320, S06A-CC-5310, S06A-CC-5300, S06A-CC-5280, S06A-CC-5270, S06A-CC-5260, S06A-EN-1100, S06A-PR-6470 SS |  | 26.7d |
| S06A-CC-5180 |  | Block-07 -IDT Area - Gate Installation | 1d | 2026-12-20 | 2026-12-20 | S06A-CC-5170, S06A-PR-6470 SS |  | 26.7d |
|  | 3 | **CONSTRUCTION-PV AREA-PRE COMMISSIONING** |  | 2026-10-24 | 2026-12-26 |  |  |  |
| S06A-CC-5390 |  | Block-07 -HT Panel Testing | 1d | 2026-10-24 | 2026-10-24 | S06A-CC-5120, S06A-CC-5260 |  | 74.7d |
| S06A-CC-5400 |  | Block-07 -LT Panel Testing | 1d | 2026-10-27 | 2026-10-27 | S06A-CC-5270 |  | 71.7d |
| S06A-CC-5370 |  | Block-07 -IDT Filtration | 3d | 2026-11-02 | 2026-11-04 | S06A-CC-5330, S06A-CC-5280 |  | 61.7d |
| S06A-CC-5380 |  | Block-07 -IDT Testing | 2d | 2026-11-05 | 2026-11-06 | S06A-CC-5370, S06A-EN-1680 |  | 61.7d |
| S06A-CC-5410 |  | Block-07 -Inspection Offer To Asset Commissioning Team | 1d | 2026-12-18 | 2026-12-18 | S06A-CC-5360, S06A-CC-5350, S06A-CC-5340 |  | 30.7d |
| S06A-CC-5420 |  | Block-07 -Punch Point Identification By Asset Commissioning Team | 3d | 2026-12-19 | 2026-12-21 | S06A-CC-5410 |  | 30.7d |
| S06A-CC-5430 |  | Block-07 -Punch Point Rectification And Pre Charging Sign Off | 5d | 2026-12-22 | 2026-12-26 | S06A-CC-5420 |  | 30.7d |
|  | 4 | **CONSTRUCTION-COMMISSIONING** |  | 2026-12-01 | 2027-01-24 |  |  |  |
| S06A-CC-5440 |  | Block-07 -CEA Application | 1d | 2026-12-01 | 2026-12-02 | S06A-CC-5400, S06A-CC-5390, S06A-CC-5380, S06A-PR-6120 |  | 37d |
| S06A-CC-5450 |  | Block-07 -CEA Inspection | 1d | 2026-12-21 | 2026-12-21 | S06A-CC-5200, S06A-CC-5180, S06A-CC-5440 FS+8d |  | 26.7d |
| S06A-CC-5460 |  | Block-07 -CEA Compliance & Approval | 5d | 2026-12-23 | 2026-12-27 | S06A-CC-5450 FS+1d |  | 26.7d |
| S06A-CC-5470 |  | Block-07 -First Time Charging - Application | 1d | 2027-01-07 | 2027-01-07 | S06A-CC-5000, S06A-CC-5040 SS+3d, S06A-CC-5460 |  | 16.7d |
| S06A-CC-5480 |  | Block-07 -First Time Charging - Approval | 2d | 2027-01-08 | 2027-01-09 | S06A-CC-5470 |  | 16.7d |
| S06A-CC-5490 |  | Block-07 -First Time Charging | 1d | 2027-01-10 | 2027-01-10 | S06A-CC-5430, S06A-CC-5480, S06A-CI-1010, PR-CA-23-020, PR-CA-27-014, PR-CA-27-013, PR-CA-16-020 |  | 16.7d |
| S06A-CC-5500 |  | Block-07 -Tracker Commissioning - SCADA | 8d | 2027-01-10 | 2027-01-17 | S06A-CC-5490 SS |  | 21.7d |
| S06A-CC-5510 |  | Block-07 -Robot Commissioning - SCADA | 12d | 2027-01-10 | 2027-01-21 | S06A-CC-5490 SS, S06A-CC-5070 SS+2d, S06A-CC-5060, S06A-CC-5080 FF, S06A-CC-5080 SS+4d, S06A-CC-5470, S06A-CC-5300 |  | 17.7d |
| S06A-CC-5520 |  | Block-07 -Trial Operation | 1d | 2027-01-17 | 2027-01-17 | S06A-CC-5010, S06A-CC-5040 FF, S06A-CC-5490 SS+7d |  | 16.7d |
| S06A-CC-5530 |  | Block-07 -Trial Run Certificate | 1d | 2027-01-20 | 2027-01-20 | S06A-CC-5520 FS+2d |  | 16.7d |
| S06A-CC-5540 |  | Block-07 -COD | 2d | 2027-01-23 | 2027-01-24 | S06A-CC-5510, S06A-CC-5530 FS+2d, S06A-CC-5500, PR-CA-27-010 |  | 16.7d |
|  | 4 | **BLOCK-08** |  | 2026-05-02 | 2027-01-24 |  |  |  |
|  | 1 | **CONSTRUCTION-PV AREA-DC SIDE** |  | 2026-10-01 | 2027-01-11 |  |  |  |
| S06A-CC-5550 |  | Block-08 -Piling - MMS (Marking, Auguring & Concreting) | 30d | 2026-10-01 | 2026-10-31 | S06A-PR-6740 SS, S06A-EN-2190 SS, S06A-EN-1420 SS, S06A-PR-1090 SS |  | 46.7d |
| S06A-CC-5560 |  | Block-08 -Pile Capping | 30d | 2026-10-09 | 2026-11-07 | S06A-CC-5550 FF+7d, S06A-CC-5550 SS+7d |  | 57.7d |
| S06A-CC-5600 |  | Block-08 -Array Earthing | 25d | 2026-10-09 | 2026-11-02 | S06A-CC-5550 FF+1d, S06A-CC-5550 SS+7d, S06A-EN-2380, S06A-PR-2530 SS |  | 58.7d |
| S06A-CC-5570 |  | Block-08 -Piling - LT Cable Hanger System | 20d | 2026-10-12 | 2026-10-31 | S06A-CC-5550 FF, S06A-CC-5550 SS, S06A-EN-2950, S06A-PR-1410 SS |  | 53.7d |
| S06A-CC-5580 |  | Block-08 -Piling - Inverters | 16d | 2026-10-16 | 2026-10-31 | S06A-CC-5550 FF, S06A-CC-5550 SS, S06A-EN-2190, S06A-PR-1250 SS |  | 63.7d |
| S06A-CC-5610 |  | Block-08 -MMS Erection - Torque Tube/Raftar | 28d | 2026-10-18 | 2026-11-14 | S06A-CC-5600 FF, S06A-CC-5550 FF+14d, S06A-CC-5550 SS+14d, S06A-EN-1490, S06A-EN-1500, S06A-PR-1730 SS |  | 46.7d |
| S06A-CC-5620 |  | Block-08 -MMS Erection - Transmission Shaft/Bracing | 28d | 2026-10-22 | 2026-11-18 | S06A-CC-5610 FF+4d, S06A-CC-5610 SS+4d, S06A-PR-1730 SS |  | 50.7d |
| S06A-CC-5630 |  | Block-08 -MMS Erection - Purlin | 28d | 2026-10-22 | 2026-11-18 | S06A-CC-5560 FF, S06A-CC-5610 FF+4d, S06A-CC-5610 SS+4d, S06A-PR-1730 SS |  | 46.7d |
| S06A-CC-5640 |  | Block-08 -MMS - RFI Completion | 28d | 2026-10-26 | 2026-11-22 | S06A-CC-5620 FF, S06A-CC-5630 FF+4d, S06A-CC-5630 SS+4d |  | 46.7d |
| S06A-CC-5590 |  | Block-08 -Piling - Robotic Docking System | 10d | 2026-10-28 | 2026-11-06 | S06A-CC-5550 FF, S06A-CC-5550 SS, S06A-PR-1570 SS |  | 59.7d |
| S06A-CC-5650 |  | Block-08 -Module Installation | 39d | 2026-11-29 | 2027-01-06 | S06A-CC-5640 FF+8d, S06A-CC-5640 SS+4d, S06A-EN-1630, S06A-EN-2070, S06A-PR-6120 SS |  | 16.7d |
| S06A-CC-5670 |  | Block-08 -DC Cable Laying | 30d | 2026-11-30 | 2026-12-29 | S06A-CC-5650 SS+1d, S06A-CC-5610 SS+17d, S06A-PR-5780 SS |  | 31.7d |
| S06A-CC-5660 |  | Block-08 -Module - RFI Completion | 40d | 2026-12-03 | 2027-01-11 | S06A-CC-5650 FF+4d, S06A-CC-5650 SS+4d |  | 21.7d |
| S06A-CC-5700 |  | Block-08 -Robotic Structure - Docking Station Installation | 10d | 2026-12-06 | 2026-12-15 | S06A-CC-5590, S06A-CC-5610 FF+2d, S06A-CC-5610 SS+2d, S06A-EN-1310, S06A-PR-5620 SS |  | 30.7d |
| S06A-CC-5710 |  | Block-08 -Robotic Structure - Reverse Station Installation | 10d | 2026-12-06 | 2026-12-15 | S06A-CC-5590, S06A-CC-5610 FF+2d, S06A-CC-5610 SS+2d, S06A-PR-5620 SS |  | 42.7d |
| S06A-CC-5730 |  | Block-08 -Robot Installation | 30d | 2026-12-10 | 2027-01-08 | S06A-CC-5700 FF+4d, S06A-CC-5700 SS+4d, S06A-CC-5650 FF+2d, S06A-CC-5650 SS+2d, S06A-EN-1550, S06A-PR-5430 SS |  | 30.7d |
| S06A-CC-5680 |  | Block-08 -Module Interconnection & MC4 Termination | 25d | 2026-12-14 | 2027-01-07 | S06A-CC-5650 FF+1d, S06A-CC-5670 FF+2d, S06A-CC-5670 SS+2d, S06A-PR-5940 SS |  | 24.7d |
| S06A-CC-5690 |  | Block-08 -VOC Testing | 22d | 2026-12-19 | 2027-01-09 | S06A-CC-5650 FF+2d, S06A-CC-5940, S06A-CC-5680 FF+2d, S06A-CC-5680 SS+2d |  | 24.7d |
| S06A-CC-5720 |  | Block-08 -Robotic Structure - Bridges Installation | 20d | 2026-12-20 | 2027-01-08 | S06A-CC-5650 FF+2d, S06A-CC-5650 SS+2d, S06A-PR-5620 SS |  | 36.7d |
|  | 2 | **CONSTRUCTION-PV AREA-AC SIDE** |  | 2026-05-02 | 2026-12-20 |  |  |  |
| S06A-CC-5740 |  | Block-08 -IDT Foundation Up To Rail | 21d | 2026-05-02 A | 2026-10-07 | S06A-EN-1070, S06A-PR-2690 SS, S06A-PR-2850 SS, S06A-PR-3010 SS | 75% | 61.7d |
| S06A-CC-5750 |  | Block-08 -HT & LT Station - Slab | 15d | 2026-05-25 A | 2026-10-07 | S06A-EN-1170, S06A-EN-1180, S06A-PR-2690 SS, S06A-PR-2850 SS | 62% | 72.7d |
| S06A-CC-5780 |  | Block-08 -IDT Foundation - Grade Slab Casting & Dyke Wall | 9d | 2026-08-14 A | 2026-10-06 | S06A-CC-5740 | 40% | 94.7d |
| S06A-CC-5880 |  | Block-08 -HT Cable Laying | 7d | 2026-10-01 | 2026-10-08 | S06A-EN-1940, S06A-PR-4450 SS |  | 98.7d |
| S06A-CC-5890 |  | Block-08 -FO Cable Laying | 7d | 2026-10-01 | 2026-10-08 | S06A-CC-5880 FF, S06A-CC-5880 SS, S06A-EN-1960, S06A-PR-4610 |  | 98.7d |
| S06A-CC-5790 |  | Block-08 -NIFPS Foundation | 10d | 2026-10-08 | 2026-10-17 | S06A-CC-5740, S06A-EN-1090 |  | 61.7d |
| S06A-CC-5800 |  | Block-08 -BOT Foundation | 10d | 2026-10-08 | 2026-10-17 | S06A-CC-5740 |  | 83.7d |
| S06A-CC-5810 |  | Block-08 -Aux Transformer Foundation | 5d | 2026-10-08 | 2026-10-12 | S06A-CC-5740 |  | 82.7d |
| S06A-CC-5930 |  | Block-08 -IDT Erection | 5d | 2026-10-08 | 2026-10-12 | S06A-PR-6790, S06A-CC-5740, S06A-PR-2050 SS |  | 71.7d |

| ID | WBS | Task | Duration | Start | Finish | Predecessors | Complete | Total float |
| --- | --- | --- | --- | --- | --- | --- | --- | --- |
| S06A-CC-5760 |  | Block-08 -HT & LT Station - Shed Installation | 5d | 2026-10-11 | 2026-10-15 | S06A-CC-5750 FS+3d, S06A-PR-3170 SS |  | 72.7d |
| S06A-CC-5850 |  | Block-08 -HT LT Station - Staircase | 2d | 2026-10-11 | 2026-10-12 | S06A-CC-5750 FS+3d |  | 95.7d |
| S06A-CC-5770 |  | Block-08 -HT & LT Station - Sheeting Installation | 2d | 2026-10-16 | 2026-10-17 | S06A-CC-5760, S06A-PR-3170 SS |  | 72.7d |
| S06A-CC-5920 |  | Block-08 -LT Panel Erection | 6d | 2026-10-21 | 2026-10-26 | S06A-PR-6790, S06A-CC-5770 FS+2d, S06A-EN-1740, S06A-EN-1750, S06A-PR-2370 SS |  | 71.7d |
| S06A-CC-5910 |  | Block-08 -HT Panel Erection | 1d | 2026-10-23 | 2026-10-23 | S06A-PR-6790, S06A-CC-5770 SS+2d, S06A-EN-1810, S06A-PR-2210 SS |  | 74.7d |
| S06A-CC-5980 |  | Block-08 -NIFPS - Installation | 10d | 2026-10-23 | 2026-11-01 | S06A-CC-5930, S06A-CC-5790 FS+5d, S06A-EN-1660, S06A-PR-2050 SS |  | 61.7d |
| S06A-CC-5860 |  | Block-08 -Cable Hanger - Structure & Messenger Wire Erection | 5d | 2026-10-31 | 2026-11-04 | S06A-CC-5570 FF+4d, S06A-CC-5570 SS+4d, S06A-EN-2950, S06A-EN-1530, S06A-PR-3330 SS, S06A-PR-3490 SS, S06A-PR-3650 SS, S06A-PR-3810 SS, S06A-PR-3970 SS |  | 53.7d |
| S06A-CC-5940 |  | Block-08 -Inverter Installation | 7d | 2026-11-03 | 2026-11-09 | S06A-CC-5580 FS+2d, S06A-EN-1610, S06A-PR-1890 SS, S06A-PR-4770 SS, S06A-PR-4930, S06A-PR-5090 SS, S06A-PR-5250 SS |  | 63.7d |
| S06A-CC-5870 |  | Block-08 -LT Cable Laying | 20d | 2026-11-04 | 2026-11-23 | S06A-CC-5860 FF+4d, S06A-CC-5860 SS+4d, S06A-EN-2760, S06A-EN-1920, S06A-EN-1970, S06A-PR-4130 SS |  | 53.7d |
| S06A-CC-5900 |  | Block-08 -Control Cable Laying | 5d | 2026-11-04 | 2026-11-09 | S06A-CC-5950 FF, S06A-CC-5950 SS, S06A-EN-2030, S06A-PR-4290 SS |  | 61d |
| S06A-CC-5950 |  | Block-08 -SCADA & SACU Installation | 5d | 2026-11-04 | 2026-11-09 | S06A-CC-5770, S06A-PR-6310 |  | 61d |
| S06A-CC-5960 |  | Block-08 -ACDB Installation | 2d | 2026-12-11 | 2026-12-12 | S06A-CC-5770, S06A-EN-1760, S06A-PR-6630 SS |  | 27.7d |
| S06A-CC-5970 |  | Block-08 -Aux Transformer - Installation | 4d | 2026-12-11 | 2026-12-14 | S06A-CC-5810 FS+3d, S06A-PR-6630 SS |  | 26.7d |
| S06A-CC-5990 |  | Block-08 -HT Cable Terminations - IDT Side | 2d | 2026-12-11 | 2026-12-12 | S06A-CC-5910, S06A-CC-5890 FF+2d, S06A-CC-5890 SS+2d, S06A-CC-5880 FF+2d, S06A-CC-5880 SS+2d, S06A-CC-5930, S06A-PR-6630 SS |  | 35.7d |
| S06A-CC-6000 |  | Block-08 -LT Cable Terminations - LT Panel To IDT | 7d | 2026-12-11 | 2026-12-17 | S06A-CC-5920 FF+1d, S06A-CC-5870 FF+1d, S06A-CC-5870 SS+2d, S06A-CC-5930, S06A-EN-1850, S06A-PR-6630 SS |  | 30.7d |
| S06A-CC-6010 |  | Block-08 -LT Cable Terminations - Inverter To LT Panel | 7d | 2026-12-11 | 2026-12-17 | S06A-CC-5920 FF+1d, S06A-CC-5870 FF+1d, S06A-CC-5870 SS+2d, S06A-CC-5940 FF+2d, S06A-CC-5940 SS+2d, S06A-PR-6630 SS |  | 30.7d |
| S06A-CC-5840 |  | Block-08 -IDT Area - Gravel Filling | 5d | 2026-12-13 | 2026-12-17 | S06A-CC-5980, S06A-CC-5970 SS+1d, S06A-CC-5960, S06A-CC-5950, S06A-CC-5930, S06A-CC-5920, S06A-CC-5910, S06A-CC-5900, S06A-CC-5810, S06A-CC-5800, S06A-CC-5790, S06A-CC-5780, S06A-CC-5750, S06A-CC-5740 |  | 27.7d |
| S06A-CC-5820 |  | Block-08 -IDT Area - Fencing | 5d | 2026-12-15 | 2026-12-19 | S06A-CC-5840 SS+1d, S06A-CC-5980, S06A-CC-5970, S06A-CC-5960, S06A-CC-5950, S06A-CC-5930, S06A-CC-5920, S06A-CC-5910, S06A-EN-1100, S06A-PR-6470 SS |  | 26.7d |
| S06A-CC-5830 |  | Block-08 -IDT Area - Gate Installation | 1d | 2026-12-20 | 2026-12-20 | S06A-CC-5820, S06A-PR-6470 SS |  | 26.7d |
|  | 3 | **CONSTRUCTION-PV AREA-PRE COMMISSIONING** |  | 2026-10-24 | 2026-12-26 |  |  |  |
| S06A-CC-6040 |  | Block-08 -HT Panel Testing | 1d | 2026-10-24 | 2026-10-24 | S06A-CC-5770, S06A-CC-5910 |  | 74.7d |
| S06A-CC-6050 |  | Block-08 -LT Panel Testing | 1d | 2026-10-27 | 2026-10-27 | S06A-CC-5920 |  | 71.7d |
| S06A-CC-6020 |  | Block-08 -IDT Filtration | 3d | 2026-11-02 | 2026-11-04 | S06A-CC-5980, S06A-CC-5930 |  | 61.7d |
| S06A-CC-6030 |  | Block-08 -IDT Testing | 2d | 2026-11-05 | 2026-11-06 | S06A-CC-6020, S06A-EN-1680 |  | 61.7d |
| S06A-CC-6060 |  | Block-08 -Inspection Offer To Asset Commissioning Team | 1d | 2026-12-18 | 2026-12-18 | S06A-CC-6010, S06A-CC-6000, S06A-CC-5990 |  | 30.7d |
| S06A-CC-6070 |  | Block-08 -Punch Point Identification By Asset Commissioning Team | 3d | 2026-12-19 | 2026-12-21 | S06A-CC-6060 |  | 30.7d |
| S06A-CC-6080 |  | Block-08 -Punch Point Rectification And Pre Charging Sign Off | 5d | 2026-12-22 | 2026-12-26 | S06A-CC-6070 |  | 30.7d |
|  | 4 | **CONSTRUCTION-COMMISSIONING** |  | 2026-12-01 | 2027-01-24 |  |  |  |
| S06A-CC-6090 |  | Block-08 -CEA Application | 1d | 2026-12-01 | 2026-12-02 | S06A-CC-6050, S06A-CC-6040, S06A-CC-6030, S06A-PR-6120 |  | 37d |
| S06A-CC-6100 |  | Block-08 -CEA Inspection | 1d | 2026-12-21 | 2026-12-21 | S06A-CC-5850, S06A-CC-5830, S06A-CC-6090 FS+8d |  | 26.7d |
| S06A-CC-6110 |  | Block-08 -CEA Compliance & Approval | 5d | 2026-12-23 | 2026-12-27 | S06A-CC-6100 FS+1d |  | 26.7d |
| S06A-CC-6120 |  | Block-08 -First Time Charging - Application | 1d | 2027-01-07 | 2027-01-07 | S06A-CC-5650, S06A-CC-5690 SS+3d, S06A-CC-6110 |  | 16.7d |
| S06A-CC-6130 |  | Block-08 -First Time Charging - Approval | 2d | 2027-01-08 | 2027-01-09 | S06A-CC-6120 |  | 16.7d |
| S06A-CC-6140 |  | Block-08 -First Time Charging | 1d | 2027-01-10 | 2027-01-10 | S06A-CC-6080, S06A-CC-6130, S06A-CI-1010, PR-CA-23-020, PR-CA-27-014, PR-CA-27-013, PR-CA-16-020 |  | 16.7d |
| S06A-CC-6150 |  | Block-08 -Tracker Commissioning - SCADA | 8d | 2027-01-10 | 2027-01-17 | S06A-CC-6140 SS |  | 21.7d |
| S06A-CC-6160 |  | Block-08 -Robot Commissioning - SCADA | 12d | 2027-01-10 | 2027-01-21 | S06A-CC-6140 SS, S06A-CC-5720 SS+2d, S06A-CC-5710, S06A-CC-5730 FF, S06A-CC-5730 SS+4d, S06A-CC-6120, S06A-CC-5950 |  | 17.7d |
| S06A-CC-6170 |  | Block-08 -Trial Operation | 1d | 2027-01-17 | 2027-01-17 | S06A-CC-5660, S06A-CC-5690 FF, S06A-CC-6140 SS+7d |  | 16.7d |
| S06A-CC-6180 |  | Block-08 -Trial Run Certificate | 1d | 2027-01-20 | 2027-01-20 | S06A-CC-6170 FS+2d |  | 16.7d |
| S06A-CC-6190 |  | Block-08 -COD | 2d | 2027-01-23 | 2027-01-24 | S06A-CC-6160, S06A-CC-6180 FS+2d, S06A-CC-6150, PR-CA-27-010 |  | 16.7d |
|  | 3 | **PHASE-3 (50MW)** |  | 2026-04-30 | 2027-01-30 |  |  |  |
|  | 1 | **BLOCK-09** |  | 2026-04-30 | 2027-01-30 |  |  |  |
|  | 1 | **CONSTRUCTION-PV AREA-DC SIDE** |  | 2026-08-20 | 2027-01-15 |  |  |  |
| S06A-CC-6200 |  | Block-09 -Piling - MMS (Marking, Auguring & Concreting) | 30d | 2026-08-20 A | 2026-10-29 | S06A-PR-6740, S06A-EN-2200, S06A-EN-1420, S06A-PR-1110 SS | 9% | 47.7d |
| S06A-CC-6210 |  | Block-09 -Pile Capping | 30d | 2026-10-09 | 2026-11-07 | S06A-CC-6200 FF+7d, S06A-CC-6200 SS+7d |  | 56.7d |
| S06A-CC-6250 |  | Block-09 -Array Earthing | 25d | 2026-10-09 | 2026-11-02 | S06A-CC-6200 FF+1d, S06A-CC-6200 SS+7d, S06A-EN-2390, S06A-PR-2550 SS |  | 57.7d |
| S06A-CC-6220 |  | Block-09 -Piling - LT Cable Hanger System | 20d | 2026-10-10 | 2026-10-29 | S06A-CC-6200 FF, S06A-CC-6200 SS, S06A-EN-2960, S06A-PR-1430 SS |  | 56.7d |
| S06A-CC-6230 |  | Block-09 -Piling - Inverters | 16d | 2026-10-14 | 2026-10-29 | S06A-CC-6200 FF, S06A-CC-6200 SS, S06A-EN-2200, S06A-PR-1270 SS |  | 65.7d |
| S06A-CC-6260 |  | Block-09 -MMS Erection - Torque Tube/Raftar | 28d | 2026-10-16 | 2026-11-12 | S06A-CC-6250 FF, S06A-CC-6200 FF+14d, S06A-CC-6200 SS+14d, S06A-EN-1490, S06A-EN-1500, S06A-PR-1750 SS |  | 47.7d |
| S06A-CC-6270 |  | Block-09 -MMS Erection - Transmission Shaft/Bracing | 28d | 2026-10-20 | 2026-11-16 | S06A-CC-6260 FF+4d, S06A-CC-6260 SS+4d |  | 51.7d |
| S06A-CC-6280 |  | Block-09 -MMS Erection - Purlin | 28d | 2026-10-20 | 2026-11-16 | S06A-CC-6210 FF, S06A-CC-6260 FF+4d, S06A-CC-6260 SS+4d, S06A-PR-1750 SS |  | 47.7d |
| S06A-CC-6290 |  | Block-09 -MMS - RFI Completion | 28d | 2026-10-24 | 2026-11-20 | S06A-CC-6270 FF, S06A-CC-6280 FF+4d, S06A-CC-6280 SS+4d |  | 47.7d |
| S06A-CC-6240 |  | Block-09 -Piling - Robotic Docking System | 10d | 2026-11-02 | 2026-11-11 | S06A-CC-6200 FF, S06A-CC-6200 SS, S06A-PR-1590 SS |  | 53.7d |
| S06A-CC-6300 |  | Block-09 -Module Installation | 40d | 2026-12-03 | 2027-01-11 | S06A-CC-6290 FF+12d, S06A-CC-6290 SS+4d, S06A-EN-1630, S06A-EN-2070, S06A-PR-6150 SS |  | 11.7d |
| S06A-CC-6320 |  | Block-09 -DC Cable Laying | 30d | 2026-12-04 | 2027-01-02 | S06A-CC-6260 SS+16d, S06A-CC-6300 SS+1d, S06A-PR-5800 SS |  | 32.7d |
| S06A-CC-6310 |  | Block-09 -Module - RFI Completion | 40d | 2026-12-07 | 2027-01-15 | S06A-CC-6300 FF+4d, S06A-CC-6300 SS+4d |  | 17.7d |
| S06A-CC-6350 |  | Block-09 -Robotic Structure - Docking Station Installation | 10d | 2026-12-11 | 2026-12-20 | S06A-CC-6240, S06A-CC-6260 FF+2d, S06A-CC-6260 SS+2d, S06A-EN-1310, S06A-PR-5640 SS |  | 24.7d |
| S06A-CC-6360 |  | Block-09 -Robotic Structure - Reverse Station Installation | 10d | 2026-12-11 | 2026-12-20 | S06A-CC-6240, S06A-CC-6260 FF+2d, S06A-CC-6260 SS+2d, S06A-PR-5640 SS |  | 37.7d |
| S06A-CC-6380 |  | Block-09 -Robot Installation | 30d | 2026-12-15 | 2027-01-13 | S06A-CC-6350 FF+4d, S06A-CC-6350 SS+4d, S06A-CC-6300 FF+2d, S06A-CC-6300 SS+2d, S06A-EN-1550, S06A-PR-5460 SS |  | 24.7d |
| S06A-CC-6330 |  | Block-09 -Module Interconnection & MC4 Termination | 25d | 2026-12-19 | 2027-01-12 | S06A-CC-6300 FF+1d, S06A-CC-6320 FF+2d, S06A-CC-6320 SS+2d, S06A-PR-5960 SS |  | 24.7d |
| S06A-CC-6340 |  | Block-09 -VOC Testing | 22d | 2026-12-23 | 2027-01-13 | S06A-CC-6300 FF+2d, S06A-CC-6590, S06A-CC-6330 SS |  | 20.7d |
| S06A-CC-6370 |  | Block-09 -Robotic Structure - Bridges Installation | 20d | 2026-12-24 | 2027-01-12 | S06A-CC-6300 FF+1d, S06A-CC-6300 SS+2d, S06A-PR-5640 SS |  | 32.7d |
|  | 2 | **CONSTRUCTION-PV AREA-AC SIDE** |  | 2026-04-30 | 2026-12-25 |  |  |  |
| S06A-CC-6390 |  | Block-09 -IDT Foundation Up To Rail | 21d | 2026-04-30 A | 2026-10-07 | S06A-EN-1070 SS, S06A-PR-2710 SS, S06A-PR-3030 SS | 75% | 60.7d |
| S06A-CC-6400 |  | Block-09 -HT & LT Station - Slab | 12d | 2026-05-18 A | 2026-07-13 A | S06A-EN-1170, S06A-EN-1180 | 100% |  |
| S06A-CC-6430 |  | Block-09 -IDT Foundation - Grade Slab Casting & Dyke Wall | 9d | 2026-08-11 A | 2026-10-10 | S06A-CC-6390 FS+1d | 40% | 90.7d |
| S06A-CC-6530 |  | Block-09 -HT Cable Laying | 7d | 2026-10-01 | 2026-10-08 | S06A-EN-1940, S06A-PR-4470 SS |  | 98.7d |
| S06A-CC-6540 |  | Block-09 -FO Cable Laying | 7d | 2026-10-01 | 2026-10-08 | S06A-CC-6530 FF, S06A-CC-6530 SS, S06A-EN-1960, S06A-PR-4630 |  | 98.7d |
| S06A-CC-6410 |  | Block-09 -HT & LT Station - Shed Installation | 5d | 2026-10-05 | 2026-10-09 | S06A-CC-6400 FS+3d, S06A-PR-3190 SS |  | 78.7d |
| S06A-CC-6500 |  | Block-09 -HT LT Station - Staircase | 1d | 2026-10-05 | 2026-10-05 | S06A-CC-6400 FS+3d |  | 102.7d |
| S06A-CC-6440 |  | Block-09 -NIFPS Foundation | 9d | 2026-10-09 | 2026-10-17 | S06A-CC-6390 FS+1d, S06A-EN-1090 FS+1d |  | 60.7d |

| ID | WBS | Task | Duration | Start | Finish | Predecessors | Complete | Total float |
| --- | --- | --- | --- | --- | --- | --- | --- | --- |
| S06A-CC-6450 |  | Block-09 -BOT Foundation | 9d | 2026-10-09 | 2026-10-17 | S06A-CC-6390 FS+1d |  | 83.7d |
| S06A-CC-6460 |  | Block-09 -Aux Transformer Foundation | 5d | 2026-10-09 | 2026-10-13 | S06A-CC-6390 FS+1d |  | 81.7d |
| S06A-CC-6420 |  | Block-09 -HT & LT Station - Sheeting Installation | 2d | 2026-10-10 | 2026-10-11 | S06A-CC-6410, S06A-PR-3190 SS |  | 78.7d |
| S06A-CC-6570 |  | Block-09 -LT Panel Erection | 6d | 2026-10-26 | 2026-10-31 | S06A-PR-6790, S06A-CC-6420 FS+2d, S06A-EN-1740, S06A-EN-1750, S06A-PR-2390 SS |  | 66.7d |
| S06A-CC-6580 |  | Block-09 -IDT Erection | 5d | 2026-10-26 | 2026-10-30 | S06A-PR-6790, S06A-CC-6390, S06A-PR-2070 SS |  | 63.7d |
| S06A-CC-6630 |  | Block-09 -NIFPS - Installation | 10d | 2026-10-26 | 2026-11-04 | S06A-CC-6440 FS+6d, S06A-EN-1660, S06A-PR-2070 SS |  | 58.7d |
| S06A-CC-6560 |  | Block-09 -HT Panel Erection | 1d | 2026-10-28 | 2026-10-28 | S06A-PR-6790, S06A-CC-6420 SS+2d, S06A-EN-1810, S06A-PR-2230 SS |  | 69.7d |
| S06A-CC-6510 |  | Block-09 -Cable Hanger - Structure & Messenger Wire Erection | 5d | 2026-10-29 | 2026-11-02 | S06A-CC-6220 FF+4d, S06A-CC-6220 SS+4d, S06A-EN-2960, S06A-EN-1530, S06A-PR-3350 SS, S06A-PR-3510 SS, S06A-PR-3670 SS, S06A-PR-3830 SS, S06A-PR-3990 SS |  | 56.7d |
| S06A-CC-6520 |  | Block-09 -LT Cable Laying | 20d | 2026-10-31 | 2026-11-19 | S06A-CC-6510 FF+2d, S06A-CC-6510 SS+2d, S06A-EN-2770, S06A-EN-1920, S06A-EN-1970, S06A-PR-4150 SS |  | 56.7d |
| S06A-CC-6590 |  | Block-09 -Inverter Installation | 7d | 2026-11-01 | 2026-11-07 | S06A-CC-6230 FS+2d, S06A-EN-1610, S06A-PR-1910 SS, S06A-PR-4790 SS, S06A-PR-4950, S06A-PR-5110 SS, S06A-PR-5270 SS |  | 65.7d |
| S06A-CC-6550 |  | Block-09 -Control Cable Laying | 5d | 2026-11-09 | 2026-11-14 | S06A-CC-6600 FF, S06A-CC-6600 SS, S06A-EN-2030, S06A-PR-4310 SS |  | 56d |
| S06A-CC-6600 |  | Block-09 -SCADA & SACU Installation | 5d | 2026-11-09 | 2026-11-14 | S06A-CC-6420, S06A-PR-6330 |  | 56d |
| S06A-CC-6610 |  | Block-09 -ACDB Installation | 2d | 2026-12-16 | 2026-12-17 | S06A-CC-6420, S06A-EN-1760, S06A-PR-6650 SS |  | 23.7d |
| S06A-CC-6620 |  | Block-09 -Aux Transformer - Installation | 4d | 2026-12-16 | 2026-12-19 | S06A-CC-6460 FS+3d, S06A-PR-6650 SS |  | 21.7d |
| S06A-CC-6640 |  | Block-09 -HT Cable Terminations - IDT Side | 2d | 2026-12-16 | 2026-12-17 | S06A-CC-6560, S06A-CC-6540 FF+2d, S06A-CC-6540 SS+2d, S06A-CC-6530 FF+2d, S06A-CC-6530 SS+2d, S06A-CC-6580, S06A-PR-6650 SS |  | 30.7d |
| S06A-CC-6650 |  | Block-09 -LT Cable Terminations - LT Panel to IDT | 7d | 2026-12-16 | 2026-12-22 | S06A-CC-6570 FF+1d, S06A-CC-6520 FF+2d, S06A-CC-6520 SS+2d, S06A-CC-6580, S06A-EN-1850, S06A-PR-6650 SS |  | 25.7d |
| S06A-CC-6660 |  | Block-09 -LT Cable Terminations - Inverter to LT Panel | 7d | 2026-12-16 | 2026-12-22 | S06A-CC-6570 FF+1d, S06A-CC-6520 FF+2d, S06A-CC-6520 SS+2d, S06A-CC-6590 FF+2d, S06A-CC-6590 SS+2d, S06A-PR-6650 SS |  | 25.7d |
| S06A-CC-6490 |  | Block-09 -IDT Area - Gravel Filling | 5d | 2026-12-17 | 2026-12-21 | S06A-CC-6630, S06A-CC-6620 SS+1d, S06A-CC-6610 SS+1d, S06A-CC-6600, S06A-CC-6580, S06A-CC-6570, S06A-CC-6560, S06A-CC-6550, S06A-CC-6460, S06A-CC-6450, S06A-CC-6440, S06A-CC-6430, S06A-CC-6400, S06A-CC-6390 |  | 23.7d |
| S06A-CC-6470 |  | Block-09 -IDT Area - Fencing | 5d | 2026-12-20 | 2026-12-24 | S06A-CC-6490 SS+1d, S06A-CC-6630, S06A-CC-6620, S06A-CC-6610, S06A-CC-6600, S06A-CC-6580, S06A-CC-6570, S06A-CC-6560, S06A-EN-1100, S06A-PR-6490 SS |  | 21.7d |
| S06A-CC-6480 |  | Block-09 -IDT Area - Gate Installation | 1d | 2026-12-25 | 2026-12-25 | S06A-CC-6470, S06A-PR-6490 SS |  | 21.7d |
|  | 3 | **CONSTRUCTION-PV AREA-PRE COMMISSIONING** |  | 2026-10-29 | 2026-12-31 |  |  |  |
| S06A-CC-6690 |  | Block-09 -HT Panel Testing | 1d | 2026-10-29 | 2026-10-29 | S06A-CC-6560 |  | 69.7d |
| S06A-CC-6700 |  | Block-09 -LT Panel Testing | 1d | 2026-11-01 | 2026-11-01 | S06A-CC-6570 |  | 66.7d |
| S06A-CC-6670 |  | Block-09 -IDT Filtration | 3d | 2026-11-05 | 2026-11-07 | S06A-CC-6630, S06A-CC-6580 |  | 58.7d |
| S06A-CC-6680 |  | Block-09 -IDT Testing | 2d | 2026-11-08 | 2026-11-09 | S06A-CC-6670, S06A-EN-1680 |  | 58.7d |
| S06A-CC-6710 |  | Block-09 -Inspection Offer To Asset Commissioning Team | 1d | 2026-12-23 | 2026-12-23 | S06A-CC-6660, S06A-CC-6650, S06A-CC-6640 |  | 25.7d |
| S06A-CC-6720 |  | Block-09 -Punch Point Identification By Asset Commissioning Team | 3d | 2026-12-24 | 2026-12-26 | S06A-CC-6710 |  | 25.7d |
| S06A-CC-6730 |  | Block-09 -Punch Point Rectification And Pre Charging Sign Off | 5d | 2026-12-27 | 2026-12-31 | S06A-CC-6720 |  | 25.7d |
|  | 4 | **CONSTRUCTION-COMMISSIONING** |  | 2026-12-05 | 2027-01-30 |  |  |  |
| S06A-CC-6740 |  | Block-09 -CEA Application | 1d | 2026-12-05 | 2026-12-06 | S06A-CC-6700, S06A-CC-6690, S06A-CC-6680, S06A-PR-6150 |  | 33d |
| S06A-CC-6750 |  | Block-09 -CEA Inspection | 1d | 2026-12-26 | 2026-12-26 | S06A-CC-6500, S06A-CC-6480, S06A-CC-6740 FS+8d |  | 21.7d |
| S06A-CC-6760 |  | Block-09 -CEA Compliance & Approval | 5d | 2026-12-28 | 2027-01-01 | S06A-CC-6750 FS+1d |  | 21.7d |
| S06A-CC-6770 |  | Block-09 -First Time Charging - Application | 1d | 2027-01-12 | 2027-01-12 | S06A-CC-6300, S06A-CC-6340 SS+3d, S06A-CC-6760 |  | 11.7d |
| S06A-CC-6780 |  | Block-09 -First Time Charging - Approval | 2d | 2027-01-13 | 2027-01-14 | S06A-CC-6770 |  | 11.7d |
| S06A-CC-6790 |  | Block-09 -First Time Charging | 1d | 2027-01-15 | 2027-01-15 | S06A-CC-6730, S06A-CC-6780, S06A-CI-1010, PR-CA-23-020, PR-CA-27-014, PR-CA-27-013, PR-CA-16-020 |  | 11.7d |
| S06A-CC-6800 |  | Block-09 -Tracker Commissioning - SCADA | 8d | 2027-01-15 | 2027-01-22 | S06A-CC-6790 SS |  | 16.7d |
| S06A-CC-6810 |  | Block-09 -Robot Commissioning - SCADA | 12d | 2027-01-15 | 2027-01-27 | S06A-CC-6790 SS, S06A-CC-6370 SS+2d, S06A-CC-6360, S06A-CC-6380 FF+1d, S06A-CC-6380 SS+4d, S06A-CC-6770, S06A-CC-6600 |  | 12.7d |
| S06A-CC-6820 |  | Block-09 -Trial Operation | 1d | 2027-01-22 | 2027-01-22 | S06A-CC-6310, S06A-CC-6340 FF, S06A-CC-6790 SS+7d |  | 11.7d |
| S06A-CC-6830 |  | Block-09 -Trial Run Certificate | 1d | 2027-01-25 | 2027-01-25 | S06A-CC-6820 FS+2d |  | 11.7d |
| S06A-CC-6840 |  | Block-09 -COD | 2d | 2027-01-29 | 2027-01-30 | S06A-CC-6810, S06A-CC-6830 FS+2d, S06A-CC-6800, PR-CA-27-010 |  | 11.7d |
|  | 2 | **BLOCK-10** |  | 2026-04-30 | 2027-01-30 |  |  |  |
|  | 1 | **CONSTRUCTION-PV AREA-DC SIDE** |  | 2026-10-01 | 2027-01-15 |  |  |  |
| S06A-CC-6850 |  | Block-10 -Piling - MMS (Marking, Auguring & Concreting) | 30d | 2026-10-01 | 2026-10-31 | S06A-PR-6740 SS, S06A-EN-2210 SS, S06A-EN-1420 SS, S06A-PR-1110 SS |  | 45.7d |
| S06A-CC-6860 |  | Block-10 -Pile Capping | 30d | 2026-10-09 | 2026-11-07 | S06A-CC-6850 FF+7d, S06A-CC-6850 SS+7d |  | 56.7d |
| S06A-CC-6900 |  | Block-10 -Array Earthing | 25d | 2026-10-09 | 2026-11-02 | S06A-CC-6850 FF+1d, S06A-CC-6850 SS+7d, S06A-EN-2400, S06A-PR-2550 SS |  | 57.7d |
| S06A-CC-6870 |  | Block-10 -Piling - LT Cable Hanger System | 20d | 2026-10-12 | 2026-10-31 | S06A-CC-6850 FF, S06A-CC-6850 SS, S06A-EN-2970, S06A-PR-1430 SS |  | 54.7d |
| S06A-CC-6880 |  | Block-10 -Piling - Inverters | 16d | 2026-10-16 | 2026-10-31 | S06A-CC-6850 FF, S06A-CC-6850 SS, S06A-EN-2210, S06A-PR-1270 SS |  | 63.7d |
| S06A-CC-6910 |  | Block-10 -MMS Erection - Torque Tube/Raftar | 28d | 2026-10-18 | 2026-11-14 | S06A-CC-6900 FF, S06A-CC-6850 FF+14d, S06A-CC-6850 SS+14d, S06A-EN-1490, S06A-EN-1500, S06A-PR-1750 SS |  | 45.7d |
| S06A-CC-6920 |  | Block-10 -MMS Erection - Transmission Shaft/Bracing | 28d | 2026-10-22 | 2026-11-18 | S06A-CC-6910 FF+4d, S06A-CC-6910 SS+4d, S06A-PR-1750 SS |  | 49.7d |
| S06A-CC-6930 |  | Block-10 -MMS Erection - Purlin | 28d | 2026-10-22 | 2026-11-18 | S06A-CC-6860 FF, S06A-CC-6910 FF+4d, S06A-CC-6910 SS+4d, S06A-PR-1750 SS |  | 45.7d |
| S06A-CC-6940 |  | Block-10 -MMS - RFI Completion | 28d | 2026-10-26 | 2026-11-22 | S06A-CC-6920 FF, S06A-CC-6930 FF+4d, S06A-CC-6930 SS+4d |  | 45.7d |
| S06A-CC-6890 |  | Block-10 -Piling - Robotic Docking System | 10d | 2026-11-02 | 2026-11-11 | S06A-CC-6850 FF, S06A-CC-6850 SS, S06A-PR-1590 SS |  | 53.7d |
| S06A-CC-6950 |  | Block-10 -Module Installation | 40d | 2026-12-03 | 2027-01-11 | S06A-CC-6940 FF+12d, S06A-CC-6940 SS+4d, S06A-EN-1630, S06A-EN-2070, S06A-PR-6150 SS |  | 11.7d |
| S06A-CC-6970 |  | Block-10 -DC Cable Laying | 30d | 2026-12-04 | 2027-01-02 | S06A-CC-6950 SS+1d, S06A-CC-6910 SS+16d, S06A-PR-5800 SS |  | 27.7d |
| S06A-CC-6960 |  | Block-10 -Module - RFI Completion | 40d | 2026-12-07 | 2027-01-15 | S06A-CC-6950 FF+4d, S06A-CC-6950 SS+4d |  | 17.7d |
| S06A-CC-7000 |  | Block-10 -Robotic Structure - Docking Station Installation | 10d | 2026-12-11 | 2026-12-20 | S06A-CC-6890, S06A-CC-6910 FF+2d, S06A-CC-6910 SS+2d, S06A-EN-1310, S06A-PR-5640 SS |  | 24.7d |
| S06A-CC-7010 |  | Block-10 -Robotic Structure - Reverse Station Installation | 10d | 2026-12-11 | 2026-12-20 | S06A-CC-6890, S06A-CC-6910 FF+2d, S06A-CC-6910 SS+2d, S06A-PR-5640 SS |  | 37.7d |
| S06A-CC-7030 |  | Block-10 -Robot Installation | 30d | 2026-12-15 | 2027-01-13 | S06A-CC-7000 FF+4d, S06A-CC-7000 SS+4d, S06A-CC-6950 FF+2d, S06A-CC-6950 SS+2d, S06A-EN-1550, S06A-PR-5460 SS |  | 24.7d |
| S06A-CC-6980 |  | Block-10 -Module Interconnection & MC4 Termination | 25d | 2026-12-19 | 2027-01-12 | S06A-CC-6950 FF+1d, S06A-CC-6970 FF+2d, S06A-CC-6970 SS+2d, S06A-PR-5960 SS |  | 19.7d |
| S06A-CC-6990 |  | Block-10 -VOC Testing | 22d | 2026-12-24 | 2027-01-14 | S06A-CC-6950 FF+2d, S06A-CC-7240, S06A-CC-6980 FF+2d, S06A-CC-6980 SS+2d |  | 19.7d |
| S06A-CC-7020 |  | Block-10 -Robotic Structure - Bridges Installation | 20d | 2026-12-24 | 2027-01-12 | S06A-CC-6950 FF+1d, S06A-CC-6950 SS+2d, S06A-PR-5640 SS |  | 32.7d |
|  | 2 | **CONSTRUCTION-PV AREA-AC SIDE** |  | 2026-04-30 | 2026-12-25 |  |  |  |
| S06A-CC-7040 |  | Block-10 -IDT Foundation Up To Rail | 21d | 2026-04-30 A | 2026-10-07 | S06A-EN-1070, S06A-PR-2710 SS, S06A-PR-2870 SS, S06A-PR-3030 SS | 75% | 60.7d |
| S06A-CC-7050 |  | Block-10 -HT & LT Station - Slab | 13d | 2026-05-25 A | 2026-10-07 | S06A-EN-1170, S06A-EN-1180, S06A-PR-2710 SS, S06A-PR-2870 SS | 62% | 72.7d |
| S06A-CC-7180 |  | Block-10 -HT Cable Laying | 7d | 2026-10-01 | 2026-10-08 | S06A-EN-1940, S06A-PR-4470 SS |  | 98.7d |
| S06A-CC-7190 |  | Block-10 -FO Cable Laying | 7d | 2026-10-01 | 2026-10-08 | S06A-CC-7180 FF, S06A-CC-7180 SS, S06A-EN-1960, S06A-PR-4630 |  | 98.7d |
| S06A-CC-7080 |  | Block-10 -IDT Foundation - Grade Slab Casting & Dyke Wall | 9d | 2026-10-08 | 2026-10-16 | S06A-CC-7040 |  | 84.7d |
| S06A-CC-7090 |  | Block-10 -NIFPS Foundation | 10d | 2026-10-08 | 2026-10-17 | S06A-CC-7040, S06A-EN-1090 |  | 60.7d |
| S06A-CC-7100 |  | Block-10 -BOT Foundation | 10d | 2026-10-08 | 2026-10-17 | S06A-CC-7040 |  | 83.7d |
| S06A-CC-7110 |  | Block-10 -Aux Transformer Foundation | 5d | 2026-10-08 | 2026-10-12 | S06A-CC-7040 |  | 82.7d |

| ID | WBS | Task | Duration | Start | Finish | Predecessors | Complete | Total float |
| --- | --- | --- | --- | --- | --- | --- | --- | --- |
| S06A-CC-7060 |  | Block-10 -HT & LT Station - Shed Installation | 5d | 2026-10-11 | 2026-10-15 | S06A-CC-7050 FS+3d, S06A-PR-3190 SS |  | 72.7d |
| S06A-CC-7150 |  | Block-10 -HT LT Station - Staircase | 2d | 2026-10-11 | 2026-10-12 | S06A-CC-7050 FS+3d |  | 95.7d |
| S06A-CC-7070 |  | Block-10 -HT & LT Station - Sheeting Installation | 2d | 2026-10-16 | 2026-10-17 | S06A-CC-7060, S06A-PR-3190 SS |  | 72.7d |
| S06A-CC-7220 |  | Block-10 -LT Panel Erection | 6d | 2026-10-26 | 2026-10-31 | S06A-PR-6790, S06A-CC-7070 FS+2d, S06A-EN-1740, S06A-EN-1750, S06A-PR-2390 SS |  | 66.7d |
| S06A-CC-7230 |  | Block-10 -IDT Erection | 5d | 2026-10-26 | 2026-10-30 | S06A-PR-6790, S06A-CC-7040, S06A-PR-2070 SS |  | 63.7d |
| S06A-CC-7280 |  | Block-10 -NIFPS - Installation | 10d | 2026-10-26 | 2026-11-04 | S06A-CC-7090 FS+6d, S06A-EN-1660, S06A-PR-2070 SS |  | 58.7d |
| S06A-CC-7210 |  | Block-10 -HT Panel Erection | 1d | 2026-10-28 | 2026-10-28 | S06A-PR-6790, S06A-CC-7070 SS+2d, S06A-EN-1810, S06A-PR-2230 SS |  | 69.7d |
| S06A-CC-7160 |  | Block-10 -Cable Hanger - Structure & Messenger Wire Erection | 5d | 2026-10-31 | 2026-11-04 | S06A-CC-6870 FF+4d, S06A-CC-6870 SS+4d, S06A-EN-2970, S06A-EN-1530, S06A-PR-3350 SS, S06A-PR-3510 SS, S06A-PR-3670 SS, S06A-PR-3830 SS, S06A-PR-3990 SS |  | 54.7d |
| S06A-CC-7170 |  | Block-10 -LT Cable Laying | 20d | 2026-11-02 | 2026-11-21 | S06A-CC-7160 FF+2d, S06A-CC-7160 SS+2d, S06A-EN-2780, S06A-EN-1920, S06A-EN-1970, S06A-PR-4150 SS |  | 54.7d |
| S06A-CC-7240 |  | Block-10 -Inverter Installation | 7d | 2026-11-03 | 2026-11-09 | S06A-CC-6880 FS+2d, S06A-EN-1610, S06A-PR-1910 SS, S06A-PR-4790 SS, S06A-PR-4950, S06A-PR-5110 SS, S06A-PR-5270 SS |  | 63.7d |
| S06A-CC-7200 |  | Block-10 -Control Cable Laying | 5d | 2026-11-09 | 2026-11-14 | S06A-CC-7250 FF, S06A-CC-7250 SS, S06A-EN-2030, S06A-PR-4310 SS |  | 56d |
| S06A-CC-7250 |  | Block-10 -SCADA & SACU Installation | 5d | 2026-11-09 | 2026-11-14 | S06A-CC-7070, S06A-PR-6330 |  | 56d |
| S06A-CC-7260 |  | Block-10 -ACDB Installation | 2d | 2026-12-16 | 2026-12-17 | S06A-CC-7070, S06A-EN-1760, S06A-PR-6650 SS |  | 22.7d |
| S06A-CC-7270 |  | Block-10 -Aux Transformer - Installation | 4d | 2026-12-16 | 2026-12-19 | S06A-CC-7110 FS+3d, S06A-PR-6650 SS |  | 21.7d |
| S06A-CC-7290 |  | Block-10 -HT Cable Terminations - IDT Side | 2d | 2026-12-16 | 2026-12-17 | S06A-CC-7210, S06A-CC-7190 FF+2d, S06A-CC-7190 SS+2d, S06A-CC-7180 FF+2d, S06A-CC-7180 SS+2d, S06A-CC-7230, S06A-PR-6650 SS |  | 30.7d |
| S06A-CC-7300 |  | Block-10 -LT Cable Terminations - LT Panel to IDT | 7d | 2026-12-16 | 2026-12-22 | S06A-CC-7220 FF+1d, S06A-CC-7170 FF+2d, S06A-CC-7170 SS+2d, S06A-CC-7230, S06A-EN-1850, S06A-PR-6650 SS |  | 25.7d |
| S06A-CC-7310 |  | Block-10 -LT Cable Terminations - Inverter to LT Panel | 7d | 2026-12-16 | 2026-12-22 | S06A-CC-7220 FF+1d, S06A-CC-7170 FF+2d, S06A-CC-7170 SS+2d, S06A-CC-7240 FF+2d, S06A-CC-7240 SS+2d, S06A-PR-6650 SS |  | 25.7d |
| S06A-CC-7140 |  | Block-10 -IDT Area - Gravel Filling | 5d | 2026-12-18 | 2026-12-22 | S06A-CC-7280, S06A-CC-7270 SS+1d, S06A-CC-7260, S06A-CC-7250, S06A-CC-7230, S06A-CC-7220, S06A-CC-7210, S06A-CC-7200, S06A-CC-7110, S06A-CC-7100, S06A-CC-7090, S06A-CC-7080, S06A-CC-7050, S06A-CC-7040 |  | 22.7d |
| S06A-CC-7120 |  | Block-10 -IDT Area - Fencing | 5d | 2026-12-20 | 2026-12-24 | S06A-CC-7140 SS+1d, S06A-CC-7280, S06A-CC-7270, S06A-CC-7260, S06A-CC-7250, S06A-CC-7230, S06A-CC-7220, S06A-CC-7210, S06A-EN-1100, S06A-PR-6490 SS |  | 21.7d |
| S06A-CC-7130 |  | Block-10 -IDT Area - Gate Installation | 1d | 2026-12-25 | 2026-12-25 | S06A-CC-7120, S06A-PR-6490 SS |  | 21.7d |
|  | 3 | **CONSTRUCTION-PV AREA-PRE COMMISSIONING** |  | 2026-10-29 | 2026-12-31 |  |  |  |
| S06A-CC-7340 |  | Block-10 -HT Panel Testing | 1d | 2026-10-29 | 2026-10-29 | S06A-CC-7210 |  | 69.7d |
| S06A-CC-7350 |  | Block-10 -LT Panel Testing | 1d | 2026-11-01 | 2026-11-01 | S06A-CC-7220 |  | 66.7d |
| S06A-CC-7320 |  | Block-10 -IDT Filtration | 3d | 2026-11-05 | 2026-11-07 | S06A-CC-7280, S06A-CC-7230 |  | 58.7d |
| S06A-CC-7330 |  | Block-10 -IDT Testing | 2d | 2026-11-08 | 2026-11-09 | S06A-CC-7320, S06A-EN-1680 |  | 58.7d |
| S06A-CC-7360 |  | Block-10 -Inspection Offer To Asset Commissioning Team | 1d | 2026-12-23 | 2026-12-23 | S06A-CC-7310, S06A-CC-7300, S06A-CC-7290 |  | 25.7d |
| S06A-CC-7370 |  | Block-10 -Punch Point Identification By Asset Commissioning Team | 3d | 2026-12-24 | 2026-12-26 | S06A-CC-7360 |  | 25.7d |
| S06A-CC-7380 |  | Block-10 -Punch Point Rectification And Pre Charging Sign Off | 5d | 2026-12-27 | 2026-12-31 | S06A-CC-7370 |  | 25.7d |
|  | 4 | **CONSTRUCTION-COMMISSIONING** |  | 2026-12-05 | 2027-01-30 |  |  |  |
| S06A-CC-7390 |  | Block-10 -CEA Application | 1d | 2026-12-05 | 2026-12-06 | S06A-CC-7350, S06A-CC-7340, S06A-CC-7330, S06A-PR-6150 |  | 33d |
| S06A-CC-7400 |  | Block-10 -CEA Inspection | 1d | 2026-12-26 | 2026-12-26 | S06A-CC-7150, S06A-CC-7130, S06A-CC-7390 FS+8d |  | 21.7d |
| S06A-CC-7410 |  | Block-10 -CEA Compliance & Approval | 5d | 2026-12-28 | 2027-01-01 | S06A-CC-7400 FS+1d |  | 21.7d |
| S06A-CC-7420 |  | Block-10 -First Time Charging - Application | 1d | 2027-01-12 | 2027-01-12 | S06A-CC-6950, S06A-CC-6990 SS+3d, S06A-CC-7410 |  | 11.7d |
| S06A-CC-7430 |  | Block-10 -First Time Charging - Approval | 2d | 2027-01-13 | 2027-01-14 | S06A-CC-7420 |  | 11.7d |
| S06A-CC-7440 |  | Block-10 -First Time Charging | 1d | 2027-01-15 | 2027-01-15 | S06A-CC-7380, S06A-CC-7430, S06A-CI-1010, PR-CA-23-020, PR-CA-27-014, PR-CA-27-013, PR-CA-16-020 |  | 11.7d |
| S06A-CC-7450 |  | Block-10 -Tracker Commissioning - SCADA | 8d | 2027-01-15 | 2027-01-22 | S06A-CC-7440 SS |  | 16.7d |
| S06A-CC-7460 |  | Block-10 -Robot Commissioning - SCADA | 12d | 2027-01-15 | 2027-01-27 | S06A-CC-7440 SS, S06A-CC-7020 SS+2d, S06A-CC-7010, S06A-CC-7030 FF+1d, S06A-CC-7030 SS+4d, S06A-CC-7420, S06A-CC-7250 |  | 12.7d |
| S06A-CC-7470 |  | Block-10 -Trial Operation | 1d | 2027-01-22 | 2027-01-22 | S06A-CC-6960, S06A-CC-6990 FF, S06A-CC-7440 SS+7d |  | 11.7d |
| S06A-CC-7480 |  | Block-10 -Trial Run Certificate | 1d | 2027-01-25 | 2027-01-25 | S06A-CC-7470 FS+2d |  | 11.7d |
| S06A-CC-7490 |  | Block-10 -COD | 2d | 2027-01-29 | 2027-01-30 | S06A-CC-7460, S06A-CC-7480 FS+2d, S06A-CC-7450, PR-CA-27-010 |  | 11.7d |
|  | 3 | **BLOCK-11** |  | 2026-05-01 | 2027-01-30 |  |  |  |
|  | 1 | **CONSTRUCTION-PV AREA-DC SIDE** |  | 2026-07-03 | 2027-01-15 |  |  |  |
| S06A-CC-7500 |  | Block-11 -Piling - MMS (Marking, Auguring & Concreting) | 30d | 2026-07-03 A | 2026-10-11 | S06A-PR-6740 SS, S06A-EN-2220 SS, S06A-EN-1420 SS, S06A-PR-1110 SS | 70% | 47.7d |
| S06A-CC-7510 |  | Block-11 -Pile Capping | 30d | 2026-07-13 A | 2026-10-20 | S06A-CC-7500 FF+7d, S06A-CC-7500 SS+7d | 37% | 74.7d |
| S06A-CC-7520 |  | Block-11 -Piling - LT Cable Hanger System | 20d | 2026-10-01 | 2026-10-21 | S06A-CC-7500 FF, S06A-CC-7500 SS, S06A-EN-2980, S06A-PR-1430 SS |  | 64.7d |
| S06A-CC-7530 |  | Block-11 -Piling - Inverters | 16d | 2026-10-01 | 2026-10-17 | S06A-CC-7500 FF, S06A-CC-7500 SS, S06A-EN-2220, S06A-PR-1270 SS |  | 77.7d |
| S06A-CC-7550 |  | Block-11 -Array Earthing | 25d | 2026-10-09 | 2026-11-02 | S06A-CC-7500 FF+1d, S06A-CC-7500 SS+7d, S06A-EN-2410, S06A-PR-2550 SS |  | 57.7d |
| S06A-CC-7560 |  | Block-11 -MMS Erection - Torque Tube/Raftar | 28d | 2026-10-16 | 2026-11-12 | S06A-CC-7550 FF, S06A-CC-7500 FF+14d, S06A-CC-7500 SS+14d, S06A-EN-1490, S06A-EN-1500, S06A-PR-1750 SS |  | 47.7d |
| S06A-CC-7570 |  | Block-11 -MMS Erection - Transmission Shaft/Bracing | 28d | 2026-10-20 | 2026-11-16 | S06A-CC-7560 FF+4d, S06A-CC-7560 SS+4d, S06A-PR-1750 SS |  | 51.7d |
| S06A-CC-7580 |  | Block-11 -MMS Erection - Purlin | 28d | 2026-10-20 | 2026-11-16 | S06A-CC-7510 FF, S06A-CC-7560 FF+4d, S06A-CC-7560 SS+4d, S06A-PR-1750 SS |  | 47.7d |
| S06A-CC-7590 |  | Block-11 -MMS - RFI Completion | 28d | 2026-10-24 | 2026-11-20 | S06A-CC-7570 FF, S06A-CC-7580 FF+4d, S06A-CC-7580 SS+4d |  | 47.7d |
| S06A-CC-7540 |  | Block-11 -Piling - Robotic Docking System | 10d | 2026-11-02 | 2026-11-11 | S06A-CC-7500 FF, S06A-CC-7500 SS, S06A-PR-1590 SS |  | 53.7d |
| S06A-CC-7600 |  | Block-11 -Module Installation | 40d | 2026-12-03 | 2027-01-11 | S06A-CC-7590 FF+12d, S06A-CC-7590 SS+4d, S06A-EN-1630, S06A-EN-2070, S06A-PR-6150 SS |  | 11.7d |
| S06A-CC-7620 |  | Block-11 -DC Cable Laying | 30d | 2026-12-04 | 2027-01-02 | S06A-CC-7600 SS+1d, S06A-CC-7560 SS+16d, S06A-PR-5800 SS |  | 27.7d |
| S06A-CC-7610 |  | Block-11 -Module - RFI Completion | 40d | 2026-12-07 | 2027-01-15 | S06A-CC-7600 FF+4d, S06A-CC-7600 SS+4d |  | 17.7d |
| S06A-CC-7650 |  | Block-11 -Robotic Structure - Docking Station Installation | 10d | 2026-12-11 | 2026-12-20 | S06A-CC-7540, S06A-CC-7560 FF+2d, S06A-CC-7560 SS+2d, S06A-EN-1310, S06A-PR-5640 SS |  | 24.7d |
| S06A-CC-7660 |  | Block-11 -Robotic Structure - Reverse Station Installation | 10d | 2026-12-11 | 2026-12-20 | S06A-CC-7540, S06A-CC-7560 FF+2d, S06A-CC-7560 SS+2d, S06A-PR-5640 SS |  | 37.7d |
| S06A-CC-7680 |  | Block-11 -Robot Installation | 30d | 2026-12-15 | 2027-01-13 | S06A-CC-7650 FF+4d, S06A-CC-7650 SS+4d, S06A-CC-7600 FF+2d, S06A-CC-7600 SS+2d, S06A-EN-1550, S06A-PR-5460 SS |  | 24.7d |
| S06A-CC-7630 |  | Block-11 -Module Interconnection & MC4 Termination | 25d | 2026-12-19 | 2027-01-12 | S06A-CC-7600 FF+1d, S06A-CC-7620 FF+2d, S06A-CC-7620 SS+2d, S06A-PR-5960 SS |  | 19.7d |
| S06A-CC-7640 |  | Block-11 -VOC Testing | 22d | 2026-12-24 | 2027-01-14 | S06A-CC-7600 FF+2d, S06A-CC-7890, S06A-CC-7630 FF+2d, S06A-CC-7630 SS+2d |  | 19.7d |
| S06A-CC-7670 |  | Block-11 -Robotic Structure - Bridges Installation | 20d | 2026-12-24 | 2027-01-12 | S06A-CC-7600 FF+1d, S06A-CC-7600 SS+2d, S06A-PR-5640 SS |  | 32.7d |
|  | 2 | **CONSTRUCTION-PV AREA-AC SIDE** |  | 2026-05-01 | 2026-12-25 |  |  |  |
| S06A-CC-7690 |  | Block-11 -IDT Foundation Up To Rail | 21d | 2026-05-01 A | 2026-10-07 | S06A-EN-1070, S06A-PR-2710 SS, S06A-PR-2870 SS, S06A-PR-3030 SS | 75% | 60.7d |
| S06A-CC-7700 |  | Block-11 -HT & LT Station - Slab | 15d | 2026-05-18 A | 2026-07-20 A | S06A-EN-1170, S06A-EN-1180, S06A-PR-2710 SS, S06A-PR-2870 SS | 100% |  |
| S06A-CC-7730 |  | Block-11 -IDT Foundation - Grade Slab Casting & Dyke Wall | 9d | 2026-06-14 A | 2026-10-03 | S06A-CC-7690 | 80% | 97.7d |
| S06A-CC-7830 |  | Block-11 -HT Cable Laying | 7d | 2026-10-01 | 2026-10-08 | S06A-EN-1940, S06A-PR-4470 SS |  | 98.7d |
| S06A-CC-7840 |  | Block-11 -FO Cable Laying | 7d | 2026-10-01 | 2026-10-08 | S06A-CC-7830 FF, S06A-CC-7830 SS, S06A-EN-1960, S06A-PR-4630 |  | 98.7d |
| S06A-CC-7710 |  | Block-11 -HT & LT Station - Shed Installation | 5d | 2026-10-05 | 2026-10-09 | S06A-CC-7700 FS+3d, S06A-PR-3190 SS |  | 78.7d |
| S06A-CC-7800 |  | Block-11 -HT LT Station - Staircase | 2d | 2026-10-05 | 2026-10-06 | S06A-CC-7700 FS+3d |  | 101.7d |
| S06A-CC-7740 |  | Block-11 -NIFPS Foundation | 10d | 2026-10-08 | 2026-10-17 | S06A-CC-7690, S06A-EN-1090 |  | 60.7d |

| ID | WBS | Task | Duration | Start | Finish | Predecessors | Complete | Total float |
| --- | --- | --- | --- | --- | --- | --- | --- | --- |
| S06A-CC-7750 |  | Block-11 -BOT Foundation | 10d | 2026-10-08 | 2026-10-17 | S06A-CC-7690 |  | 83.7d |
| S06A-CC-7760 |  | Block-11 -Aux Transformer Foundation | 5d | 2026-10-08 | 2026-10-12 | S06A-CC-7690 |  | 82.7d |
| S06A-CC-7720 |  | Block-11 -HT & LT Station - Sheeting Installation | 2d | 2026-10-10 | 2026-10-11 | S06A-CC-7710, S06A-PR-3190 SS |  | 78.7d |
| S06A-CC-7810 |  | Block-11 -Cable Hanger - Structure & Messenger Wire Erection | 5d | 2026-10-21 | 2026-10-25 | S06A-CC-7520 FF+4d, S06A-CC-7520 SS+4d, S06A-EN-2980, S06A-EN-1530, S06A-PR-3350 SS, S06A-PR-3510 SS, S06A-PR-3670 SS, S06A-PR-3830 SS, S06A-PR-3990 SS |  | 64.7d |
| S06A-CC-7820 |  | Block-11 -LT Cable Laying | 20d | 2026-10-23 | 2026-11-11 | S06A-CC-7810 FF+2d, S06A-CC-7810 SS+2d, S06A-EN-2790, S06A-EN-1920, S06A-EN-1970, S06A-PR-4150 SS |  | 64.7d |
| S06A-CC-7870 |  | Block-11 -LT Panel Erection | 6d | 2026-10-26 | 2026-10-31 | S06A-PR-6790, S06A-CC-7720 FS+2d, S06A-EN-1740, S06A-EN-1750, S06A-PR-2390 SS |  | 66.7d |
| S06A-CC-7880 |  | Block-11 -IDT Erection | 5d | 2026-10-26 | 2026-10-30 | S06A-PR-6790, S06A-CC-7690, S06A-PR-2070 SS |  | 63.7d |
| S06A-CC-7930 |  | Block-11 -NIFPS - Installation | 10d | 2026-10-26 | 2026-11-04 | S06A-CC-7740 FS+6d, S06A-EN-1660, S06A-PR-2070 SS |  | 58.7d |
| S06A-CC-7860 |  | Block-11 -HT Panel Erection | 1d | 2026-10-28 | 2026-10-28 | S06A-PR-6790, S06A-CC-7720 SS+2d, S06A-EN-1810, S06A-PR-2230 SS |  | 69.7d |
| S06A-CC-7890 |  | Block-11 -Inverter Installation | 7d | 2026-10-30 | 2026-11-05 | S06A-CC-7530 FS+2d, S06A-EN-1610, S06A-PR-1910 SS, S06A-PR-4790 SS, S06A-PR-4950, S06A-PR-5110 SS, S06A-PR-5270 SS |  | 67.7d |
| S06A-CC-7850 |  | Block-11 -Control Cable Laying | 5d | 2026-11-09 | 2026-11-14 | S06A-CC-7900 FF, S06A-CC-7900 SS, S06A-EN-2030, S06A-PR-4310 SS |  | 56d |
| S06A-CC-7900 |  | Block-11 -SCADA & SACU Installation | 5d | 2026-11-09 | 2026-11-14 | S06A-CC-7720, S06A-PR-6330 |  | 56d |
| S06A-CC-7910 |  | Block-11 -ACDB Installation | 2d | 2026-12-16 | 2026-12-17 | S06A-CC-7720, S06A-EN-1760, S06A-PR-6650 SS |  | 22.7d |
| S06A-CC-7920 |  | Block-11 -Aux Transformer - Installation | 4d | 2026-12-16 | 2026-12-19 | S06A-CC-7760 FS+3d, S06A-PR-6650 SS |  | 21.7d |
| S06A-CC-7940 |  | Block-11 -HT Cable Terminations - IDT Side | 2d | 2026-12-16 | 2026-12-17 | S06A-CC-7860, S06A-CC-7840 FF+2d, S06A-CC-7840 SS+2d, S06A-CC-7830 FF+2d, S06A-CC-7830 SS+2d, S06A-CC-7880, S06A-PR-6650 SS |  | 30.7d |
| S06A-CC-7950 |  | Block-11 -LT Cable Terminations - LT Panel to IDT | 7d | 2026-12-16 | 2026-12-22 | S06A-CC-7870 FF+1d, S06A-CC-7820 FF+2d, S06A-CC-7820 SS+2d, S06A-CC-7880, S06A-EN-1850, S06A-PR-6650 SS |  | 25.7d |
| S06A-CC-7960 |  | Block-11 -LT Cable Terminations - Inverter to LT Panel | 7d | 2026-12-16 | 2026-12-22 | S06A-CC-7870 FF+1d, S06A-CC-7820 FF+2d, S06A-CC-7820 SS+2d, S06A-CC-7890 FF+2d, S06A-CC-7890 SS+2d, S06A-PR-6650 SS |  | 25.7d |
| S06A-CC-7790 |  | Block-11 -IDT Area - Gravel Filling | 5d | 2026-12-18 | 2026-12-22 | S06A-CC-7930, S06A-CC-7920 SS+1d, S06A-CC-7910, S06A-CC-7900, S06A-CC-7880, S06A-CC-7870, S06A-CC-7860, S06A-CC-7850, S06A-CC-7760, S06A-CC-7750, S06A-CC-7740, S06A-CC-7730, S06A-CC-7700, S06A-CC-7690 |  | 22.7d |
| S06A-CC-7770 |  | Block-11 -IDT Area - Fencing | 5d | 2026-12-20 | 2026-12-24 | S06A-CC-7790 SS+1d, S06A-CC-7930, S06A-CC-7920, S06A-CC-7910, S06A-CC-7900, S06A-CC-7880, S06A-CC-7870, S06A-CC-7860, S06A-EN-1100, S06A-PR-6490 SS |  | 21.7d |
| S06A-CC-7780 |  | Block-11 -IDT Area - Gate Installation | 1d | 2026-12-25 | 2026-12-25 | S06A-CC-7770, S06A-PR-6490 SS |  | 21.7d |
|  | 3 | **CONSTRUCTION-PV AREA-PRE COMMISSIONING** |  | 2026-10-29 | 2026-12-31 |  |  |  |
| S06A-CC-7990 |  | Block-11 -HT Panel Testing | 1d | 2026-10-29 | 2026-10-29 | S06A-CC-7860 |  | 69.7d |
| S06A-CC-8000 |  | Block-11 -LT Panel Testing | 1d | 2026-11-01 | 2026-11-01 | S06A-CC-7870 |  | 66.7d |
| S06A-CC-7970 |  | Block-11 -IDT Filtration | 3d | 2026-11-05 | 2026-11-07 | S06A-CC-7930, S06A-CC-7880 |  | 58.7d |
| S06A-CC-7980 |  | Block-11 -IDT Testing | 2d | 2026-11-08 | 2026-11-09 | S06A-CC-7970, S06A-EN-1680 |  | 58.7d |
| S06A-CC-8010 |  | Block-11 -Inspection Offer To Asset Commissioning Team | 1d | 2026-12-23 | 2026-12-23 | S06A-CC-7960, S06A-CC-7950, S06A-CC-7940 |  | 25.7d |
| S06A-CC-8020 |  | Block-11 -Punch Point Identification By Asset Commissioning Team | 3d | 2026-12-24 | 2026-12-26 | S06A-CC-8010 |  | 25.7d |
| S06A-CC-8030 |  | Block-11 -Punch Point Rectification And Pre Charging Sign Off | 5d | 2026-12-27 | 2026-12-31 | S06A-CC-8020 |  | 25.7d |
|  | 4 | **CONSTRUCTION-COMMISSIONING** |  | 2026-12-05 | 2027-01-30 |  |  |  |
| S06A-CC-8040 |  | Block-11 -CEA Application | 1d | 2026-12-05 | 2026-12-06 | S06A-CC-8000, S06A-CC-7990, S06A-CC-7980, S06A-PR-6150 |  | 33d |
| S06A-CC-8050 |  | Block-11 -CEA Inspection | 1d | 2026-12-26 | 2026-12-26 | S06A-CC-7800, S06A-CC-7780, S06A-CC-8040 FS+8d |  | 21.7d |
| S06A-CC-8060 |  | Block-11 -CEA Compliance & Approval | 5d | 2026-12-28 | 2027-01-01 | S06A-CC-8050 FS+1d |  | 21.7d |
| S06A-CC-8070 |  | Block-11 -First Time Charging - Application | 1d | 2027-01-12 | 2027-01-12 | S06A-CC-7600, S06A-CC-7640 SS+3d, S06A-CC-8060 |  | 11.7d |
| S06A-CC-8080 |  | Block-11 -First Time Charging - Approval | 2d | 2027-01-13 | 2027-01-14 | S06A-CC-8070 |  | 11.7d |
| S06A-CC-8090 |  | Block-11 -First Time Charging | 1d | 2027-01-15 | 2027-01-15 | S06A-CC-8030, S06A-CC-8080, S06A-CI-1010, PR-CA-23-020, PR-CA-27-014, PR-CA-27-013, PR-CA-16-020 |  | 11.7d |
| S06A-CC-8100 |  | Block-11-Tracker Commissioning - SCADA | 8d | 2027-01-15 | 2027-01-22 | S06A-CC-8090 SS |  | 16.7d |
| S06A-CC-8110 |  | Block-11 -Robot Commissioning - SCADA | 12d | 2027-01-15 | 2027-01-27 | S06A-CC-8090 SS, S06A-CC-7670 SS+2d, S06A-CC-7660, S06A-CC-7680 FF+1d, S06A-CC-7680 SS+4d, S06A-CC-8070, S06A-CC-7900 |  | 12.7d |
| S06A-CC-8120 |  | Block-11 -Trial Operation | 1d | 2027-01-22 | 2027-01-22 | S06A-CC-7610, S06A-CC-7640 FF, S06A-CC-8090 SS+7d |  | 11.7d |
| S06A-CC-8130 |  | Block-11 -Trial Run Certificate | 1d | 2027-01-25 | 2027-01-25 | S06A-CC-8120 FS+2d |  | 11.7d |
| S06A-CC-8140 |  | Block-11 -COD | 2d | 2027-01-29 | 2027-01-30 | S06A-CC-8110, S06A-CC-8130 FS+2d, S06A-CC-8100, PR-CA-27-010 |  | 11.7d |
|  | 4 | **BLOCK-12** |  | 2026-05-01 | 2027-01-30 |  |  |  |
|  | 1 | **CONSTRUCTION-PV AREA-DC SIDE** |  | 2026-10-01 | 2027-01-15 |  |  |  |
| S06A-CC-8150 |  | Block-12 -Piling - MMS (Marking, Auguring & Concreting) | 30d | 2026-10-01 | 2026-10-31 | S06A-PR-6740 SS, S06A-EN-2230 SS, S06A-EN-1420 SS, S06A-PR-1110 SS |  | 45.7d |
| S06A-CC-8160 |  | Block-12 -Pile Capping | 30d | 2026-10-09 | 2026-11-07 | S06A-CC-8150 FF+7d, S06A-CC-8150 SS+7d |  | 56.7d |
| S06A-CC-8200 |  | Block-12 -Array Earthing | 25d | 2026-10-09 | 2026-11-02 | S06A-CC-8150 FF+1d, S06A-CC-8150 SS+7d, S06A-EN-2420, S06A-PR-2550 SS |  | 57.7d |
| S06A-CC-8170 |  | Block-12 -Piling - LT Cable Hanger System | 20d | 2026-10-12 | 2026-10-31 | S06A-CC-8150 FF, S06A-CC-8150 SS, S06A-EN-2990, S06A-PR-1430 SS |  | 54.7d |
| S06A-CC-8180 |  | Block-12 -Piling - Inverters | 16d | 2026-10-16 | 2026-10-31 | S06A-CC-8150 FF, S06A-CC-8150 SS, S06A-EN-2230, S06A-PR-1270 SS |  | 63.7d |
| S06A-CC-8210 |  | Block-12 -MMS Erection - Torque Tube/Raftar | 28d | 2026-10-18 | 2026-11-14 | S06A-CC-8200 FF, S06A-CC-8150 FF+14d, S06A-CC-8150 SS+14d, S06A-EN-1490, S06A-EN-1500, S06A-PR-1750 SS |  | 45.7d |
| S06A-CC-8220 |  | Block-12 -MMS Erection - Transmission Shaft/Bracing | 28d | 2026-10-22 | 2026-11-18 | S06A-CC-8210 FF+4d, S06A-CC-8210 SS+4d, S06A-PR-1750 SS |  | 49.7d |
| S06A-CC-8230 |  | Block-12 -MMS Erection - Purlin | 28d | 2026-10-22 | 2026-11-18 | S06A-CC-8160 FF, S06A-CC-8210 FF+4d, S06A-CC-8210 SS+4d, S06A-PR-1750 SS |  | 45.7d |
| S06A-CC-8240 |  | Block-12 -MMS - RFI Completion | 28d | 2026-10-26 | 2026-11-22 | S06A-CC-8220 FF, S06A-CC-8230 FF+4d, S06A-CC-8230 SS+4d |  | 45.7d |
| S06A-CC-8190 |  | Block-12 -Piling - Robotic Docking System | 10d | 2026-11-02 | 2026-11-11 | S06A-CC-8150 FF, S06A-CC-8150 SS, S06A-PR-1590 SS |  | 53.7d |
| S06A-CC-8250 |  | Block-12 -Module Installation | 40d | 2026-12-03 | 2027-01-11 | S06A-CC-8240 FF+12d, S06A-CC-8240 SS+4d, S06A-EN-1630, S06A-EN-2070, S06A-PR-6150 SS |  | 11.7d |
| S06A-CC-8270 |  | Block-12 -DC Cable Laying | 30d | 2026-12-04 | 2027-01-02 | S06A-CC-8250 SS+1d, S06A-CC-8210 SS+16d, S06A-PR-5800 SS |  | 27.7d |
| S06A-CC-8260 |  | Block-12 -Module - RFI Completion | 40d | 2026-12-07 | 2027-01-15 | S06A-CC-8250 FF+4d, S06A-CC-8250 SS+4d |  | 17.7d |
| S06A-CC-8300 |  | Block-12 -Robotic Structure - Docking Station Installation | 10d | 2026-12-11 | 2026-12-20 | S06A-CC-8190, S06A-CC-8210 FF+2d, S06A-CC-8210 SS+2d, S06A-EN-1310, S06A-PR-5640 SS |  | 24.7d |
| S06A-CC-8310 |  | Block-12 -Robotic Structure - Reverse Station Installation | 10d | 2026-12-11 | 2026-12-20 | S06A-CC-8190, S06A-CC-8210 FF+2d, S06A-CC-8210 SS+2d, S06A-PR-5640 SS |  | 37.7d |
| S06A-CC-8330 |  | Block-12 -Robot Installation | 30d | 2026-12-15 | 2027-01-13 | S06A-CC-8300 FF+4d, S06A-CC-8300 SS+4d, S06A-CC-8250 FF+2d, S06A-CC-8250 SS+2d, S06A-EN-1550, S06A-PR-5460 SS |  | 24.7d |
| S06A-CC-8280 |  | Block-12 -Module Interconnection & MC4 Termination | 25d | 2026-12-19 | 2027-01-12 | S06A-CC-8250 FF+1d, S06A-CC-8270 FF+2d, S06A-CC-8270 SS+2d, S06A-PR-5960 SS |  | 19.7d |
| S06A-CC-8290 |  | Block-12 -VOC Testing | 22d | 2026-12-24 | 2027-01-14 | S06A-CC-8250 FF+2d, S06A-CC-8540, S06A-CC-8280 FF+2d, S06A-CC-8280 SS+2d |  | 19.7d |
| S06A-CC-8320 |  | Block-12 -Robotic Structure - Bridges Installation | 20d | 2026-12-24 | 2027-01-12 | S06A-CC-8250 FF+1d, S06A-CC-8250 SS+2d, S06A-PR-5640 SS |  | 32.7d |
|  | 2 | **CONSTRUCTION-PV AREA-AC SIDE** |  | 2026-05-01 | 2026-12-25 |  |  |  |
| S06A-CC-8340 |  | Block-12 -IDT Foundation Up To Rail | 21d | 2026-05-01 A | 2026-10-07 | S06A-EN-1070, S06A-PR-2710 SS, S06A-PR-2870 SS, S06A-PR-3030 SS | 75% | 60.7d |
| S06A-CC-8350 |  | Block-12 -HT & LT Station - Slab | 13d | 2026-05-25 A | 2026-10-07 | S06A-EN-1170, S06A-EN-1180, S06A-PR-2710 SS, S06A-PR-2870 SS | 62% | 72.7d |
| S06A-CC-8480 |  | Block-12 -HT Cable Laying | 7d | 2026-10-01 | 2026-10-08 | S06A-EN-1940, S06A-PR-4470 SS |  | 98.7d |
| S06A-CC-8490 |  | Block-12 -FO Cable Laying | 7d | 2026-10-01 | 2026-10-08 | S06A-CC-8480 FF, S06A-CC-8480 SS, S06A-EN-1960, S06A-PR-4630 |  | 98.7d |
| S06A-CC-8380 |  | Block-12 -IDT Foundation - Grade Slab Casting & Dyke Wall | 9d | 2026-10-08 | 2026-10-16 | S06A-CC-8340 |  | 84.7d |
| S06A-CC-8390 |  | Block-12 -NIFPS Foundation | 10d | 2026-10-08 | 2026-10-17 | S06A-CC-8340, S06A-EN-1090 |  | 60.7d |
| S06A-CC-8400 |  | Block-12 -BOT Foundation | 10d | 2026-10-08 | 2026-10-17 | S06A-CC-8340 |  | 83.7d |
| S06A-CC-8410 |  | Block-12 -Aux Transformer Foundation | 5d | 2026-10-08 | 2026-10-12 | S06A-CC-8340 |  | 82.7d |

| ID | WBS | Task | Duration | Start | Finish | Predecessors | Complete | Total float |
| --- | --- | --- | --- | --- | --- | --- | --- | --- |
| S06A-CC-8360 |  | Block-12 -HT & LT Station - Shed Installation | 5d | 2026-10-11 | 2026-10-15 | S06A-CC-8350 FS+3d, S06A-PR-3190 SS |  | 72.7d |
| S06A-CC-8450 |  | Block-12 -HT LT Station - Staircase | 2d | 2026-10-11 | 2026-10-12 | S06A-CC-8350 FS+3d |  | 95.7d |
| S06A-CC-8370 |  | Block-12 -HT & LT Station - Sheeting Installation | 2d | 2026-10-16 | 2026-10-17 | S06A-CC-8360, S06A-PR-3190 SS |  | 72.7d |
| S06A-CC-8520 |  | Block-12 -LT Panel Erection | 6d | 2026-10-26 | 2026-10-31 | S06A-PR-6790, S06A-CC-8370 FS+2d, S06A-EN-1740, S06A-EN-1750, S06A-PR-2390 SS |  | 66.7d |
| S06A-CC-8530 |  | Block-12 -IDT Erection | 5d | 2026-10-26 | 2026-10-30 | S06A-PR-6790, S06A-CC-8340, S06A-PR-2070 SS |  | 63.7d |
| S06A-CC-8580 |  | Block-12 -NIFPS - Installation | 10d | 2026-10-26 | 2026-11-04 | S06A-CC-8390 FS+6d, S06A-EN-1660, S06A-PR-2070 SS |  | 58.7d |
| S06A-CC-8510 |  | Block-12 -HT Panel Erection | 1d | 2026-10-28 | 2026-10-28 | S06A-PR-6790, S06A-CC-8370 SS+2d, S06A-EN-1810, S06A-PR-2230 SS |  | 69.7d |
| S06A-CC-8460 |  | Block-12 -Cable Hanger - Structure & Messenger Wire Erection | 5d | 2026-10-31 | 2026-11-04 | S06A-CC-8170 FF+4d, S06A-CC-8170 SS+4d, S06A-EN-2990, S06A-EN-1530, S06A-PR-3350 SS, S06A-PR-3510 SS, S06A-PR-3670 SS, S06A-PR-3830 SS, S06A-PR-3990 SS |  | 54.7d |
| S06A-CC-8470 |  | Block-12 -LT Cable Laying | 20d | 2026-11-02 | 2026-11-21 | S06A-CC-8460 FF+2d, S06A-CC-8460 SS+2d, S06A-EN-2800, S06A-EN-1920, S06A-EN-1970, S06A-PR-4150 SS |  | 54.7d |
| S06A-CC-8540 |  | Block-12 -Inverter Installation | 7d | 2026-11-03 | 2026-11-09 | S06A-CC-8180 FS+2d, S06A-EN-1610, S06A-PR-1910 SS, S06A-PR-4790 SS, S06A-PR-4950, S06A-PR-5110 SS, S06A-PR-5270 SS |  | 63.7d |
| S06A-CC-8500 |  | Block-12 -Control Cable Laying | 5d | 2026-11-09 | 2026-11-14 | S06A-CC-8550 FF, S06A-CC-8550 SS, S06A-EN-2030, S06A-PR-4310 SS |  | 56d |
| S06A-CC-8550 |  | Block-12 -SCADA & SACU Installation | 5d | 2026-11-09 | 2026-11-14 | S06A-CC-8370, S06A-PR-6330 |  | 56d |
| S06A-CC-8560 |  | Block-12 -ACDB Installation | 2d | 2026-12-16 | 2026-12-17 | S06A-CC-8370, S06A-EN-1760, S06A-PR-6650 SS |  | 22.7d |
| S06A-CC-8570 |  | Block-12 -Aux Transformer - Installation | 4d | 2026-12-16 | 2026-12-19 | S06A-CC-8410 FS+3d, S06A-PR-6650 SS |  | 21.7d |
| S06A-CC-8590 |  | Block-12 -HT Cable Terminations - IDT Side | 2d | 2026-12-16 | 2026-12-17 | S06A-CC-8510, S06A-CC-8490 FF+2d, S06A-CC-8490 SS+2d, S06A-CC-8480 FF+2d, S06A-CC-8480 SS+2d, S06A-CC-8530, S06A-PR-6650 SS |  | 30.7d |
| S06A-CC-8600 |  | Block-12 -LT Cable Terminations - LT Panel to IDT | 7d | 2026-12-16 | 2026-12-22 | S06A-CC-8520 FF+1d, S06A-CC-8470 FF+2d, S06A-CC-8470 SS+2d, S06A-CC-8530, S06A-EN-1850, S06A-PR-6650 SS |  | 25.7d |
| S06A-CC-8610 |  | Block-12 -LT Cable Terminations - Inverter to LT Panel | 7d | 2026-12-16 | 2026-12-22 | S06A-CC-8520 FF+1d, S06A-CC-8470 FF+2d, S06A-CC-8470 SS+2d, S06A-CC-8540 FF+2d, S06A-CC-8540 SS+2d, S06A-PR-6650 SS |  | 25.7d |
| S06A-CC-8440 |  | Block-12 -IDT Area - Gravel Filling | 5d | 2026-12-18 | 2026-12-22 | S06A-CC-8580, S06A-CC-8570 SS+1d, S06A-CC-8560, S06A-CC-8550, S06A-CC-8530, S06A-CC-8520, S06A-CC-8510, S06A-CC-8500, S06A-CC-8410, S06A-CC-8400, S06A-CC-8390, S06A-CC-8380, S06A-CC-8350, S06A-CC-8340 |  | 22.7d |
| S06A-CC-8420 |  | Block-12 -IDT Area - Fencing | 5d | 2026-12-20 | 2026-12-24 | S06A-CC-8440 SS+1d, S06A-CC-8580, S06A-CC-8570, S06A-CC-8560, S06A-CC-8550, S06A-CC-8530, S06A-CC-8520, S06A-CC-8510, S06A-EN-1100, S06A-PR-6490 SS |  | 21.7d |
| S06A-CC-8430 |  | Block-12 -IDT Area - Gate Installation | 1d | 2026-12-25 | 2026-12-25 | S06A-CC-8420, S06A-PR-6490 SS |  | 21.7d |
|  | 3 | **CONSTRUCTION-PV AREA-PRE COMMISSIONING** |  | 2026-10-29 | 2026-12-31 |  |  |  |
| S06A-CC-8640 |  | Block-12 -HT Panel Testing | 1d | 2026-10-29 | 2026-10-29 | S06A-CC-8510 |  | 69.7d |
| S06A-CC-8650 |  | Block-12 -LT Panel Testing | 1d | 2026-11-01 | 2026-11-01 | S06A-CC-8520 |  | 66.7d |
| S06A-CC-8620 |  | Block-12 -IDT Filtration | 3d | 2026-11-05 | 2026-11-07 | S06A-CC-8580, S06A-CC-8530 |  | 58.7d |
| S06A-CC-8630 |  | Block-12 -IDT Testing | 2d | 2026-11-08 | 2026-11-09 | S06A-CC-8620, S06A-EN-1680 |  | 58.7d |
| S06A-CC-8660 |  | Block-12 -Inspection Offer To Asset Commissioning Team | 1d | 2026-12-23 | 2026-12-23 | S06A-CC-8610, S06A-CC-8600, S06A-CC-8590 |  | 25.7d |
| S06A-CC-8670 |  | Block-12 -Punch Point Identification By Asset Commissioning Team | 3d | 2026-12-24 | 2026-12-26 | S06A-CC-8660 |  | 25.7d |
| S06A-CC-8680 |  | Block-12 -Punch Point Rectification And Pre Charging Sign Off | 5d | 2026-12-27 | 2026-12-31 | S06A-CC-8670 |  | 25.7d |
|  | 4 | **CONSTRUCTION-COMMISSIONING** |  | 2026-12-05 | 2027-01-30 |  |  |  |
| S06A-CC-8690 |  | Block-12 -CEA Application | 1d | 2026-12-05 | 2026-12-06 | S06A-CC-8650, S06A-CC-8640, S06A-CC-8630, S06A-PR-6150 |  | 33d |
| S06A-CC-8700 |  | Block-12 -CEA Inspection | 1d | 2026-12-26 | 2026-12-26 | S06A-CC-8450, S06A-CC-8430, S06A-CC-8690 FS+8d |  | 21.7d |
| S06A-CC-8710 |  | Block-12 -CEA Compliance & Approval | 5d | 2026-12-28 | 2027-01-01 | S06A-CC-8700 FS+1d |  | 21.7d |
| S06A-CC-8720 |  | Block-12 -First Time Charging - Application | 1d | 2027-01-12 | 2027-01-12 | S06A-CC-8250, S06A-CC-8290 SS+3d, S06A-CC-8710 |  | 11.7d |
| S06A-CC-8730 |  | Block-12 -First Time Charging - Approval | 2d | 2027-01-13 | 2027-01-14 | S06A-CC-8720 |  | 11.7d |
| S06A-CC-8740 |  | Block-12 -First Time Charging | 1d | 2027-01-15 | 2027-01-15 | S06A-CC-8680, S06A-CC-8730, S06A-CI-1010, PR-CA-23-020, PR-CA-27-014, PR-CA-27-013, PR-CA-16-020 |  | 11.7d |
| S06A-CC-8750 |  | Block-12 -Tracker Commissioning - SCADA | 8d | 2027-01-15 | 2027-01-22 | S06A-CC-8740 SS |  | 16.7d |
| S06A-CC-8760 |  | Block-12 -Robot Commissioning - SCADA | 12d | 2027-01-15 | 2027-01-27 | S06A-CC-8740 SS, S06A-CC-8320 SS+2d, S06A-CC-8310, S06A-CC-8330 FF+1d, S06A-CC-8330 SS+4d, S06A-CC-8720, S06A-CC-8550 |  | 12.7d |
| S06A-CC-8770 |  | Block-12 -Trial Operation | 1d | 2027-01-22 | 2027-01-22 | S06A-CC-8260, S06A-CC-8290 FF, S06A-CC-8740 SS+7d |  | 11.7d |
| S06A-CC-8780 |  | Block-12 -Trial Run Certificate | 1d | 2027-01-25 | 2027-01-25 | S06A-CC-8770 FS+2d |  | 11.7d |
| S06A-CC-8790 |  | Block-12 -COD | 2d | 2027-01-29 | 2027-01-30 | S06A-CC-8760, S06A-CC-8780 FS+2d, S06A-CC-8750, PR-CA-27-010 |  | 11.7d |
|  | 4 | **PHASE-4 (50MW)** |  | 2026-04-02 | 2027-02-26 |  |  |  |
|  | 1 | **BLOCK-13** |  | 2026-04-15 | 2027-02-26 |  |  |  |
|  | 1 | **CONSTRUCTION-PV AREA-DC SIDE** |  | 2026-05-18 | 2027-02-12 |  |  |  |
| S06A-CC-8800 |  | Block-13 -Piling - MMS (Marking, Auguring & Concreting) | 30d | 2026-05-18 A | 2026-10-06 | S06A-PR-1130 SS, S06A-PR-6740 SS, S06A-EN-2240 SS, S06A-EN-1420 SS | 85% | 64.7d |
| S06A-CC-8810 |  | Block-13 -Pile Capping | 20d | 2026-06-09 A | 2026-10-04 | S06A-CC-8800 SS | 85% | 89.7d |
| S06A-CC-8820 |  | Block-13 -Piling - LT Cable Hanger System | 20d | 2026-10-01 | 2026-10-21 | S06A-PR-1450 SS, S06A-CC-8800 FF, S06A-CC-8800 SS, S06A-EN-3000 |  | 64.7d |
| S06A-CC-8830 |  | Block-13 -Piling - Inverters | 16d | 2026-10-01 | 2026-10-17 | S06A-PR-1290 SS, S06A-CC-8800 FF, S06A-CC-8800 SS, S06A-EN-2240 |  | 77.7d |
| S06A-CC-8850 |  | Block-13 -Array Earthing | 25d | 2026-10-01 | 2026-10-26 | S06A-PR-2570 SS, S06A-CC-8800 FF+1d, S06A-CC-8800 SS+7d, S06A-EN-2430 |  | 67.7d |
| S06A-CC-8860 |  | Block-13 -MMS Erection - Torque Tube/Raftar | 28d | 2026-10-01 | 2026-10-29 | S06A-PR-1770 SS, S06A-CC-8850 FF, S06A-CC-8800 FF+14d, S06A-CC-8800 SS, S06A-EN-1490 SS, S06A-EN-1500 SS |  | 64.7d |
| S06A-CC-8870 |  | Block-13 -MMS Erection - Transmission Shaft/Bracing | 27d | 2026-10-03 | 2026-10-29 | S06A-PR-1770 SS, S06A-CC-8860 FF, S06A-CC-8860 SS |  | 68.7d |
| S06A-CC-8880 |  | Block-13 -MMS Erection - Purlin | 27d | 2026-10-03 | 2026-10-29 | S06A-PR-1770 SS+5d, S06A-CC-8810 FF, S06A-CC-8860 FF, S06A-CC-8860 SS |  | 64.7d |
| S06A-CC-8890 |  | Block-13 -MMS - RFI Completion | 27d | 2026-10-07 | 2026-11-02 | S06A-CC-8870 FF, S06A-CC-8880 FF+4d, S06A-CC-8880 SS+4d |  | 64.7d |
| S06A-CC-8840 |  | Block-13 -Piling - Robotic Docking System | 10d | 2026-11-07 | 2026-11-16 | S06A-PR-1610 SS, S06A-CC-8800 FF, S06A-CC-8800 SS |  | 47.7d |
| S06A-CC-8950 |  | Block-13 -Robotic Structure - Docking Station Installation | 10d | 2026-12-16 | 2026-12-25 | S06A-PR-5660 SS, S06A-CC-8840, S06A-CC-8860 FF+2d, S06A-CC-8860 SS+2d, S06A-EN-1310 |  | 18.7d |
| S06A-CC-8960 |  | Block-13 -Robotic Structure - Reverse Station Installation | 10d | 2026-12-16 | 2026-12-25 | S06A-PR-5660 SS, S06A-CC-8840, S06A-CC-8860 FF+2d, S06A-CC-8860 SS+2d |  | 32.7d |
| S06A-CC-8900 |  | Block-13 -Module Installation | 40d | 2026-12-30 | 2027-02-08 | S06A-PR-6180 SS, S06A-CC-8890 FF+12d, S06A-CC-8890 SS+4d, S06A-EN-1630, S06A-EN-2070 |  | -15.3d |
| S06A-CC-8920 |  | Block-13 -DC Cable Laying | 30d | 2026-12-31 | 2027-01-30 | S06A-CC-8900 SS+1d, S06A-PR-5820 SS, S06A-CC-8860 SS+16d |  | 0.7d |
| S06A-CC-8910 |  | Block-13 -Module - RFI Completion | 40d | 2027-01-03 | 2027-02-12 | S06A-CC-8900 FF+4d, S06A-CC-8900 SS+4d |  | -9.3d |
| S06A-CC-8980 |  | Block-13 -Robot Installation | 30d | 2027-01-11 | 2027-02-10 | S06A-PR-5490 SS, S06A-CC-8950 FF+4d, S06A-CC-8950 SS+4d, S06A-CC-8900 FF+2d, S06A-CC-8900 SS+2d, S06A-EN-1550 |  | -3.3d |
| S06A-CC-8930 |  | Block-13 -Module Interconnection & MC4 Termination | 25d | 2027-01-15 | 2027-02-09 | S06A-CC-8900 FF+1d, S06A-PR-5980 SS, S06A-CC-8920 FF+2d, S06A-CC-8920 SS+2d |  | -7.3d |
| S06A-CC-8940 |  | Block-13 -VOC Testing | 22d | 2027-01-20 | 2027-02-11 | S06A-CC-8900 FF+2d, S06A-CC-9190, S06A-CC-8930 FF+2d, S06A-CC-8930 SS+2d |  | -7.3d |
| S06A-CC-8970 |  | Block-13 -Robotic Structure - Bridges Installation | 20d | 2027-01-20 | 2027-02-09 | S06A-PR-5660 SS, S06A-CC-8900 FF+1d, S06A-CC-8900 SS+2d |  | 5.7d |
|  | 2 | **CONSTRUCTION-PV AREA-AC SIDE** |  | 2026-04-15 | 2027-01-01 |  |  |  |
| S06A-CC-8990 |  | Block-13 -IDT Foundation Up To Rail | 21d | 2026-04-15 A | 2026-10-07 | S06A-PR-3050 SS, S06A-PR-2730 SS, S06A-EN-1070 SS | 75% | 60.7d |
| S06A-CC-9000 |  | Block-13 -HT & LT Station - Slab | 15d | 2026-05-02 A | 2026-10-08 | S06A-PR-2890 SS, S06A-PR-2730, S06A-EN-1170 SS, S06A-EN-1180 | 62% | 71.7d |
| S06A-CC-9030 |  | Block-13 -IDT Foundation - Grade Slab Casting & Dyke Wall | 9d | 2026-06-16 A | 2026-10-03 | S06A-CC-8990 | 80% | 97.7d |
| S06A-CC-9100 |  | Block-13 -HT LT Station - Staircase | 2d | 2026-10-01 | 2026-10-03 | S06A-CC-9000 SS |  | 104.7d |
| S06A-CC-9130 |  | Block-13 -HT Cable Laying | 7d | 2026-10-01 | 2026-10-08 | S06A-PR-4490 SS+4d, S06A-EN-1940 |  | 98.7d |
| S06A-CC-9140 |  | Block-13 -FO Cable Laying | 7d | 2026-10-01 | 2026-10-08 | S06A-PR-4650, S06A-CC-9130 FF, S06A-CC-9130 SS, S06A-EN-1960 |  | 98.7d |
| S06A-CC-9040 |  | Block-13 -NIFPS Foundation | 10d | 2026-10-08 | 2026-10-17 | S06A-CC-8990, S06A-EN-1090 |  | 60.7d |

| ID | WBS | Task | Duration | Start | Finish | Predecessors | Complete | Total float |
| --- | --- | --- | --- | --- | --- | --- | --- | --- |
| S06A-CC-9050 |  | Block-13 -BOT Foundation | 10d | 2026-10-08 | 2026-10-17 | S06A-CC-8990 |  | 83.7d |
| S06A-CC-9060 |  | Block-13 -Aux Transformer Foundation | 5d | 2026-10-08 | 2026-10-12 | S06A-CC-8990 |  | 82.7d |
| S06A-CC-9010 |  | Block-13 -HT & LT Station - Shed Installation | 5d | 2026-10-12 | 2026-10-16 | S06A-PR-3210 SS, S06A-CC-9000 FS+3d |  | 71.7d |
| S06A-CC-9020 |  | Block-13 -HT & LT Station - Sheeting Installation | 2d | 2026-10-17 | 2026-10-18 | S06A-PR-3210 SS, S06A-CC-9010 |  | 71.7d |
| S06A-CC-9110 |  | Block-13 -Cable Hanger - Structure & Messenger Wire Erection | 5d | 2026-10-21 | 2026-10-25 | S06A-PR-4010 SS, S06A-PR-3850 SS, S06A-PR-3530 SS, S06A-PR-3370 SS, S06A-PR-3690 SS, S06A-CC-8820 FF+4d, S06A-CC-8820 SS+4d, S06A-EN-3000, S06A-EN-1530 |  | 64.7d |
| S06A-CC-9120 |  | Block-13 -LT Cable Laying | 20d | 2026-10-23 | 2026-11-11 | S06A-PR-4170 SS, S06A-CC-9110 FF+2d, S06A-CC-9110 SS+2d, S06A-EN-2810, S06A-EN-1920, S06A-EN-1970 |  | 64.7d |
| S06A-CC-9170 |  | Block-13 -LT Panel Erection | 6d | 2026-10-31 | 2026-11-05 | S06A-PR-2410 SS, S06A-PR-6790, S06A-CC-9020 FS+2d, S06A-EN-1740, S06A-EN-1750 |  | 61.7d |
| S06A-CC-9160 |  | Block-13 -HT Panel Erection | 1d | 2026-11-02 | 2026-11-02 | S06A-PR-2250 SS, S06A-PR-6790, S06A-CC-9020 SS+2d, S06A-EN-1810 |  | 64.7d |
| S06A-CC-9190 |  | Block-13 -Inverter Installation | 7d | 2026-11-04 | 2026-11-10 | S06A-PR-5290 SS, S06A-PR-5130 SS, S06A-PR-4970 SS, S06A-PR-4810 SS, S06A-PR-1930 SS, S06A-CC-8830 FS+2d, S06A-EN-1610 |  | 62.7d |
| S06A-CC-9180 |  | Block-13 -IDT Erection | 5d | 2026-11-10 | 2026-11-14 | S06A-PR-2090 SS, S06A-PR-6790, S06A-CC-8990 |  | 48.7d |
| S06A-CC-9230 |  | Block-13 -NIFPS - Installation | 10d | 2026-11-10 | 2026-11-19 | S06A-PR-2090 SS, S06A-CC-9040 FS+6d, S06A-EN-1660 |  | 43.7d |
| S06A-CC-9150 |  | Block-13 -Control Cable Laying | 5d | 2026-11-14 | 2026-11-19 | S06A-PR-4330 SS, S06A-CC-9200 FF, S06A-CC-9200 SS, S06A-EN-2030 |  | 51d |
| S06A-CC-9200 |  | Block-13 -SCADA & SACU Installation | 5d | 2026-11-14 | 2026-11-19 | S06A-PR-6350, S06A-CC-9020 |  | 51d |
| S06A-CC-9210 |  | Block-13 -ACDB Installation | 2d | 2026-12-21 | 2026-12-22 | S06A-PR-6670 SS, S06A-CC-9020, S06A-EN-1760 |  | 17.7d |
| S06A-CC-9240 |  | Block-13 -HT Cable Terminations - IDT Side | 2d | 2026-12-21 | 2026-12-22 | S06A-CC-9160, S06A-PR-6670 SS, S06A-CC-9140 FF+2d, S06A-CC-9140 SS+2d, S06A-CC-9130 FF+2d, S06A-CC-9130 SS+2d, S06A-CC-9180 |  | 25.7d |
| S06A-CC-9250 |  | Block-13 -LT Cable Terminations - LT Panel to IDT | 7d | 2026-12-21 | 2026-12-27 | S06A-CC-9170 FF+1d, S06A-PR-6670 SS, S06A-CC-9120 FF+2d, S06A-CC-9120 SS+2d, S06A-CC-9180, S06A-EN-1850 |  | 20.7d |
| S06A-CC-9260 |  | Block-13 -LT Cable Terminations - Inverter to LT Panel | 7d | 2026-12-21 | 2026-12-27 | S06A-CC-9170 FF+1d, S06A-PR-6670 SS, S06A-CC-9120 FF+2d, S06A-CC-9120 SS+2d, S06A-CC-9190 FF+2d, S06A-CC-9190 SS+2d |  | 20.7d |
| S06A-CC-9220 |  | Block-13 -Aux Transformer - Installation | 4d | 2026-12-22 | 2026-12-26 | S06A-PR-6670 SS+2d, S06A-CC-9060 FS+3d |  | 15d |
| S06A-CC-9090 |  | Block-13 -IDT Area - Gravel Filling | 5d | 2026-12-23 | 2026-12-28 | S06A-CC-9230, S06A-CC-9220 SS+1d, S06A-CC-9210, S06A-CC-9200, S06A-CC-9180, S06A-CC-9170, S06A-CC-9160, S06A-CC-9150, S06A-CC-9060, S06A-CC-9050, S06A-CC-9040, S06A-CC-9030, S06A-CC-9000, S06A-CC-8990 |  | 17d |
| S06A-CC-9070 |  | Block-13 -IDT Area - Fencing | 5d | 2026-12-26 | 2026-12-31 | S06A-PR-6510 SS, S06A-CC-9090 SS+1d, S06A-CC-9230, S06A-CC-9220, S06A-CC-9210, S06A-CC-9200, S06A-CC-9180, S06A-CC-9170, S06A-CC-9160, S06A-EN-1100 |  | 15d |
| S06A-CC-9080 |  | Block-13 -IDT Area - Gate Installation | 1d | 2026-12-31 | 2027-01-01 | S06A-PR-6510 SS, S06A-CC-9070 |  | 15d |
|  | 3 | **CONSTRUCTION-PV AREA-PRE COMMISSIONING** |  | 2026-11-03 | 2027-01-05 |  |  |  |
| S06A-CC-9290 |  | Block-13 -HT Panel Testing | 1d | 2026-11-03 | 2026-11-03 | S06A-CC-9160 |  | 64.7d |
| S06A-CC-9300 |  | Block-13 -LT Panel Testing | 1d | 2026-11-06 | 2026-11-06 | S06A-CC-9170 |  | 61.7d |
| S06A-CC-9270 |  | Block-13 -IDT Filtration | 3d | 2026-11-20 | 2026-11-22 | S06A-CC-9230, S06A-CC-9180 |  | 43.7d |
| S06A-CC-9280 |  | Block-13 -IDT Testing | 2d | 2026-11-23 | 2026-11-24 | S06A-CC-9270, S06A-EN-1680 |  | 43.7d |
| S06A-CC-9310 |  | Block-13 -Inspection Offer To Asset Commissioning Team | 1d | 2026-12-28 | 2026-12-28 | S06A-CC-9260, S06A-CC-9250, S06A-CC-9240 |  | 20.7d |
| S06A-CC-9320 |  | Block-13 -Punch Point Identification By Asset Commissioning Team | 3d | 2026-12-29 | 2026-12-31 | S06A-CC-9310 |  | 20.7d |
| S06A-CC-9330 |  | Block-13 -Punch Point Rectification And Pre Charging Sign Off | 5d | 2027-01-01 | 2027-01-05 | S06A-CC-9320 |  | 20.7d |
|  | 4 | **CONSTRUCTION-COMMISSIONING** |  | 2027-01-01 | 2027-02-26 |  |  |  |
| S06A-CC-9340 |  | Block-13 -CEA Application | 1d | 2027-01-01 | 2027-01-02 | S06A-PR-6180, S06A-CC-9300, S06A-CC-9290, S06A-CC-9280 |  | 6d |
| S06A-CC-9350 |  | Block-13 -CEA Inspection | 1d | 2027-01-10 | 2027-01-11 | S06A-CC-9100, S06A-CC-9080, S06A-CC-9340 FS+8d |  | 6d |
| S06A-CC-9360 |  | Block-13 -CEA Compliance & Approval | 5d | 2027-01-12 | 2027-01-17 | S06A-CC-9350 FS+1d |  | 6d |
| S06A-CC-9370 |  | Block-13 -First Time Charging - Application | 1d | 2027-02-09 | 2027-02-09 | S06A-CC-8900, S06A-CC-8940 SS+3d, S06A-CC-9360 |  | -15.3d |
| S06A-CC-9380 |  | Block-13 -First Time Charging - Approval | 2d | 2027-02-10 | 2027-02-11 | S06A-CC-9370 |  | -15.3d |
| S06A-CC-9390 |  | Block-13 -First Time Charging | 1d | 2027-02-12 | 2027-02-12 | S06A-CC-9330, S06A-CC-9380, S06A-CI-1010, PR-CA-23-020, PR-CA-27-014, PR-CA-27-013, PR-CA-16-020 |  | -15.3d |
| S06A-CC-9400 |  | Block-13 -Tracker Commissioning - SCADA | 8d | 2027-02-12 | 2027-02-19 | S06A-CC-9390 SS |  | -10.3d |
| S06A-CC-9410 |  | Block-13 -Robot Commissioning - SCADA | 12d | 2027-02-12 | 2027-02-23 | S06A-CC-9390 SS, S06A-CC-8970 SS+2d, S06A-CC-8960, S06A-CC-8980 FF+2d, S06A-CC-8980 SS+4d, S06A-CC-9370, S06A-CC-9200 |  | -14.3d |
| S06A-CC-9420 |  | Block-13 -Trial Operation | 1d | 2027-02-19 | 2027-02-19 | S06A-CC-8910, S06A-CC-8940 FF, S06A-CC-9390 SS+7d |  | -15.3d |
| S06A-CC-9430 |  | Block-13 -Trial Run Certificate | 1d | 2027-02-22 | 2027-02-22 | S06A-CC-9420 FS+2d |  | -15.3d |
| S06A-CC-9440 |  | Block-13 -COD | 2d | 2027-02-25 | 2027-02-26 | S06A-CC-9410, S06A-CC-9430 FS+2d, S06A-CC-9400, PR-CA-27-010 |  | -15.3d |
|  | 2 | **BLOCK-14** |  | 2026-04-10 | 2027-02-26 |  |  |  |
|  | 1 | **CONSTRUCTION-PV AREA-DC SIDE** |  | 2026-06-25 | 2027-02-12 |  |  |  |
| S06A-CC-9450 |  | Block-14 -Piling - MMS (Marking, Auguring & Concreting) | 30d | 2026-06-25 A | 2026-10-07 | S06A-PR-1130 SS, S06A-PR-6740 SS, S06A-EN-2250 SS, S06A-EN-1420 SS | 80% | 53.9d |
| S06A-CC-9460 |  | Block-14 -Pile Capping | 30d | 2026-06-25 A | 2026-10-13 | S06A-CC-9450 FF+6d, S06A-CC-9450 SS+6d | 70% | 83.7d |
| S06A-CC-9470 |  | Block-14 -Piling - LT Cable Hanger System | 20d | 2026-10-01 | 2026-10-21 | S06A-CC-9450 FF, S06A-CC-9450 SS, S06A-PR-1450 SS, S06A-EN-3010 |  | 64.7d |
| S06A-CC-9480 |  | Block-14 -Piling - Inverters | 16d | 2026-10-01 | 2026-10-17 | S06A-CC-9450 FF, S06A-CC-9450 SS, S06A-PR-1290 SS, S06A-EN-2250 |  | 77.7d |
| S06A-CC-9500 |  | Block-14 -Array Earthing | 25d | 2026-10-01 | 2026-10-27 | S06A-CC-9450 FF+1d, S06A-CC-9450 SS+6d, S06A-PR-2570 SS, S06A-EN-2440 |  | 64.9d |
| S06A-CC-9510 |  | Block-14 -MMS Erection - Torque Tube/Raftar | 28d | 2026-10-10 | 2026-11-07 | S06A-CC-9450 FF+13d, S06A-CC-9450 SS+14d, S06A-PR-1770 SS, S06A-CC-9500 FF, S06A-EN-1490, S06A-EN-1500 |  | 53.9d |
| S06A-CC-9520 |  | Block-14 -MMS Erection - Transmission Shaft/Bracing | 28d | 2026-10-14 | 2026-11-11 | S06A-CC-9510 FF+4d, S06A-CC-9510 SS+4d, S06A-PR-1770 SS |  | 57.9d |
| S06A-CC-9530 |  | Block-14 -MMS Erection - Purlin | 29d | 2026-10-14 | 2026-11-12 | S06A-CC-9510 FF+4d, S06A-CC-9510 SS+4d, S06A-PR-1770 SS, S06A-CC-9460 FF |  | 53.9d |
| S06A-CC-9540 |  | Block-14 -MMS - RFI Completion | 29d | 2026-10-17 | 2026-11-15 | S06A-CC-9530 FF+3d, S06A-CC-9530 SS+1d, S06A-CC-9520 FF |  | 53.9d |
| S06A-CC-9490 |  | Block-14 -Piling - Robotic Docking System | 10d | 2026-11-07 | 2026-11-16 | S06A-CC-9450 FF, S06A-CC-9450 SS, S06A-PR-1610 SS |  | 47.7d |
| S06A-CC-9600 |  | Block-14 -Robotic Structure - Docking Station Installation | 10d | 2026-12-16 | 2026-12-25 | S06A-CC-9510 FF+2d, S06A-CC-9510 SS+2d, S06A-PR-5660 SS, S06A-CC-9490, S06A-EN-1310 |  | 18.7d |
| S06A-CC-9610 |  | Block-14 -Robotic Structure - Reverse Station Installation | 10d | 2026-12-16 | 2026-12-25 | S06A-CC-9510 FF+2d, S06A-CC-9510 SS+2d, S06A-PR-5660 SS, S06A-CC-9490 |  | 32.7d |
| S06A-CC-9550 |  | Block-14 -Module Installation | 40d | 2026-12-30 | 2027-02-08 | S06A-CC-9540 FF+12d, S06A-CC-9540 SS+4d, S06A-PR-6180 SS, S06A-EN-1630, S06A-EN-2070 |  | -15.3d |
| S06A-CC-9570 |  | Block-14 -DC Cable Laying | 30d | 2026-12-31 | 2027-01-30 | S06A-CC-9550 SS+1d, S06A-PR-5820 SS, S06A-CC-9510 SS+16d |  | 0.7d |
| S06A-CC-9560 |  | Block-14 -Module - RFI Completion | 40d | 2027-01-03 | 2027-02-12 | S06A-CC-9550 FF+4d, S06A-CC-9550 SS+4d |  | -9.3d |
| S06A-CC-9630 |  | Block-14 -Robot Installation | 30d | 2027-01-11 | 2027-02-10 | S06A-CC-9550 FF+2d, S06A-CC-9550 SS+2d, S06A-PR-5490 SS, S06A-CC-9600 FF+4d, S06A-CC-9600 SS+4d, S06A-EN-1550 |  | -3.3d |
| S06A-CC-9580 |  | Block-14 -Module Interconnection & MC4 Termination | 25d | 2027-01-15 | 2027-02-09 | S06A-CC-9570 FF+2d, S06A-CC-9570 SS+2d, S06A-CC-9550 FF+1d, S06A-PR-5980 SS |  | -7.3d |
| S06A-CC-9590 |  | Block-14 -VOC Testing | 22d | 2027-01-20 | 2027-02-11 | S06A-CC-9580 FF+2d, S06A-CC-9580 SS+2d, S06A-CC-9550 FF+2d, S06A-CC-9840 |  | -7.3d |
| S06A-CC-9620 |  | Block-14 -Robotic Structure - Bridges Installation | 20d | 2027-01-20 | 2027-02-09 | S06A-CC-9550 FF+1d, S06A-CC-9550 SS+2d, S06A-PR-5660 SS |  | 5.7d |
|  | 2 | **CONSTRUCTION-PV AREA-AC SIDE** |  | 2026-04-10 | 2027-01-01 |  |  |  |
| S06A-CC-9640 |  | Block-14 -IDT Foundation Up To Rail | 21d | 2026-04-10 A | 2026-10-07 | S06A-PR-3050 SS, S06A-PR-2730 SS, S06A-EN-1070 SS | 75% | 67.7d |
| S06A-CC-9650 |  | Block-14 -HT & LT Station - Slab | 15d | 2026-05-02 A | 2026-07-10 A | S06A-PR-2890 SS, S06A-PR-2730 SS, S06A-EN-1170 SS, S06A-EN-1180 SS | 100% |  |
| S06A-CC-9680 |  | Block-14 -IDT Foundation - Grade Slab Casting & Dyke Wall | 9d | 2026-06-30 A | 2026-10-08 | S06A-CC-9640 SS | 80% | 92.7d |
| S06A-CC-9660 |  | Block-14 -HT & LT Station - Shed Installation | 4d | 2026-10-01 | 2026-10-05 | S06A-CC-9650, S06A-PR-3210 SS |  | 82.7d |
| S06A-CC-9690 |  | Block-14 -NIFPS Foundation | 9d | 2026-10-01 | 2026-10-10 | S06A-CC-9640 SS, S06A-EN-1090 |  | 67.7d |
| S06A-CC-9700 |  | Block-14 -BOT Foundation | 9d | 2026-10-01 | 2026-10-10 | S06A-CC-9640 SS |  | 90.7d |
| S06A-CC-9710 |  | Block-14 -Aux Transformer Foundation | 5d | 2026-10-01 | 2026-10-06 | S06A-CC-9640 SS |  | 88.7d |

| ID | WBS | Task | Duration | Start | Finish | Predecessors | Complete | Total float |
| --- | --- | --- | --- | --- | --- | --- | --- | --- |
| S06A-CC-9780 |  | Block-14 -HT Cable Laying | 7d | 2026-10-01 | 2026-10-08 | S06A-PR-4490 SS+4d, S06A-EN-1940 |  | 98.7d |
| S06A-CC-9790 |  | Block-14 -FO Cable Laying | 7d | 2026-10-01 | 2026-10-08 | S06A-CC-9780 FF, S06A-CC-9780 SS, S06A-PR-4650, S06A-EN-1960 |  | 98.7d |
| S06A-CC-9750 |  | Block-14 -HT LT Station - Staircase | 2d | 2026-10-05 | 2026-10-06 | S06A-CC-9650 FS+3d |  | 101.7d |
| S06A-CC-9670 |  | Block-14 -HT & LT Station - Sheeting Installation | 2d | 2026-10-06 | 2026-10-07 | S06A-PR-3210 SS, S06A-CC-9660 SS+4d |  | 82.7d |
| S06A-CC-9760 |  | Block-14 -Cable Hanger - Structure & Messenger Wire Erection | 5d | 2026-10-21 | 2026-10-25 | S06A-CC-9470 FF+4d, S06A-CC-9470 SS+4d, S06A-PR-4010 SS, S06A-PR-3850 SS, S06A-PR-3530 SS, S06A-PR-3370 SS, S06A-PR-3690 SS, S06A-EN-3010, S06A-EN-1530 |  | 64.7d |
| S06A-CC-9770 |  | Block-14 -LT Cable Laying | 20d | 2026-10-23 | 2026-11-11 | S06A-CC-9760 FF+2d, S06A-CC-9760 SS+2d, S06A-PR-4170 SS, S06A-EN-2820, S06A-EN-1920, S06A-EN-1970 |  | 64.7d |
| S06A-CC-9820 |  | Block-14 -LT Panel Erection | 6d | 2026-10-31 | 2026-11-05 | S06A-CC-9670 FS+2d, S06A-PR-2410 SS, S06A-PR-6790, S06A-EN-1740, S06A-EN-1750 |  | 61.7d |
| S06A-CC-9810 |  | Block-14 -HT Panel Erection | 1d | 2026-11-02 | 2026-11-02 | S06A-CC-9670 SS+2d, S06A-PR-2250 SS, S06A-PR-6790, S06A-EN-1810 |  | 64.7d |
| S06A-CC-9840 |  | Block-14 -Inverter Installation | 7d | 2026-11-04 | 2026-11-10 | S06A-CC-9480 FS+2d, S06A-PR-5290 SS, S06A-PR-5130 SS, S06A-PR-4970 SS, S06A-PR-4810 SS, S06A-PR-1930 SS, S06A-EN-1610 |  | 62.7d |
| S06A-CC-9830 |  | Block-14 -IDT Erection | 5d | 2026-11-10 | 2026-11-14 | S06A-CC-9640, S06A-PR-2090 SS, S06A-PR-6790 |  | 48.7d |
| S06A-CC-9880 |  | Block-14 -NIFPS - Installation | 10d | 2026-11-10 | 2026-11-19 | S06A-CC-9690 FS+6d, S06A-PR-2090 SS, S06A-EN-1660 |  | 43.7d |
| S06A-CC-9800 |  | Block-14 -Control Cable Laying | 5d | 2026-11-14 | 2026-11-19 | S06A-CC-9850 FF, S06A-CC-9850 SS, S06A-PR-4330 SS, S06A-EN-2030 |  | 51d |
| S06A-CC-9850 |  | Block-14 -SCADA & SACU Installation | 5d | 2026-11-14 | 2026-11-19 | S06A-CC-9670, S06A-PR-6350 |  | 51d |
| S06A-CC-9860 |  | Block-14 -ACDB Installation | 2d | 2026-12-21 | 2026-12-22 | S06A-CC-9670, S06A-PR-6670 SS, S06A-EN-1760 |  | 17.7d |
| S06A-CC-9890 |  | Block-14 -HT Cable Terminations - IDT Side | 2d | 2026-12-21 | 2026-12-22 | S06A-CC-9830, S06A-CC-9810, S06A-PR-6670 SS, S06A-CC-9790 FF+2d, S06A-CC-9790 SS+2d, S06A-CC-9780 FF+2d, S06A-CC-9780 SS+2d |  | 25.7d |
| S06A-CC-9900 |  | Block-14 -LT Cable Terminations - LT Panel to IDT | 7d | 2026-12-21 | 2026-12-27 | S06A-CC-9830, S06A-CC-9820 FF+1d, S06A-PR-6670 SS, S06A-CC-9770 FF+2d, S06A-CC-9770 SS+2d, S06A-EN-1850 |  | 20.7d |
| S06A-CC-9910 |  | Block-14 -LT Cable Terminations - Inverter to LT Panel | 7d | 2026-12-21 | 2026-12-27 | S06A-CC-9840 FF+2d, S06A-CC-9840 SS+2d, S06A-CC-9820 FF+1d, S06A-PR-6670 SS, S06A-CC-9770 FF+2d, S06A-CC-9770 SS+2d |  | 20.7d |
| S06A-CC-9870 |  | Block-14 -Aux Transformer - Installation | 4d | 2026-12-22 | 2026-12-26 | S06A-CC-9710 FS+3d, S06A-PR-6670 SS+2d |  | 15d |
| S06A-CC-9740 |  | Block-14 -IDT Area - Gravel Filling | 5d | 2026-12-23 | 2026-12-28 | S06A-CC-9800, S06A-CC-9710, S06A-CC-9700, S06A-CC-9690, S06A-CC-9680, S06A-CC-9650, S06A-CC-9640, S06A-CC-9880, S06A-CC-9870 SS+1d, S06A-CC-9860, S06A-CC-9850, S06A-CC-9830, S06A-CC-9820, S06A-CC-9810 |  | 17d |
| S06A-CC-9720 |  | Block-14 -IDT Area - Fencing | 5d | 2026-12-26 | 2026-12-31 | S06A-CC-9740 SS+1d, S06A-CC-9880, S06A-CC-9870, S06A-CC-9860, S06A-CC-9850, S06A-CC-9830, S06A-CC-9820, S06A-CC-9810, S06A-PR-6510 SS, S06A-EN-1100 |  | 15d |
| S06A-CC-9730 |  | Block-14 -IDT Area - Gate Installation | 1d | 2026-12-31 | 2027-01-01 | S06A-CC-9720, S06A-PR-6510 SS |  | 15d |
|  | 3 | **CONSTRUCTION-PV AREA-PRE COMMISSIONING** |  | 2026-11-03 | 2027-01-05 |  |  |  |
| S06A-CC-9940 |  | Block-14 -HT Panel Testing | 1d | 2026-11-03 | 2026-11-03 | S06A-CC-9810 |  | 64.7d |
| S06A-CC-9950 |  | Block-14 -LT Panel Testing | 1d | 2026-11-06 | 2026-11-06 | S06A-CC-9820 |  | 61.7d |
| S06A-CC-9920 |  | Block-14 -IDT Filtration | 3d | 2026-11-20 | 2026-11-22 | S06A-CC-9830, S06A-CC-9880 |  | 43.7d |
| S06A-CC-9930 |  | Block-14 -IDT Testing | 2d | 2026-11-23 | 2026-11-24 | S06A-CC-9920, S06A-EN-1680 |  | 43.7d |
| S06A-CC-9960 |  | Block-14 -Inspection Offer To Asset Commissioning Team | 1d | 2026-12-28 | 2026-12-28 | S06A-CC-9910, S06A-CC-9900, S06A-CC-9890 |  | 20.7d |
| S06A-CC-9970 |  | Block-14 -Punch Point Identification By Asset Commissioning Team | 3d | 2026-12-29 | 2026-12-31 | S06A-CC-9960 |  | 20.7d |
| S06A-CC-9980 |  | Block-14 -Punch Point Rectification And Pre Charging Sign Off | 5d | 2027-01-01 | 2027-01-05 | S06A-CC-9970 |  | 20.7d |
|  | 4 | **CONSTRUCTION-COMMISSIONING** |  | 2027-01-01 | 2027-02-26 |  |  |  |
| S06A-CC-10090 |  | Block-14 -CEA Application | 1d | 2027-01-01 | 2027-01-02 | S06A-PR-6180, S06A-CC-9950, S06A-CC-9940, S06A-CC-9930 |  | 6d |
| S06A-CC-9990 |  | Block-14 -CEA Inspection | 1d | 2027-01-10 | 2027-01-11 | S06A-CC-9750, S06A-CC-9730, S06A-CC-10090 FS+8d |  | 6d |
| S06A-CC-10000 |  | Block-14 -CEA Compliance & Approval | 5d | 2027-01-12 | 2027-01-17 | S06A-CC-9990 FS+1d |  | 6d |
| S06A-CC-10010 |  | Block-14 -First Time Charging - Application | 1d | 2027-02-09 | 2027-02-09 | S06A-CC-9550, S06A-CC-9590 SS+3d, S06A-CC-10000 |  | -15.3d |
| S06A-CC-10020 |  | Block-14 -First Time Charging - Approval | 2d | 2027-02-10 | 2027-02-11 | S06A-CC-10010 |  | -15.3d |
| S06A-CC-10030 |  | Block-14 -First Time Charging | 1d | 2027-02-12 | 2027-02-12 | S06A-CC-9980, S06A-CC-10020, S06A-CI-1010, PR-CA-27-014, PR-CA-27-013 |  | -15.3d |
| S06A-CC-10040 |  | Block-14 -Tracker Commissioning - SCADA | 8d | 2027-02-12 | 2027-02-19 | S06A-CC-10030 SS |  | -10.3d |
| S06A-CC-10050 |  | Block-14 -Robot Commissioning - SCADA | 12d | 2027-02-12 | 2027-02-23 | S06A-CC-10030 SS, S06A-CC-9620 SS+2d, S06A-CC-9610, S06A-CC-9630 FF+2d, S06A-CC-9630 SS+4d, S06A-CC-10010, S06A-CC-9850 |  | -14.3d |
| S06A-CC-10060 |  | Block-14 -Trial Operation | 1d | 2027-02-19 | 2027-02-19 | S06A-CC-9560, S06A-CC-9590 FF, S06A-CC-10030 SS+7d |  | -15.3d |
| S06A-CC-10070 |  | Block-14 -Trial Run Certificate | 1d | 2027-02-22 | 2027-02-22 | S06A-CC-10060 FS+2d |  | -15.3d |
| S06A-CC-10080 |  | Block-14 -COD | 2d | 2027-02-25 | 2027-02-26 | S06A-CC-10050, S06A-CC-10070 FS+2d, S06A-CC-10040, PR-CA-27-010 |  | -15.3d |
|  | 3 | **BLOCK-15** |  | 2026-04-02 | 2027-02-26 |  |  |  |
|  | 1 | **CONSTRUCTION-PV AREA-DC SIDE** |  | 2026-06-26 | 2027-02-12 |  |  |  |
| S06A-CC-10100 |  | Block-15 -Piling - MMS (Marking, Auguring & Concreting) | 30d | 2026-06-26 A | 2026-10-06 | S06A-PR-1130 SS+0.89d, S06A-PR-6740 FS+0.89d, S06A-EN-2260 FS+0.89d, S06A-EN-1420 FS+0.89d, PR-LM-A-010 FS+1d | 83% | 51.9d |
| S06A-CC-10120 |  | Block-15 -Piling - LT Cable Hanger System | 20d | 2026-10-01 | 2026-10-21 | S06A-PR-1450 SS, S06A-CC-10100 FF, S06A-CC-10100 SS, S06A-EN-3020 |  | 87.7d |
| S06A-CC-10130 |  | Block-15 -Piling - Inverters | 16d | 2026-10-01 | 2026-10-17 | S06A-PR-1290 SS, S06A-CC-10100 FF, S06A-CC-10100 SS, S06A-EN-2260 |  | 77.7d |
| S06A-CC-10110 |  | Block-15 -Pile Capping | 30d | 2026-10-04 | 2026-11-03 | S06A-CC-10100 FF+7d, S06A-CC-10100 SS+7d |  | 60.9d |
| S06A-CC-10150 |  | Block-15 -Array Earthing | 25d | 2026-10-04 | 2026-10-29 | S06A-PR-2570 SS, S06A-CC-10100 FF+1d, S06A-CC-10100 SS+7d, S06A-EN-2450 |  | 61.9d |
| S06A-CC-10160 |  | Block-15 -MMS Erection - Torque Tube/Raftar | 28d | 2026-10-11 | 2026-11-08 | S06A-PR-1770 SS, S06A-CC-10150 FF, S06A-CC-10100 FF+14d, S06A-CC-10100 SS+14d, S06A-EN-1490, S06A-EN-1500 |  | 51.9d |
| S06A-CC-10170 |  | Block-15 -MMS Erection - Transmission Shaft/Bracing | 28d | 2026-10-15 | 2026-11-12 | S06A-PR-1770 SS, S06A-CC-10160 FF+4d, S06A-CC-10160 SS+4d |  | 55.9d |
| S06A-CC-10180 |  | Block-15 -MMS Erection - Purlin | 28d | 2026-10-15 | 2026-11-12 | S06A-PR-1770 SS, S06A-CC-10110 FF, S06A-CC-10160 FF+4d, S06A-CC-10160 SS+4d |  | 51.9d |
| S06A-CC-10190 |  | Block-15 -MMS - RFI Completion | 28d | 2026-10-19 | 2026-11-16 | S06A-CC-10170 FF, S06A-CC-10180 FF+4d, S06A-CC-10180 SS+4d |  | 51.9d |
| S06A-CC-10140 |  | Block-15 -Piling - Robotic Docking System | 10d | 2026-11-07 | 2026-11-16 | S06A-PR-1610 SS, S06A-CC-10100 FF, S06A-CC-10100 SS |  | 47.7d |
| S06A-CC-10250 |  | Block-15 -Robotic Structure - Docking Station Installation | 10d | 2026-12-16 | 2026-12-25 | S06A-PR-5660 SS, S06A-CC-10140, S06A-CC-10160 FF+2d, S06A-CC-10160 SS+2d, S06A-EN-1310 |  | 18.7d |
| S06A-CC-10260 |  | Block-15 -Robotic Structure - Reverse Station Installation | 10d | 2026-12-16 | 2026-12-25 | S06A-PR-5660 SS, S06A-CC-10140, S06A-CC-10160 FF+2d, S06A-CC-10160 SS+2d |  | 32.7d |
| S06A-CC-10200 |  | Block-15 -Module Installation | 40d | 2026-12-30 | 2027-02-08 | S06A-PR-6180 SS, S06A-CC-10190 FF+12d, S06A-CC-10190 SS+4d, S06A-EN-1630, S06A-EN-2070 |  | -15.3d |
| S06A-CC-10220 |  | Block-15 -DC Cable Laying | 30d | 2026-12-31 | 2027-01-30 | S06A-CC-10200 SS+1d, S06A-PR-5820 SS, S06A-CC-10160 SS+16d |  | 0.7d |
| S06A-CC-10210 |  | Block-15 -Module - RFI Completion | 40d | 2027-01-03 | 2027-02-12 | S06A-CC-10200 FF+4d, S06A-CC-10200 SS+4d |  | -9.3d |
| S06A-CC-10280 |  | Block-15 -Robot Installation | 30d | 2027-01-11 | 2027-02-10 | S06A-CC-10250 FF+4d, S06A-CC-10250 SS+4d, S06A-PR-5490 SS, S06A-CC-10200 FF+2d, S06A-CC-10200 SS+2d, S06A-EN-1550 |  | -3.3d |
| S06A-CC-10230 |  | Block-15 -Module Interconnection & MC4 Termination | 25d | 2027-01-15 | 2027-02-09 | S06A-CC-10200 FF+1d, S06A-PR-5980 SS, S06A-CC-10220 FF+2d, S06A-CC-10220 SS+2d |  | -7.3d |
| S06A-CC-10240 |  | Block-15 -VOC Testing | 22d | 2027-01-20 | 2027-02-11 | S06A-CC-10200 FF+2d, S06A-CC-10490, S06A-CC-10230 FF+2d, S06A-CC-10230 SS+2d |  | -7.3d |
| S06A-CC-10270 |  | Block-15 -Robotic Structure - Bridges Installation | 20d | 2027-01-20 | 2027-02-09 | S06A-PR-5660 SS, S06A-CC-10200 FF+1d, S06A-CC-10200 SS+2d |  | 5.7d |
|  | 2 | **CONSTRUCTION-PV AREA-AC SIDE** |  | 2026-04-02 | 2027-01-01 |  |  |  |
| S06A-CC-10290 |  | Block-15 -IDT Foundation Up To Rail | 21d | 2026-04-02 A | 2026-10-07 | S06A-PR-3050 SS, S06A-PR-2730, S06A-EN-1070 | 75% | 61.7d |
| S06A-CC-10300 |  | Block-15 -HT & LT Station - Slab | 15d | 2026-05-02 A | 2026-10-01 | S06A-PR-2730 FS+15d, S06A-EN-1170 SS, S06A-EN-1180 SS | 62% | 78.7d |
| S06A-CC-10330 |  | Block-15 -IDT Foundation - Grade Slab Casting & Dyke Wall | 9d | 2026-05-20 A | 2026-10-03 | S06A-CC-10290 | 80% | 97.7d |
| S06A-CC-10410 |  | Block-15 -Cable Hanger - Structure & Messenger Wire Erection | 5d | 2026-10-01 | 2026-10-06 | S06A-PR-4010 SS, S06A-PR-3850 SS, S06A-PR-3530 SS, S06A-PR-3370 SS, S06A-PR-3690 SS, S06A-CC-10120 SS, S06A-EN-3020, S06A-EN-1530 |  | 87.7d |
| S06A-CC-10420 |  | Block-15 -LT Cable Laying | 18d | 2026-10-01 | 2026-10-19 | S06A-PR-4170 SS, S06A-CC-10410 FF+2d, S06A-CC-10410 SS, S06A-EN-2830, S06A-EN-1920, S06A-EN-1970 |  | 87.7d |
| S06A-CC-10430 |  | Block-15 -HT Cable Laying | 7d | 2026-10-01 | 2026-10-08 | S06A-PR-4490 SS+4d, S06A-EN-1940 |  | 98.7d |
| S06A-CC-10440 |  | Block-15 -FO Cable Laying | 7d | 2026-10-01 | 2026-10-08 | S06A-PR-4650, S06A-CC-10430 FF, S06A-CC-10430 SS, S06A-EN-1960 |  | 98.7d |

| ID | WBS | Task | Duration | Start | Finish | Predecessors | Complete | Total float |
| --- | --- | --- | --- | --- | --- | --- | --- | --- |
| S06A-CC-10310 |  | Block-15 -HT & LT Station - Shed Installation | 5d | 2026-10-05 | 2026-10-09 | S06A-PR-3210 SS, S06A-CC-10300 FS+3d |  | 78.7d |
| S06A-CC-10400 |  | Block-15 -HT LT Station - Staircase | 1d | 2026-10-06 | 2026-10-06 | S06A-CC-10300 FS+4d |  | 101.7d |
| S06A-CC-10340 |  | Block-15 -NIFPS Foundation | 9d | 2026-10-08 | 2026-10-16 | S06A-CC-10290, S06A-EN-1090 |  | 61.7d |
| S06A-CC-10350 |  | Block-15 -BOT Foundation | 9d | 2026-10-08 | 2026-10-16 | S06A-CC-10290 |  | 84.7d |
| S06A-CC-10360 |  | Block-15 -Aux Transformer Foundation | 5d | 2026-10-08 | 2026-10-12 | S06A-CC-10290 |  | 82.7d |
| S06A-CC-10320 |  | Block-15 -HT & LT Station - Sheeting Installation | 2d | 2026-10-10 | 2026-10-11 | S06A-PR-3210 SS, S06A-CC-10310 |  | 78.7d |
| S06A-CC-10470 |  | Block-15 -LT Panel Erection | 6d | 2026-10-31 | 2026-11-05 | S06A-PR-2410 SS, S06A-PR-6790, S06A-CC-10320 FS+2d, S06A-EN-1740, S06A-EN-1750 |  | 61.7d |
| S06A-CC-10460 |  | Block-15 -HT Panel Erection | 1d | 2026-11-02 | 2026-11-02 | S06A-PR-2250 SS, S06A-PR-6790, S06A-CC-10320 SS+2d, S06A-EN-1810 |  | 64.7d |
| S06A-CC-10490 |  | Block-15 -Inverter Installation | 7d | 2026-11-04 | 2026-11-10 | S06A-PR-5290 SS, S06A-PR-5130 SS, S06A-PR-4970 SS, S06A-PR-4810 SS, S06A-PR-1930 SS, S06A-CC-10130 FS+2d, S06A-EN-1610 |  | 62.7d |
| S06A-CC-10480 |  | Block-15 -IDT Erection | 5d | 2026-11-10 | 2026-11-14 | S06A-PR-2090 SS, S06A-PR-6790, S06A-CC-10290 |  | 48.7d |
| S06A-CC-10530 |  | Block-15 -NIFPS - Installation | 10d | 2026-11-10 | 2026-11-19 | S06A-PR-2090 SS, S06A-CC-10340 FS+6d, S06A-EN-1660 |  | 43.7d |
| S06A-CC-10450 |  | Block-15 -Control Cable Laying | 5d | 2026-11-14 | 2026-11-19 | S06A-PR-4330 SS, S06A-CC-10500 FF, S06A-CC-10500 SS, S06A-EN-2030 |  | 51d |
| S06A-CC-10500 |  | Block-15 -SCADA & SACU Installation | 5d | 2026-11-14 | 2026-11-19 | S06A-PR-6350, S06A-CC-10320 |  | 51d |
| S06A-CC-10510 |  | Block-15 -ACDB Installation | 2d | 2026-12-21 | 2026-12-22 | S06A-PR-6670 SS, S06A-CC-10320, S06A-EN-1760 |  | 17.7d |
| S06A-CC-10540 |  | Block-15 -HT Cable Terminations - IDT Side | 2d | 2026-12-21 | 2026-12-22 | S06A-CC-10460, S06A-PR-6670 SS, S06A-CC-10440 FF+2d, S06A-CC-10440 SS+2d, S06A-CC-10430 FF+2d, S06A-CC-10430 SS+2d, S06A-CC-10480 |  | 25.7d |
| S06A-CC-10550 |  | Block-15 -LT Cable Terminations - LT Panel to IDT | 7d | 2026-12-21 | 2026-12-27 | S06A-CC-10470 FF+1d, S06A-PR-6670 SS, S06A-CC-10420 FF+2d, S06A-CC-10420 SS+2d, S06A-CC-10480, S06A-EN-1850 |  | 20.7d |
| S06A-CC-10560 |  | Block-15 -LT Cable Terminations - Inverter to LT Panel | 7d | 2026-12-21 | 2026-12-27 | S06A-CC-10470 FF+1d, S06A-PR-6670 SS, S06A-CC-10420 FF+2d, S06A-CC-10420 SS+2d, S06A-CC-10490 FF+2d, S06A-CC-10490 SS+2d |  | 20.7d |
| S06A-CC-10520 |  | Block-15 -Aux Transformer - Installation | 4d | 2026-12-22 | 2026-12-26 | S06A-PR-6670 SS+2d, S06A-CC-10360 FS+3d |  | 15d |
| S06A-CC-10390 |  | Block-15 -IDT Area - Gravel Filling | 5d | 2026-12-23 | 2026-12-28 | S06A-CC-10530, S06A-CC-10520 SS+1d, S06A-CC-10510, S06A-CC-10500, S06A-CC-10480, S06A-CC-10470, S06A-CC-10460, S06A-CC-10450, S06A-CC-10360, S06A-CC-10350, S06A-CC-10340, S06A-CC-10330, S06A-CC-10300, S06A-CC-10290 |  | 17d |
| S06A-CC-10370 |  | Block-15 -IDT Area - Fencing | 5d | 2026-12-26 | 2026-12-31 | S06A-PR-6510 SS, S06A-CC-10390 SS+1d, S06A-CC-10530, S06A-CC-10520, S06A-CC-10510, S06A-CC-10500, S06A-CC-10480, S06A-CC-10470, S06A-CC-10460, S06A-EN-1100 |  | 15d |
| S06A-CC-10380 |  | Block-15 -IDT Area - Gate Installation | 1d | 2026-12-31 | 2027-01-01 | S06A-PR-6510 SS, S06A-CC-10370 |  | 15d |
|  | 3 | **CONSTRUCTION-PV AREA-PRE COMMISSIONING** |  | 2026-11-03 | 2027-01-05 |  |  |  |
| S06A-CC-10590 |  | Block-15 -HT Panel Testing | 1d | 2026-11-03 | 2026-11-03 | S06A-CC-10460 |  | 64.7d |
| S06A-CC-10600 |  | Block-15 -LT Panel Testing | 1d | 2026-11-06 | 2026-11-06 | S06A-CC-10470 |  | 61.7d |
| S06A-CC-10570 |  | Block-15 -IDT Filtration | 3d | 2026-11-20 | 2026-11-22 | S06A-CC-10530, S06A-CC-10480 |  | 43.7d |
| S06A-CC-10580 |  | Block-15 -IDT Testing | 2d | 2026-11-23 | 2026-11-24 | S06A-CC-10570, S06A-EN-1680 |  | 43.7d |
| S06A-CC-10610 |  | Block-15 -Inspection Offer To Asset Commissioning Team | 1d | 2026-12-28 | 2026-12-28 | S06A-CC-10560, S06A-CC-10550, S06A-CC-10540 |  | 20.7d |
| S06A-CC-10620 |  | Block-15 -Punch Point Identification By Asset Commissioning Team | 3d | 2026-12-29 | 2026-12-31 | S06A-CC-10610 |  | 20.7d |
| S06A-CC-10630 |  | Block-15 -Punch Point Rectification And Pre Charging Sign Off | 5d | 2027-01-01 | 2027-01-05 | S06A-CC-10620 |  | 20.7d |
|  | 4 | **CONSTRUCTION-COMMISSIONING** |  | 2027-01-01 | 2027-02-26 |  |  |  |
| S06A-CC-10640 |  | Block-15 -CEA Application | 1d | 2027-01-01 | 2027-01-02 | S06A-PR-6180, S06A-CC-10600, S06A-CC-10590, S06A-CC-10580 |  | 6d |
| S06A-CC-10650 |  | Block-15 -CEA Inspection | 1d | 2027-01-10 | 2027-01-11 | S06A-CC-10400, S06A-CC-10380, S06A-CC-10640 FS+8d |  | 6d |
| S06A-CC-10660 |  | Block-15 -CEA Compliance & Approval | 5d | 2027-01-12 | 2027-01-17 | S06A-CC-10650 FS+1d |  | 6d |
| S06A-CC-10670 |  | Block-15 -First Time Charging - Application | 1d | 2027-02-09 | 2027-02-09 | S06A-CC-10200, S06A-CC-10240 SS+3d, S06A-CC-10660 |  | -15.3d |
| S06A-CC-10680 |  | Block-15 -First Time Charging - Approval | 2d | 2027-02-10 | 2027-02-11 | S06A-CC-10670 |  | -15.3d |
| S06A-CC-10690 |  | Block-15 -First Time Charging | 1d | 2027-02-12 | 2027-02-12 | S06A-CC-10630, S06A-CC-10680, S06A-CI-1010, PR-CA-23-020, PR-CA-27-014, PR-CA-27-013, PR-CA-16-020 |  | -15.3d |
| S06A-CC-10700 |  | Block-15 -Tracker Commissioning - SCADA | 8d | 2027-02-12 | 2027-02-19 | S06A-CC-10690 SS |  | -10.3d |
| S06A-CC-10710 |  | Block-15 -Robot Commissioning - SCADA | 12d | 2027-02-12 | 2027-02-23 | S06A-CC-10690 SS, S06A-CC-10270 SS+2d, S06A-CC-10260, S06A-CC-10280 FF+2d, S06A-CC-10280 SS+4d, S06A-CC-10670, S06A-CC-10500 |  | -14.3d |
| S06A-CC-10720 |  | Block-15 -Trial Operation | 1d | 2027-02-19 | 2027-02-19 | S06A-CC-10210, S06A-CC-10240 FF, S06A-CC-10690 SS+7d |  | -15.3d |
| S06A-CC-10730 |  | Block-15 -Trial Run Certificate | 1d | 2027-02-22 | 2027-02-22 | S06A-CC-10720 FS+2d |  | -15.3d |
| S06A-CC-10740 |  | Block-15 -COD | 2d | 2027-02-25 | 2027-02-26 | S06A-CC-10710, S06A-CC-10730 FS+2d, S06A-CC-10700, PR-CA-27-010 |  | -15.3d |
|  | 4 | **BLOCK-16** |  | 2026-04-08 | 2027-02-26 |  |  |  |
|  | 1 | **CONSTRUCTION-PV AREA-DC SIDE** |  | 2026-05-18 | 2027-02-12 |  |  |  |
| S06A-CC-10750 |  | Block-16 -Piling - MMS (Marking, Auguring & Concreting) | 30d | 2026-05-18 A | 2026-10-08 | S06A-PR-1130 SS+1d, S06A-PR-6740, S06A-EN-2270, S06A-EN-1420, PR-LM-A-010 | 78% | 61.7d |
| S06A-CC-10760 |  | Block-16 -Pile Capping | 30d | 2026-06-07 A | 2026-10-15 | S06A-CC-10750 FF+7d, S06A-CC-10750 SS+7d | 75% | 79.7d |
| S06A-CC-10770 |  | Block-16 -Piling - LT Cable Hanger System | 20d | 2026-10-01 | 2026-10-21 | S06A-PR-1450 SS, S06A-CC-10750 FF, S06A-CC-10750 SS, S06A-EN-3030 |  | 64.7d |
| S06A-CC-10780 |  | Block-16 -Piling - Inverters | 16d | 2026-10-01 | 2026-10-17 | S06A-PR-1290 SS, S06A-CC-10750 FF, S06A-CC-10750 SS, S06A-EN-2270 |  | 77.7d |
| S06A-CC-10800 |  | Block-16 -Array Earthing | 25d | 2026-10-01 | 2026-10-26 | S06A-PR-2570 SS, S06A-CC-10750 FF+1d, S06A-CC-10750 SS+7d, S06A-EN-2460 |  | 64.7d |
| S06A-CC-10810 |  | Block-16 -MMS Erection - Torque Tube/Raftar | 28d | 2026-10-01 | 2026-10-29 | S06A-PR-1770 SS, S06A-CC-10800 FF, S06A-CC-10750 FF+14d, S06A-CC-10750 SS+14d, S06A-EN-1490, S06A-EN-1500 |  | 61.7d |
| S06A-CC-10820 |  | Block-16 -MMS Erection - Transmission Shaft/Bracing | 28d | 2026-10-06 | 2026-11-02 | S06A-PR-1770 SS, S06A-CC-10810 FF+4d, S06A-CC-10810 SS+4d |  | 65.7d |
| S06A-CC-10830 |  | Block-16 -MMS Erection - Purlin | 28d | 2026-10-06 | 2026-11-02 | S06A-PR-1770 SS, S06A-CC-10760 FF, S06A-CC-10810 FF+4d, S06A-CC-10810 SS+4d |  | 61.7d |
| S06A-CC-10840 |  | Block-16 -MMS - RFI Completion | 28d | 2026-10-10 | 2026-11-06 | S06A-CC-10820 FF, S06A-CC-10830 FF+4d, S06A-CC-10830 SS+4d |  | 61.7d |
| S06A-CC-10790 |  | Block-16 -Piling - Robotic Docking System | 10d | 2026-11-07 | 2026-11-16 | S06A-PR-1610 SS, S06A-CC-10750 FF, S06A-CC-10750 SS |  | 47.7d |
| S06A-CC-10900 |  | Block-16 -Robotic Structure - Docking Station Installation | 10d | 2026-12-16 | 2026-12-25 | S06A-PR-5660 SS, S06A-CC-10790, S06A-CC-10810 FF+2d, S06A-CC-10810 SS+2d, S06A-EN-1310 |  | 18.7d |
| S06A-CC-10910 |  | Block-16 -Robotic Structure - Reverse Station Installation | 10d | 2026-12-16 | 2026-12-25 | S06A-PR-5660 SS, S06A-CC-10790, S06A-CC-10810 FF+2d, S06A-CC-10810 SS+2d |  | 32.7d |
| S06A-CC-10850 |  | Block-16 -Module Installation | 40d | 2026-12-30 | 2027-02-08 | S06A-PR-6180 SS, S06A-CC-10840 FF+12d, S06A-CC-10840 SS+4d, S06A-EN-1630, S06A-EN-2070 |  | -15.3d |
| S06A-CC-10870 |  | Block-16 -DC Cable Laying | 30d | 2026-12-31 | 2027-01-30 | S06A-CC-10850 SS+1d, S06A-PR-5820 SS, S06A-CC-10810 SS+16d |  | 0.7d |
| S06A-CC-10860 |  | Block-16 -Module - RFI Completion | 40d | 2027-01-03 | 2027-02-12 | S06A-CC-10850 FF+4d, S06A-CC-10850 SS+4d |  | -9.3d |
| S06A-CC-10930 |  | Block-16 -Robot Installation | 30d | 2027-01-11 | 2027-02-10 | S06A-CC-10900 FF+4d, S06A-CC-10900 SS+4d, S06A-CC-10850 FF+2d, S06A-CC-10850 SS+2d, S06A-PR-5490 SS, S06A-EN-1550 |  | -3.3d |
| S06A-CC-10880 |  | Block-16 -Module Interconnection & MC4 Termination | 25d | 2027-01-15 | 2027-02-09 | S06A-CC-10850 FF+1d, S06A-PR-5980 SS, S06A-CC-10870 FF+2d, S06A-CC-10870 SS+2d |  | -7.3d |
| S06A-CC-10890 |  | Block-16 -VOC Testing | 22d | 2027-01-20 | 2027-02-11 | S06A-CC-10850 FF+2d, S06A-CC-11140, S06A-CC-10880 FF+2d, S06A-CC-10880 SS+2d |  | -7.3d |
| S06A-CC-10920 |  | Block-16 -Robotic Structure - Bridges Installation | 20d | 2027-01-20 | 2027-02-09 | S06A-PR-5660 SS, S06A-CC-10850 FF+1d, S06A-CC-10850 SS+2d |  | 5.7d |
|  | 2 | **CONSTRUCTION-PV AREA-AC SIDE** |  | 2026-04-08 | 2027-01-01 |  |  |  |
| S06A-CC-10940 |  | Block-16 -IDT Foundation Up To Rail | 21d | 2026-04-08 A | 2026-10-07 | S06A-PR-3050 SS, S06A-PR-2730 SS+9d, S06A-EN-1070 | 75% | 60.7d |
| S06A-CC-10950 |  | Block-16 -HT & LT Station - Slab | 15d | 2026-05-02 A | 2026-07-12 A | S06A-PR-2890 SS, S06A-PR-2730, S06A-EN-1170, S06A-EN-1180 | 100% |  |
| S06A-CC-10980 |  | Block-16 -IDT Foundation - Grade Slab Casting & Dyke Wall | 9d | 2026-05-08 A | 2026-10-03 | S06A-CC-10940 | 80% | 97.7d |
| S06A-CC-11080 |  | Block-16 -HT Cable Laying | 7d | 2026-10-01 | 2026-10-08 | S06A-PR-4490 SS+4d, S06A-EN-1940 |  | 98.7d |
| S06A-CC-11090 |  | Block-16 -FO Cable Laying | 7d | 2026-10-01 | 2026-10-08 | S06A-PR-4650, S06A-CC-11080 FF, S06A-CC-11080 SS, S06A-EN-1960 |  | 98.7d |
| S06A-CC-10960 |  | Block-16 -HT & LT Station - Shed Installation | 5d | 2026-10-05 | 2026-10-09 | S06A-PR-3210 SS, S06A-CC-10950 FS+3d |  | 78.7d |
| S06A-CC-11050 |  | Block-16 -HT LT Station - Staircase | 2d | 2026-10-05 | 2026-10-06 | S06A-CC-10950 FS+3d |  | 101.7d |

| ID | WBS | Task | Duration | Start | Finish | Predecessors | Complete | Total float |
| --- | --- | --- | --- | --- | --- | --- | --- | --- |
| S06A-CC-10990 |  | Block-16 -NIFPS Foundation | 10d | 2026-10-08 | 2026-10-17 | S06A-CC-10940, S06A-EN-1090 |  | 60.7d |
| S06A-CC-11000 |  | Block-16 -BOT Foundation | 10d | 2026-10-08 | 2026-10-17 | S06A-CC-10940 |  | 83.7d |
| S06A-CC-11010 |  | Block-16 -Aux Transformer Foundation | 5d | 2026-10-08 | 2026-10-12 | S06A-CC-10940 |  | 82.7d |
| S06A-CC-10970 |  | Block-16 -HT & LT Station - Sheeting Installation | 2d | 2026-10-10 | 2026-10-11 | S06A-PR-3210 SS, S06A-CC-10960 |  | 78.7d |
| S06A-CC-11060 |  | Block-16 -Cable Hanger - Structure & Messenger Wire Erection | 5d | 2026-10-21 | 2026-10-25 | S06A-PR-4010 SS, S06A-PR-3850 SS, S06A-PR-3530 SS, S06A-PR-3370 SS, S06A-PR-3690 SS, S06A-CC-10770 FF+4d, S06A-CC-10770 SS+4d, S06A-EN-3030, S06A-EN-1530 |  | 64.7d |
| S06A-CC-11070 |  | Block-16 -LT Cable Laying | 20d | 2026-10-23 | 2026-11-11 | S06A-PR-4170 SS, S06A-CC-11060 FF+2d, S06A-CC-11060 SS+2d, S06A-EN-2840, S06A-EN-1920, S06A-EN-1970 |  | 64.7d |
| S06A-CC-11120 |  | Block-16 -LT Panel Erection | 6d | 2026-10-31 | 2026-11-05 | S06A-PR-2410 SS, S06A-PR-6790, S06A-CC-10970 FS+2d, S06A-EN-1740, S06A-EN-1750 |  | 61.7d |
| S06A-CC-11110 |  | Block-16 -HT Panel Erection | 1d | 2026-11-02 | 2026-11-02 | S06A-PR-2250 SS, S06A-PR-6790, S06A-CC-10970 SS+2d, S06A-EN-1810 |  | 64.7d |
| S06A-CC-11140 |  | Block-16 -Inverter Installation | 7d | 2026-11-04 | 2026-11-10 | S06A-PR-5290 SS, S06A-PR-5130 SS, S06A-PR-4970 SS, S06A-PR-4810 SS, S06A-PR-1930 SS, S06A-CC-10780 FS+2d, S06A-EN-1610 |  | 62.7d |
| S06A-CC-11130 |  | Block-16 -IDT Erection | 5d | 2026-11-10 | 2026-11-14 | S06A-PR-2090 SS, S06A-PR-6790, S06A-CC-10940 |  | 48.7d |
| S06A-CC-11180 |  | Block-16 -NIFPS - Installation | 10d | 2026-11-10 | 2026-11-19 | S06A-PR-2090 SS, S06A-CC-10990 FS+6d, S06A-EN-1660 |  | 43.7d |
| S06A-CC-11100 |  | Block-16 -Control Cable Laying | 5d | 2026-11-14 | 2026-11-19 | S06A-PR-4330 SS, S06A-CC-11150 FF, S06A-CC-11150 SS, S06A-EN-2030 |  | 51d |
| S06A-CC-11150 |  | Block-16 -SCADA & SACU Installation | 5d | 2026-11-14 | 2026-11-19 | S06A-PR-6350, S06A-CC-10970 |  | 51d |
| S06A-CC-11160 |  | Block-16 -ACDB Installation | 2d | 2026-12-21 | 2026-12-22 | S06A-PR-6670 SS, S06A-CC-10970, S06A-EN-1760 |  | 17.7d |
| S06A-CC-11190 |  | Block-16 -HT Cable Terminations - IDT Side | 2d | 2026-12-21 | 2026-12-22 | S06A-CC-11110, S06A-PR-6670 SS, S06A-CC-11090 FF+2d, S06A-CC-11090 SS+2d, S06A-CC-11080 FF+2d, S06A-CC-11080 SS+2d, S06A-CC-11130 |  | 25.7d |
| S06A-CC-11200 |  | Block-16 -LT Cable Terminations - LT Panel to IDT | 7d | 2026-12-21 | 2026-12-27 | S06A-CC-11120 FF+1d, S06A-PR-6670 SS, S06A-CC-11070 FF+2d, S06A-CC-11070 SS+2d, S06A-CC-11130, S06A-EN-1850 |  | 20.7d |
| S06A-CC-11210 |  | Block-16 -LT Cable Terminations - Inverter to LT Panel | 7d | 2026-12-21 | 2026-12-27 | S06A-CC-11120 FF+1d, S06A-PR-6670 SS, S06A-CC-11070 FF+2d, S06A-CC-11070 SS+2d, S06A-CC-11140 FF+2d, S06A-CC-11140 SS+2d |  | 20.7d |
| S06A-CC-11170 |  | Block-16 -Aux Transformer - Installation | 4d | 2026-12-22 | 2026-12-26 | S06A-PR-6670 SS+2d, S06A-CC-11010 FS+3d |  | 15d |
| S06A-CC-11040 |  | Block-16 -IDT Area - Gravel Filling | 5d | 2026-12-23 | 2026-12-28 | S06A-CC-11180, S06A-CC-11170 SS+1d, S06A-CC-11160, S06A-CC-11150, S06A-CC-11130, S06A-CC-11120, S06A-CC-11110, S06A-CC-11100, S06A-CC-11010, S06A-CC-11000, S06A-CC-10990, S06A-CC-10980, S06A-CC-10950, S06A-CC-10940 |  | 17d |
| S06A-CC-11020 |  | Block-16 -IDT Area - Fencing | 5d | 2026-12-26 | 2026-12-31 | S06A-PR-6510 SS, S06A-CC-11040 SS+1d, S06A-CC-11180, S06A-CC-11170, S06A-CC-11160, S06A-CC-11150, S06A-CC-11130, S06A-CC-11120, S06A-CC-11110, S06A-EN-1100 |  | 15d |
| S06A-CC-11030 |  | Block-16 -IDT Area - Gate Installation | 1d | 2026-12-31 | 2027-01-01 | S06A-PR-6510 SS, S06A-CC-11020 |  | 15d |
|  | 3 | **CONSTRUCTION-PV AREA-PRE COMMISSIONING** |  | 2026-11-03 | 2027-01-05 |  |  |  |
| S06A-CC-11240 |  | Block-16 -HT Panel Testing | 1d | 2026-11-03 | 2026-11-03 | S06A-CC-11110 |  | 64.7d |
| S06A-CC-11250 |  | Block-16 -LT Panel Testing | 1d | 2026-11-06 | 2026-11-06 | S06A-CC-11120 |  | 61.7d |
| S06A-CC-11220 |  | Block-16 -IDT Filtration | 3d | 2026-11-20 | 2026-11-22 | S06A-CC-11180, S06A-CC-11130 |  | 43.7d |
| S06A-CC-11230 |  | Block-16 -IDT Testing | 2d | 2026-11-23 | 2026-11-24 | S06A-CC-11220, S06A-EN-1680 |  | 43.7d |
| S06A-CC-11260 |  | Block-16 -Inspection Offer To Asset Commissioning Team | 1d | 2026-12-28 | 2026-12-28 | S06A-CC-11210, S06A-CC-11200, S06A-CC-11190 |  | 20.7d |
| S06A-CC-11270 |  | Block-16 -Punch Point Identification By Asset Commissioning Team | 3d | 2026-12-29 | 2026-12-31 | S06A-CC-11260 |  | 20.7d |
| S06A-CC-11280 |  | Block-16 -Punch Point Rectification And Pre Charging Sign Off | 5d | 2027-01-01 | 2027-01-05 | S06A-CC-11270 |  | 20.7d |
|  | 4 | **CONSTRUCTION-COMMISSIONING** |  | 2027-01-01 | 2027-02-26 |  |  |  |
| S06A-CC-11290 |  | Block-16 -CEA Application | 1d | 2027-01-01 | 2027-01-02 | S06A-PR-6180, S06A-CC-11250, S06A-CC-11240, S06A-CC-11230 |  | 6d |
| S06A-CC-11300 |  | Block-16 -CEA Inspection | 1d | 2027-01-10 | 2027-01-11 | S06A-CC-11050, S06A-CC-11030, S06A-CC-11290 FS+8d |  | 6d |
| S06A-CC-11310 |  | Block-16 -CEA Compliance & Approval | 5d | 2027-01-12 | 2027-01-17 | S06A-CC-11300 FS+1d |  | 6d |
| S06A-CC-11320 |  | Block-16 -First Time Charging - Application | 1d | 2027-02-09 | 2027-02-09 | S06A-CC-10850, S06A-CC-10890 SS+3d, S06A-CC-11310 |  | -15.3d |
| S06A-CC-11330 |  | Block-16 -First Time Charging - Approval | 2d | 2027-02-10 | 2027-02-11 | S06A-CC-11320 |  | -15.3d |
| S06A-CC-11340 |  | Block-16 -First Time Charging | 1d | 2027-02-12 | 2027-02-12 | S06A-CC-11280, S06A-CC-11330, S06A-CI-1010, PR-CA-23-020, PR-CA-27-014, PR-CA-27-013, PR-CA-16-020 |  | -15.3d |
| S06A-CC-11350 |  | Block-16 -Tracker Commissioning - SCADA | 8d | 2027-02-12 | 2027-02-19 | S06A-CC-11340 SS |  | -10.3d |
| S06A-CC-11360 |  | Block-16 -Robot Commissioning - SCADA | 12d | 2027-02-12 | 2027-02-23 | S06A-CC-11340 SS, S06A-CC-10920 SS+2d, S06A-CC-10910, S06A-CC-10930 FF+2d, S06A-CC-10930 SS+4d, S06A-CC-11320, S06A-CC-11150 |  | -14.3d |
| S06A-CC-11370 |  | Block-16 -Trial Operation | 1d | 2027-02-19 | 2027-02-19 | S06A-CC-10860, S06A-CC-10890 FF, S06A-CC-11340 SS+7d |  | -15.3d |
| S06A-CC-11380 |  | Block-16 -Trial Run Certificate | 1d | 2027-02-22 | 2027-02-22 | S06A-CC-11370 FS+2d |  | -15.3d |
| S06A-CC-11390 |  | Block-16 -COD | 2d | 2027-02-25 | 2027-02-26 | S06A-CC-11360, S06A-CC-11380 FS+2d, S06A-CC-11350, PR-CA-27-010 |  | -15.3d |
|  | 5 | **PHASE-5 (34MW)** |  | 2026-04-15 | 2027-02-28 |  |  |  |
|  | 1 | **BLOCK-17** |  | 2026-04-15 | 2027-02-28 |  |  |  |
|  | 1 | **CONSTRUCTION-PV AREA-DC SIDE** |  | 2026-06-25 | 2027-02-19 |  |  |  |
| S06A-CC-11400 |  | Block-17 -Piling - MMS (Marking, Auguring & Concreting) | 29d | 2026-06-25 A | 2026-10-13 | S06A-PR-6740 SS, S06A-EN-2280 SS, S06A-EN-1420 SS, S06A-PR-1150 SS | 61% | 58.7d |
| S06A-CC-11410 |  | Block-17 -Pile Capping | 30d | 2026-10-01 | 2026-10-31 | S06A-CC-11400 FF+6d, S06A-CC-11400 SS+6d |  | 68.7d |
| S06A-CC-11420 |  | Block-17 -Piling - LT Cable Hanger System | 20d | 2026-10-01 | 2026-10-21 | S06A-CC-11400 FF, S06A-CC-11400 SS, S06A-EN-3040, S06A-PR-1470 SS |  | 68.7d |
| S06A-CC-11430 |  | Block-17 -Piling - Inverters | 16d | 2026-10-01 | 2026-10-17 | S06A-CC-11400 FF, S06A-CC-11400 SS, S06A-EN-2280, S06A-PR-1310 SS |  | 77.7d |
| S06A-CC-11450 |  | Block-17 -Array Earthing | 25d | 2026-10-03 | 2026-10-27 | S06A-CC-11400 FF+1d, S06A-CC-11400 SS+7d, S06A-EN-2470, S06A-PR-2590 SS |  | 68.7d |
| S06A-CC-11460 |  | Block-17 -MMS Erection - Torque Tube/Raftar | 28d | 2026-10-10 | 2026-11-06 | S06A-CC-11450 FF, S06A-CC-11400 FF+14d, S06A-CC-11400 SS+14d, S06A-EN-1490, S06A-EN-1500, S06A-PR-1790 SS |  | 58.7d |
| S06A-CC-11470 |  | Block-17 -MMS Erection - Transmission Shaft/Bracing | 28d | 2026-10-14 | 2026-11-10 | S06A-CC-11460 FF+4d, S06A-CC-11460 SS+4d, S06A-PR-1790 SS |  | 62.7d |
| S06A-CC-11480 |  | Block-17 -MMS Erection - Purlin | 28d | 2026-10-14 | 2026-11-10 | S06A-CC-11410 FF, S06A-CC-11460 FF+4d, S06A-CC-11460 SS+4d, S06A-PR-1790 SS |  | 58.7d |
| S06A-CC-11490 |  | Block-17 -MMS - RFI Completion | 28d | 2026-10-18 | 2026-11-14 | S06A-CC-11470 FF, S06A-CC-11480 FF+4d, S06A-CC-11480 SS+4d |  | 58.7d |
| S06A-CC-11440 |  | Block-17 -Piling - Robotic Docking System | 10d | 2026-11-17 | 2026-11-26 | S06A-CC-11400 FF, S06A-CC-11400 SS, S06A-PR-1630 SS |  | 37.7d |
| S06A-CC-11550 |  | Block-17 -Robotic Structure - Docking Station Installation | 10d | 2026-12-17 | 2026-12-26 | S06A-CC-11440, S06A-CC-11460 FF+2d, S06A-CC-11460 SS+2d, S06A-EN-1310, S06A-PR-5680 SS |  | 17.7d |
| S06A-CC-11560 |  | Block-17 -Robotic Structure - Reverse Station Installation | 10d | 2026-12-17 | 2026-12-26 | S06A-CC-11440, S06A-CC-11460 FF+2d, S06A-CC-11460 SS+2d, S06A-PR-5680 SS |  | 35.7d |
| S06A-CC-11500 |  | Block-17 -Module Installation | 39d | 2027-01-06 | 2027-02-14 | S06A-CC-11490 FF+12d, S06A-CC-11490 SS+4d, S06A-EN-1630, S06A-EN-2070, S06A-PR-6210 SS |  | -17.3d |
| S06A-CC-11520 |  | Block-17 -DC Cable Laying | 30d | 2027-01-07 | 2027-02-06 | S06A-CC-11500 SS+1d, S06A-CC-11460 SS+16d, S06A-PR-5840 SS |  | -6.3d |
| S06A-CC-11510 |  | Block-17 -Module - RFI Completion | 40d | 2027-01-10 | 2027-02-19 | S06A-CC-11500 FF+4d, S06A-CC-11500 SS+4d |  | -16.3d |
| S06A-CC-11580 |  | Block-17 -Robot Installation | 30d | 2027-01-17 | 2027-02-16 | S06A-CC-11550 FF+4d, S06A-CC-11550 SS+4d, S06A-CC-11500 FF+2d, S06A-CC-11500 SS+2d, S06A-EN-1550, S06A-PR-5520 SS |  | -9.3d |
| S06A-CC-11530 |  | Block-17 -Module Interconnection & MC4 Termination | 25d | 2027-01-21 | 2027-02-15 | S06A-CC-11500 FF+1d, S06A-CC-11520 FF+2d, S06A-CC-11520 SS+2d, S06A-PR-6000 SS |  | -13.3d |
| S06A-CC-11540 |  | Block-17 -VOC Testing | 22d | 2027-01-27 | 2027-02-17 | S06A-CC-11500 FF+2d, S06A-CC-11790, S06A-CC-11530 FF+2d, S06A-CC-11530 SS+2d |  | -13.3d |
| S06A-CC-11570 |  | Block-17 -Robotic Structure - Bridges Installation | 20d | 2027-01-27 | 2027-02-15 | S06A-CC-11500 FF+1d, S06A-CC-11500 SS+2d, S06A-PR-5680 SS |  | 3.7d |
|  | 2 | **CONSTRUCTION-PV AREA-AC SIDE** |  | 2026-04-15 | 2027-01-10 |  |  |  |
| S06A-CC-11590 |  | Block-17 -IDT Foundation Up To Rail | 21d | 2026-04-15 A | 2026-10-07 | S06A-EN-1070, S06A-PR-2750 SS, S06A-PR-2910 SS, S06A-PR-3070 SS | 75% | 64.7d |
| S06A-CC-11600 |  | Block-17 -HT & LT Station - Slab | 15d | 2026-05-11 A | 2026-10-07 | S06A-EN-1170, S06A-EN-1180, S06A-PR-2750 SS | 62% | 76.7d |
| S06A-CC-11630 |  | Block-17 -IDT Foundation - Grade Slab Casting & Dyke Wall | 9d | 2026-10-08 | 2026-10-16 | S06A-CC-11590 |  | 88.7d |
| S06A-CC-11640 |  | Block-17 -NIFPS Foundation | 10d | 2026-10-08 | 2026-10-17 | S06A-CC-11590, S06A-EN-1090 |  | 64.7d |
| S06A-CC-11650 |  | Block-17 -BOT Foundation | 10d | 2026-10-08 | 2026-10-17 | S06A-CC-11590 |  | 87.7d |
| S06A-CC-11660 |  | Block-17 -Aux Transformer Foundation | 5d | 2026-10-08 | 2026-10-12 | S06A-CC-11590 |  | 86.7d |

| ID | WBS | Task | Duration | Start | Finish | Predecessors | Complete | Total float |
| --- | --- | --- | --- | --- | --- | --- | --- | --- |
| S06A-CC-11700 |  | Block-17 -HT LT Station - Staircase | 2d | 2026-10-08 | 2026-10-09 | S06A-CC-11600 |  | 102.7d |
| S06A-CC-11610 |  | Block-17 -HT & LT Station - Shed Installation | 5d | 2026-10-11 | 2026-10-15 | S06A-CC-11600 FS+3d, S06A-PR-3230 |  | 76.7d |
| S06A-CC-11620 |  | Block-17 -HT & LT Station - Sheeting Installation | 2d | 2026-10-16 | 2026-10-17 | S06A-CC-11610, S06A-PR-3230 |  | 76.7d |
| S06A-CC-11710 |  | Block-17 -Cable Hanger - Structure & Messenger Wire Erection | 5d | 2026-10-21 | 2026-10-25 | S06A-CC-11420 FF+4d, S06A-CC-11420 SS+4d, S06A-EN-3040, S06A-EN-1530, S06A-PR-3390 SS, S06A-PR-3550 SS, S06A-PR-3710 SS, S06A-PR-3870 SS, S06A-PR-4030 SS |  | 68.7d |
| S06A-CC-11720 |  | Block-17 -LT Cable Laying | 20d | 2026-10-23 | 2026-11-11 | S06A-CC-11710 FF+2d, S06A-CC-11710 SS+2d, S06A-EN-2850, S06A-EN-1920, S06A-EN-1970, S06A-PR-4190 SS |  | 68.7d |
| S06A-CC-11730 |  | Block-17 -HT Cable Laying | 7d | 2026-10-23 | 2026-10-29 | S06A-EN-1940, S06A-PR-4510 SS |  | 81.7d |
| S06A-CC-11740 |  | Block-17 -FO Cable Laying | 7d | 2026-10-28 | 2026-11-04 | S06A-CC-11730 FF, S06A-CC-11730 SS, S06A-EN-1960, S06A-PR-4670 |  | 76d |
| S06A-CC-11770 |  | Block-17 -LT Panel Erection | 6d | 2026-11-10 | 2026-11-15 | S06A-PR-6790, S06A-CC-11620 FS+2d, S06A-EN-1740, S06A-EN-1750, S06A-PR-2430 SS |  | 55.7d |
| S06A-CC-11760 |  | Block-17 -HT Panel Erection | 1d | 2026-11-12 | 2026-11-12 | S06A-PR-6790, S06A-CC-11620 SS+2d, S06A-EN-1810, S06A-PR-2270 SS |  | 58.7d |
| S06A-CC-11790 |  | Block-17 -Inverter Installation | 7d | 2026-11-14 | 2026-11-20 | S06A-CC-11430 FS+2d, S06A-EN-1610, S06A-PR-1950 SS, S06A-PR-4830 SS, S06A-PR-4990, S06A-PR-5150 SS, S06A-PR-5310 SS |  | 52.7d |
| S06A-CC-11750 |  | Block-17 -Control Cable Laying | 5d | 2026-11-20 | 2026-11-25 | S06A-CC-11800 FF, S06A-CC-11800 SS, S06A-EN-2030, S06A-PR-4350 SS |  | 49d |
| S06A-CC-11800 |  | Block-17 -SCADA & SACU Installation | 5d | 2026-11-20 | 2026-11-25 | S06A-CC-11620, S06A-PR-6370 |  | 49d |
| S06A-CC-11780 |  | Block-17 -IDT Erection | 5d | 2026-11-25 | 2026-11-29 | S06A-PR-6790, S06A-CC-11590, S06A-PR-2110 SS |  | 37.7d |
| S06A-CC-11830 |  | Block-17 -NIFPS - Installation | 10d | 2026-11-25 | 2026-12-04 | S06A-CC-11640 FS+6d, S06A-EN-1660, S06A-PR-2110 SS |  | 32.7d |
| S06A-CC-11810 |  | Block-17 -ACDB Installation | 2d | 2027-01-01 | 2027-01-02 | S06A-CC-11620, S06A-EN-1760, S06A-PR-6690 SS |  | 10.7d |
| S06A-CC-11820 |  | Block-17 -Aux Transformer - Installation | 4d | 2027-01-01 | 2027-01-04 | S06A-CC-11660 FS+3d, S06A-PR-6690 SS |  | 9.7d |
| S06A-CC-11840 |  | Block-17 -HT Cable Terminations - IDT Side | 2d | 2027-01-01 | 2027-01-02 | S06A-CC-11760, S06A-CC-11740 FF+2d, S06A-CC-11740 SS+2d, S06A-CC-11730 FF+2d, S06A-CC-11730 SS+2d, S06A-CC-11780, S06A-PR-6690 SS |  | 18.7d |
| S06A-CC-11850 |  | Block-17 -LT Cable Terminations - LT Panel to IDT | 7d | 2027-01-01 | 2027-01-07 | S06A-CC-11770 FF+1d, S06A-CC-11720 FF+2d, S06A-CC-11720 SS+2d, S06A-CC-11780, S06A-EN-1850, S06A-PR-6690 SS |  | 13.7d |
| S06A-CC-11860 |  | Block-17 -LT Cable Terminations - Inverter to LT Panel | 7d | 2027-01-01 | 2027-01-07 | S06A-CC-11770 FF+1d, S06A-CC-11720 FF+2d, S06A-CC-11720 SS+2d, S06A-CC-11790 FF+2d, S06A-CC-11790 SS+2d, S06A-PR-6690 SS |  | 13.7d |
| S06A-CC-11690 |  | Block-17 -IDT Area - Gravel Filling | 5d | 2027-01-03 | 2027-01-07 | S06A-CC-11830, S06A-CC-11820 SS+1d, S06A-CC-11810, S06A-CC-11800, S06A-CC-11780, S06A-CC-11770, S06A-CC-11760, S06A-CC-11750, S06A-CC-11660, S06A-CC-11650, S06A-CC-11640, S06A-CC-11630, S06A-CC-11600, S06A-CC-11590 |  | 10.7d |
| S06A-CC-11670 |  | Block-17 -IDT Area - Fencing | 5d | 2027-01-05 | 2027-01-09 | S06A-CC-11690 SS+1d, S06A-CC-11830, S06A-CC-11820, S06A-CC-11810, S06A-CC-11800, S06A-CC-11780, S06A-CC-11770, S06A-CC-11760, S06A-EN-1100, S06A-PR-6530 SS |  | 9.7d |
| S06A-CC-11680 |  | Block-17 -IDT Area - Gate Installation | 1d | 2027-01-10 | 2027-01-10 | S06A-CC-11670, S06A-PR-6530 SS |  | 9.7d |
|  | 3 | **CONSTRUCTION-PV AREA-PRE COMMISSIONING** |  | 2026-11-13 | 2027-01-16 |  |  |  |
| S06A-CC-11890 |  | Block-17 -HT Panel Testing | 1d | 2026-11-13 | 2026-11-13 | S06A-CC-11760 |  | 58.7d |
| S06A-CC-11900 |  | Block-17 -LT Panel Testing | 1d | 2026-11-16 | 2026-11-16 | S06A-CC-11770 |  | 55.7d |
| S06A-CC-11870 |  | Block-17 -IDT Filtration | 3d | 2026-12-05 | 2026-12-07 | S06A-CC-11830, S06A-CC-11780 |  | 32.7d |
| S06A-CC-11880 |  | Block-17 -IDT Testing | 2d | 2026-12-08 | 2026-12-09 | S06A-CC-11870, S06A-EN-1680 |  | 32.7d |
| S06A-CC-11910 |  | Block-17 -Inspection Offer To Asset Commissioning Team | 1d | 2027-01-08 | 2027-01-08 | S06A-CC-11860, S06A-CC-11850, S06A-CC-11840 |  | 13.7d |
| S06A-CC-11920 |  | Block-17 -Punch Point Identification By Asset Commissioning Team | 3d | 2027-01-09 | 2027-01-11 | S06A-CC-11910 |  | 13.7d |
| S06A-CC-11930 |  | Block-17 -Punch Point Rectification And Pre Charging Sign Off | 5d | 2027-01-12 | 2027-01-16 | S06A-CC-11920 |  | 13.7d |
|  | 4 | **CONSTRUCTION-COMMISSIONING** |  | 2027-01-07 | 2027-02-28 |  |  |  |
| S06A-CC-11940 |  | Block-17 -CEA Application | 1d | 2027-01-07 | 2027-01-08 | S06A-CC-11900, S06A-CC-11890, S06A-CC-11880, S06A-PR-6210 |  | 4d |
| S06A-CC-11950 |  | Block-17 -CEA Inspection | 1d | 2027-01-16 | 2027-01-17 | S06A-CC-11700, S06A-CC-11680, S06A-CC-11940 FS+8d |  | 4d |
| S06A-CC-11960 |  | Block-17 -CEA Compliance & Approval | 5d | 2027-01-18 | 2027-01-23 | S06A-CC-11950 FS+1d |  | 4d |
| S06A-CC-11970 |  | Block-17 -First Time Charging - Application | 1d | 2027-02-15 | 2027-02-15 | S06A-CC-11500, S06A-CC-11540 SS+3d, S06A-CC-11960 |  | -17.3d |
| S06A-CC-11980 |  | Block-17 -First Time Charging - Approval | 2d | 2027-02-16 | 2027-02-17 | S06A-CC-11970 |  | -17.3d |
| S06A-CC-11990 |  | Block-17 -First Time Charging | 1d | 2027-02-18 | 2027-02-18 | S06A-CC-11930, S06A-CC-11980, S06A-CI-1010, PR-CA-23-020, PR-CA-27-014, PR-CA-27-013, PR-CA-16-020 |  | -17.3d |
| S06A-CC-12000 |  | Block-17 -Tracker Commissioning - SCADA | 8d | 2027-02-18 | 2027-02-25 | S06A-CC-11990 SS |  | -16.3d |
| S06A-CC-12010 |  | Block-17 -Robot Commissioning - SCADA | 8d | 2027-02-18 | 2027-02-25 | S06A-CC-11990 SS, S06A-CC-11570 SS+2d, S06A-CC-11560, S06A-CC-11580 FF+2d, S06A-CC-11580 SS+4d, S06A-CC-11970, S06A-CC-11800 |  | -16.3d |
| S06A-CC-12020 |  | Block-17 -Trial Operation | 1d | 2027-02-21 | 2027-02-21 | S06A-CC-11510, S06A-CC-11540 FF, S06A-CC-11990 SS+3d |  | -17.3d |
| S06A-CC-12030 |  | Block-17 -Trial Run Certificate | 1d | 2027-02-24 | 2027-02-24 | S06A-CC-12020 FS+2d |  | -17.3d |
| S06A-CC-12040 |  | Block-17 -COD | 2d | 2027-02-27 | 2027-02-28 | S06A-CC-12000, S06A-CC-12010, S06A-CC-12030 FS+2d, PR-CA-27-010 |  | -17.3d |
|  | 2 | **BLOCK-18** |  | 2026-05-11 | 2027-02-28 |  |  |  |
|  | 1 | **CONSTRUCTION-PV AREA-DC SIDE** |  | 2026-10-01 | 2027-02-19 |  |  |  |
| S06A-CC-12050 |  | Block-18 -Piling - MMS (Marking, Auguring & Concreting) | 30d | 2026-10-01 | 2026-10-31 | S06A-PR-6740 SS, S06A-EN-2290 SS, S06A-EN-1420 SS, S06A-PR-1150 SS |  | 50.7d |
| S06A-CC-12060 |  | Block-18 -Pile Capping | 30d | 2026-10-08 | 2026-11-06 | S06A-CC-12050 FF+6d, S06A-CC-12050 SS+6d |  | 62.7d |
| S06A-CC-12100 |  | Block-18 -Array Earthing | 25d | 2026-10-09 | 2026-11-02 | S06A-CC-12050 FF+1d, S06A-CC-12050 SS+7d, S06A-EN-2480, S06A-PR-2590 SS |  | 62.7d |
| S06A-CC-12070 |  | Block-18 -Piling - LT Cable Hanger System | 20d | 2026-10-12 | 2026-10-31 | S06A-CC-12050 FF, S06A-CC-12050 SS, S06A-EN-3050, S06A-PR-1470 SS |  | 58.7d |
| S06A-CC-12080 |  | Block-18 -Piling - Inverters | 16d | 2026-10-16 | 2026-10-31 | S06A-CC-12050 FF, S06A-CC-12050 SS, S06A-EN-2290, S06A-PR-1310 SS |  | 63.7d |
| S06A-CC-12110 |  | Block-18 -MMS Erection - Torque Tube/Raftar | 28d | 2026-10-18 | 2026-11-14 | S06A-CC-12100 FF, S06A-CC-12050 FF+14d, S06A-CC-12050 SS+14d, S06A-EN-1490, S06A-EN-1500, S06A-PR-1790 SF |  | 50.7d |
| S06A-CC-12120 |  | Block-18 -MMS Erection - Transmission Shaft/Bracing | 28d | 2026-10-22 | 2026-11-18 | S06A-CC-12110 FF+4d, S06A-CC-12110 SS+4d, S06A-PR-1790 SS |  | 54.7d |
| S06A-CC-12130 |  | Block-18 -MMS Erection - Purlin | 28d | 2026-10-22 | 2026-11-18 | S06A-CC-12060 FF, S06A-CC-12110 FF+4d, S06A-CC-12110 SS+4d, S06A-PR-1790 SS |  | 50.7d |
| S06A-CC-12140 |  | Block-18 -MMS - RFI Completion | 28d | 2026-10-26 | 2026-11-22 | S06A-CC-12120 FF, S06A-CC-12130 FF+4d, S06A-CC-12130 SS+4d |  | 50.7d |
| S06A-CC-12090 |  | Block-18 -Piling - Robotic Docking System | 10d | 2026-11-17 | 2026-11-26 | S06A-CC-12050 FF, S06A-CC-12050 SS, S06A-PR-1630 SS |  | 37.7d |
| S06A-CC-12200 |  | Block-18 -Robotic Structure - Docking Station Installation | 10d | 2026-12-17 | 2026-12-26 | S06A-CC-12090, S06A-CC-12110 FF+2d, S06A-CC-12110 SS+2d, S06A-EN-1310, S06A-PR-5680 SS |  | 17.7d |
| S06A-CC-12210 |  | Block-18 -Robotic Structure - Reverse Station Installation | 10d | 2026-12-17 | 2026-12-26 | S06A-CC-12090, S06A-CC-12110 FF+2d, S06A-CC-12110 SS+2d, S06A-PR-5680 SS |  | 35.7d |
| S06A-CC-12150 |  | Block-18 -Module Installation | 39d | 2027-01-06 | 2027-02-14 | S06A-CC-12140 FF+12d, S06A-CC-12140 SS+4d, S06A-EN-1630, S06A-EN-2070, S06A-PR-6210 SS |  | -17.3d |
| S06A-CC-12170 |  | Block-18 -DC Cable Laying | 30d | 2027-01-07 | 2027-02-06 | S06A-CC-12150 SS+1d, S06A-CC-12110 SS+16d, S06A-PR-5840 SS |  | -6.3d |
| S06A-CC-12160 |  | Block-18 -Module - RFI Completion | 40d | 2027-01-10 | 2027-02-19 | S06A-CC-12150 FF+4d, S06A-CC-12150 SS+4d |  | -16.3d |
| S06A-CC-12230 |  | Block-18 -Robot Installation | 30d | 2027-01-17 | 2027-02-16 | S06A-CC-12200 FF+4d, S06A-CC-12200 SS+4d, S06A-CC-12150 FF+2d, S06A-CC-12150 SS+2d, S06A-EN-1550, S06A-PR-5520 SS |  | -9.3d |
| S06A-CC-12180 |  | Block-18 -Module Interconnection & MC4 Termination | 25d | 2027-01-21 | 2027-02-15 | S06A-CC-12150 FF+1d, S06A-CC-12170 FF+2d, S06A-CC-12170 SS+2d, S06A-PR-6000 SS |  | -13.3d |
| S06A-CC-12190 |  | Block-18 -VOC Testing | 22d | 2027-01-27 | 2027-02-17 | S06A-CC-12150 FF+2d, S06A-CC-12440, S06A-CC-12180 FF+2d, S06A-CC-12180 SS+2d |  | -13.3d |
| S06A-CC-12220 |  | Block-18 -Robotic Structure - Bridges Installation | 20d | 2027-01-27 | 2027-02-15 | S06A-CC-12150 FF+1d, S06A-CC-12150 SS+2d, S06A-PR-5680 SS |  | 3.7d |
|  | 2 | **CONSTRUCTION-PV AREA-AC SIDE** |  | 2026-05-11 | 2027-01-10 |  |  |  |
| S06A-CC-12240 |  | Block-18 -IDT Foundation Up To Rail | 22d | 2026-05-11 A | 2026-10-07 | S06A-EN-1070, S06A-PR-2750 SS, S06A-PR-2910 SS, S06A-PR-3070 SS | 75% | 64.7d |
| S06A-CC-12250 |  | Block-18 -HT & LT Station - Slab | 15d | 2026-05-11 A | 2026-10-07 | S06A-EN-1170, S06A-EN-1180, S06A-PR-2750 SS, S06A-PR-2910 SS | 62% | 85.7d |
| S06A-CC-12280 |  | Block-18 -IDT Foundation - Grade Slab Casting & Dyke Wall | 5d | 2026-07-08 A | 2026-10-06 | S06A-CC-12240 | 40% | 98.7d |
| S06A-CC-12260 |  | Block-18 -HT & LT Station - Shed Installation | 5d | 2026-10-01 | 2026-10-06 | S06A-CC-12250 SS, S06A-PR-3230 |  | 85.7d |
| S06A-CC-12270 |  | Block-18 -HT & LT Station - Sheeting Installation | 2d | 2026-10-07 | 2026-10-08 | S06A-CC-12260, S06A-PR-3230 |  | 85.7d |
| S06A-CC-12290 |  | Block-18 -NIFPS Foundation | 10d | 2026-10-08 | 2026-10-17 | S06A-CC-12240, S06A-EN-1090 |  | 64.7d |

| ID | WBS | Task | Duration | Start | Finish | Predecessors | Complete | Total float |
| --- | --- | --- | --- | --- | --- | --- | --- | --- |
| S06A-CC-12300 |  | Block-18 -BOT Foundation | 10d | 2026-10-08 | 2026-10-17 | S06A-CC-12240 |  | 87.7d |
| S06A-CC-12310 |  | Block-18 -Aux Transformer Foundation | 5d | 2026-10-08 | 2026-10-12 | S06A-CC-12240 |  | 86.7d |
| S06A-CC-12350 |  | Block-18 -HT LT Station - Staircase | 2d | 2026-10-08 | 2026-10-09 | S06A-CC-12250 |  | 102.7d |
| S06A-CC-12380 |  | Block-18 -HT Cable Laying | 7d | 2026-10-23 | 2026-10-29 | S06A-EN-1940, S06A-PR-4510 SS |  | 81.7d |
| S06A-CC-12390 |  | Block-18 -FO Cable Laying | 7d | 2026-10-28 | 2026-11-04 | S06A-CC-12380 FF, S06A-CC-12380 SS, S06A-EN-1960, S06A-PR-4670 |  | 76d |
| S06A-CC-12360 |  | Block-18 -Cable Hanger - Structure & Messenger Wire Erection | 5d | 2026-10-31 | 2026-11-04 | S06A-CC-12070 FF+4d, S06A-CC-12070 SS+4d, S06A-EN-3050, S06A-EN-1530, S06A-PR-3390 SS, S06A-PR-3550 SS, S06A-PR-3710 SS, S06A-PR-3870 SS, S06A-PR-4030 SS |  | 58.7d |
| S06A-CC-12370 |  | Block-18 -LT Cable Laying | 20d | 2026-11-02 | 2026-11-21 | S06A-CC-12360 FF+2d, S06A-CC-12360 SS+2d, S06A-EN-2860, S06A-EN-1920, S06A-EN-1970, S06A-PR-4190 SS |  | 58.7d |
| S06A-CC-12420 |  | Block-18 -LT Panel Erection | 6d | 2026-11-10 | 2026-11-15 | S06A-PR-6790, S06A-CC-12270 FS+2d, S06A-EN-1740, S06A-EN-1750, S06A-PR-2430 SS |  | 55.7d |
| S06A-CC-12410 |  | Block-18 -HT Panel Erection | 1d | 2026-11-12 | 2026-11-12 | S06A-PR-6790, S06A-CC-12270 SS+2d, S06A-EN-1810, S06A-PR-2270 SS |  | 58.7d |
| S06A-CC-12440 |  | Block-18 -Inverter Installation | 7d | 2026-11-14 | 2026-11-20 | S06A-CC-12080 FS+2d, S06A-EN-1610, S06A-PR-1950 SS, S06A-PR-4830 SS, S06A-PR-4990, S06A-PR-5150 SS, S06A-PR-5310 SS |  | 52.7d |
| S06A-CC-12400 |  | Block-18 -Control Cable Laying | 5d | 2026-11-20 | 2026-11-25 | S06A-CC-12450 FF, S06A-CC-12450 SS, S06A-EN-2030, S06A-PR-4350 SS |  | 49d |
| S06A-CC-12450 |  | Block-18 -SCADA & SACU Installation | 5d | 2026-11-20 | 2026-11-25 | S06A-CC-12270, S06A-PR-6370 |  | 49d |
| S06A-CC-12430 |  | Block-18 -IDT Erection | 5d | 2026-11-25 | 2026-11-29 | S06A-PR-6790, S06A-CC-12240, S06A-PR-2110 SS |  | 37.7d |
| S06A-CC-12480 |  | Block-18 -NIFPS - Installation | 10d | 2026-11-25 | 2026-12-04 | S06A-CC-12290 FS+6d, S06A-EN-1660, S06A-PR-2110 SS |  | 32.7d |
| S06A-CC-12460 |  | Block-18 -ACDB Installation | 2d | 2027-01-01 | 2027-01-02 | S06A-CC-12270, S06A-EN-1760, S06A-PR-6690 SS |  | 10.7d |
| S06A-CC-12470 |  | Block-18 -Aux Transformer - Installation | 4d | 2027-01-01 | 2027-01-04 | S06A-CC-12310 FS+3d, S06A-PR-6690 SS |  | 9.7d |
| S06A-CC-12490 |  | Block-18 -HT Cable Terminations - IDT Side | 2d | 2027-01-01 | 2027-01-02 | S06A-CC-12410, S06A-CC-12390 FF+2d, S06A-CC-12390 SS+2d, S06A-CC-12380 FF+2d, S06A-CC-12380 SS+2d, S06A-CC-12430, S06A-PR-6690 SS |  | 18.7d |
| S06A-CC-12500 |  | Block-18 -LT Cable Terminations - LT Panel to IDT | 7d | 2027-01-01 | 2027-01-07 | S06A-CC-12420 FF+1d, S06A-CC-12370 FF+2d, S06A-CC-12370 SS+2d, S06A-CC-12430, S06A-EN-1850, S06A-PR-6690 SS |  | 13.7d |
| S06A-CC-12510 |  | Block-18 -LT Cable Terminations - Inverter to LT Panel | 7d | 2027-01-01 | 2027-01-07 | S06A-CC-12420 FF+1d, S06A-CC-12370 FF+2d, S06A-CC-12370 SS+2d, S06A-CC-12440 FF+2d, S06A-CC-12440 SS+2d, S06A-PR-6690 SS |  | 13.7d |
| S06A-CC-12340 |  | Block-18 -IDT Area - Gravel Filling | 5d | 2027-01-03 | 2027-01-07 | S06A-CC-12480, S06A-CC-12470 SS+1d, S06A-CC-12460, S06A-CC-12450, S06A-CC-12430, S06A-CC-12420, S06A-CC-12410, S06A-CC-12400, S06A-CC-12310, S06A-CC-12300, S06A-CC-12290, S06A-CC-12280, S06A-CC-12250, S06A-CC-12240 |  | 10.7d |
| S06A-CC-12320 |  | Block-18 -IDT Area - Fencing | 5d | 2027-01-05 | 2027-01-09 | S06A-CC-12340 SS+1d, S06A-CC-12480, S06A-CC-12470, S06A-CC-12460, S06A-CC-12450, S06A-CC-12430, S06A-CC-12420, S06A-CC-12410, S06A-EN-1100, S06A-PR-6530 SS |  | 9.7d |
| S06A-CC-12330 |  | Block-18 -IDT Area - Gate Installation | 1d | 2027-01-10 | 2027-01-10 | S06A-CC-12320, S06A-PR-6530 SS |  | 9.7d |
|  | 3 | **CONSTRUCTION-PV AREA-PRE COMMISSIONING** |  | 2026-11-13 | 2027-01-16 |  |  |  |
| S06A-CC-12540 |  | Block-18 -HT Panel Testing | 1d | 2026-11-13 | 2026-11-13 | S06A-CC-12410 |  | 58.7d |
| S06A-CC-12550 |  | Block-18 -LT Panel Testing | 1d | 2026-11-16 | 2026-11-16 | S06A-CC-12420 |  | 55.7d |
| S06A-CC-12520 |  | Block-18 -IDT Filtration | 3d | 2026-12-05 | 2026-12-07 | S06A-CC-12480, S06A-CC-12430 |  | 32.7d |
| S06A-CC-12530 |  | Block-18 -IDT Testing | 2d | 2026-12-08 | 2026-12-09 | S06A-CC-12520, S06A-EN-1680 |  | 32.7d |
| S06A-CC-12560 |  | Block-18 -Inspection Offer To Asset Commissioning Team | 1d | 2027-01-08 | 2027-01-08 | S06A-CC-12510, S06A-CC-12500, S06A-CC-12490 |  | 13.7d |
| S06A-CC-12570 |  | Block-18 -Punch Point Identification By Asset Commissioning Team | 3d | 2027-01-09 | 2027-01-11 | S06A-CC-12560 |  | 13.7d |
| S06A-CC-12580 |  | Block-18 -Punch Point Rectification And Pre Charging Sign Off | 5d | 2027-01-12 | 2027-01-16 | S06A-CC-12570 |  | 13.7d |
|  | 4 | **CONSTRUCTION-COMMISSIONING** |  | 2027-01-07 | 2027-02-28 |  |  |  |
| S06A-CC-12590 |  | Block-18 -CEA Application | 1d | 2027-01-07 | 2027-01-08 | S06A-CC-12550, S06A-CC-12540, S06A-CC-12530, S06A-PR-6210 |  | 4d |
| S06A-CC-12600 |  | Block-18 -CEA Inspection | 1d | 2027-01-16 | 2027-01-17 | S06A-CC-12350, S06A-CC-12330, S06A-CC-12590 FS+8d |  | 4d |
| S06A-CC-12610 |  | Block-18 -CEA Compliance & Approval | 5d | 2027-01-18 | 2027-01-23 | S06A-CC-12600 FS+1d |  | 4d |
| S06A-CC-12620 |  | Block-18 -First Time Charging - Application | 1d | 2027-02-15 | 2027-02-15 | S06A-CC-12150, S06A-CC-12190 SS+3d, S06A-CC-12610 |  | -17.3d |
| S06A-CC-12630 |  | Block-18 -First Time Charging - Approval | 2d | 2027-02-16 | 2027-02-17 | S06A-CC-12620 |  | -17.3d |
| S06A-CC-12640 |  | Block-18 -First Time Charging | 1d | 2027-02-18 | 2027-02-18 | S06A-CC-12580, S06A-CC-12630, S06A-CI-1010, PR-CA-23-020, PR-CA-27-014, PR-CA-27-013, PR-CA-16-020 |  | -17.3d |
| S06A-CC-12650 |  | Block-18 -Tracker Commissioning - SCADA | 8d | 2027-02-18 | 2027-02-25 | S06A-CC-12640 SS |  | -16.3d |
| S06A-CC-12660 |  | Block-18 -Robot Commissioning - SCADA | 8d | 2027-02-18 | 2027-02-25 | S06A-CC-12640 SS, S06A-CC-12220 SS+2d, S06A-CC-12210, S06A-CC-12230 FF+2d, S06A-CC-12230 SS+4d, S06A-CC-12620, S06A-CC-12450 |  | -16.3d |
| S06A-CC-12670 |  | Block-18 -Trial Operation | 1d | 2027-02-21 | 2027-02-21 | S06A-CC-12160, S06A-CC-12190 FF, S06A-CC-12640 SS+3d |  | -17.3d |
| S06A-CC-12680 |  | Block-18 -Trial Run Certificate | 1d | 2027-02-24 | 2027-02-24 | S06A-CC-12670 FS+2d |  | -17.3d |
| S06A-CC-12690 |  | Block-18 -COD | 2d | 2027-02-27 | 2027-02-28 | S06A-CC-12650, S06A-CC-12660, S06A-CC-12680 FS+2d, PR-CA-27-010 |  | -17.3d |
|  | 3 | **BLOCK-19** |  | 2026-05-11 | 2027-02-28 |  |  |  |
|  | 1 | **CONSTRUCTION-PV AREA-DC SIDE** |  | 2026-08-20 | 2027-02-19 |  |  |  |
| S06A-CC-12700 |  | Block-19 -Piling - MMS (Marking, Auguring & Concreting) | 30d | 2026-08-20 A | 2026-10-28 | S06A-PR-6740 SS, S06A-EN-2300 SS, S06A-EN-1420 SS, S06A-PR-1150 SS | 11% | 52.7d |
| S06A-CC-12710 |  | Block-19 -Pile Capping | 30d | 2026-10-08 | 2026-11-06 | S06A-CC-12700 FF+6d, S06A-CC-12700 SS+6d |  | 62.7d |
| S06A-CC-12720 |  | Block-19 -Piling - LT Cable Hanger System | 20d | 2026-10-09 | 2026-10-28 | S06A-CC-12700 FF, S06A-CC-12700 SS, S06A-EN-3060, S06A-PR-1470 SS |  | 61.7d |
| S06A-CC-12750 |  | Block-19 -Array Earthing | 25d | 2026-10-09 | 2026-11-02 | S06A-CC-12700 FF+1d, S06A-CC-12700 SS+7d, S06A-EN-2490, S06A-PR-2590 SS |  | 62.7d |
| S06A-CC-12730 |  | Block-19 -Piling - Inverters | 16d | 2026-10-13 | 2026-10-28 | S06A-CC-12700 FF, S06A-CC-12700 SS, S06A-EN-2300, S06A-PR-1310 SS |  | 66.7d |
| S06A-CC-12760 |  | Block-19 -MMS Erection - Torque Tube/Raftar | 28d | 2026-10-16 | 2026-11-12 | S06A-CC-12750 FF, S06A-CC-12700 FF+14d, S06A-CC-12700 SS+14d, S06A-EN-1490, S06A-EN-1500, S06A-PR-1790 SS |  | 52.7d |
| S06A-CC-12770 |  | Block-19 -MMS Erection - Transmission Shaft/Bracing | 28d | 2026-10-20 | 2026-11-16 | S06A-CC-12760 FF+4d, S06A-CC-12760 SS+4d, S06A-PR-1790 SS |  | 56.7d |
| S06A-CC-12780 |  | Block-19 -MMS Erection - Purlin | 28d | 2026-10-20 | 2026-11-16 | S06A-CC-12710 FF, S06A-CC-12760 FF+4d, S06A-CC-12760 SS+4d, S06A-PR-1790 SS |  | 52.7d |
| S06A-CC-12790 |  | Block-19 -MMS - RFI Completion | 28d | 2026-10-24 | 2026-11-20 | S06A-CC-12770 FF, S06A-CC-12780 FF+4d, S06A-CC-12780 SS+4d |  | 52.7d |
| S06A-CC-12740 |  | Block-19 -Piling - Robotic Docking System | 10d | 2026-11-17 | 2026-11-26 | S06A-CC-12700 FF, S06A-CC-12700 SS, S06A-PR-1630 SS |  | 37.7d |
| S06A-CC-12850 |  | Block-19 -Robotic Structure - Docking Station Installation | 10d | 2026-12-17 | 2026-12-26 | S06A-CC-12740, S06A-CC-12760 FF+2d, S06A-CC-12760 SS+2d, S06A-EN-1310, S06A-PR-5680 SS |  | 17.7d |
| S06A-CC-12860 |  | Block-19 -Robotic Structure - Reverse Station Installation | 10d | 2026-12-17 | 2026-12-26 | S06A-CC-12740, S06A-CC-12760 FF+2d, S06A-CC-12760 SS+2d, S06A-PR-5680 SS |  | 35.7d |
| S06A-CC-12800 |  | Block-19 -Module Installation | 39d | 2027-01-06 | 2027-02-14 | S06A-CC-12790 FF+12d, S06A-CC-12790 SS+4d, S06A-EN-1630, S06A-EN-2070, S06A-PR-6210 SS |  | -17.3d |
| S06A-CC-12820 |  | Block-19 -DC Cable Laying | 30d | 2027-01-07 | 2027-02-06 | S06A-CC-12800 SS+1d, S06A-CC-12760 SS+16d, S06A-PR-5840 SS |  | -6.3d |
| S06A-CC-12810 |  | Block-19 -Module - RFI Completion | 40d | 2027-01-10 | 2027-02-19 | S06A-CC-12800 FF+4d, S06A-CC-12800 SS+4d |  | -16.3d |
| S06A-CC-12880 |  | Block-19 -Robot Installation | 30d | 2027-01-17 | 2027-02-16 | S06A-CC-12850 FF+4d, S06A-CC-12850 SS+4d, S06A-CC-12800 FF+2d, S06A-CC-12800 SS+2d, S06A-EN-1550, S06A-PR-5520 SS |  | -9.3d |
| S06A-CC-12830 |  | Block-19 -Module Interconnection & MC4 Termination | 25d | 2027-01-21 | 2027-02-15 | S06A-CC-12800 FF+1d, S06A-CC-12820 FF+2d, S06A-CC-12820 SS+2d, S06A-PR-6000 SS |  | -13.3d |
| S06A-CC-12840 |  | Block-19 -VOC Testing | 22d | 2027-01-27 | 2027-02-17 | S06A-CC-12800 FF+2d, S06A-CC-13090, S06A-CC-12830 FF+2d, S06A-CC-12830 SS+2d |  | -13.3d |
| S06A-CC-12870 |  | Block-19 -Robotic Structure - Bridges Installation | 20d | 2027-01-27 | 2027-02-15 | S06A-CC-12800 FF+1d, S06A-CC-12800 SS+2d, S06A-PR-5680 SS |  | 3.7d |
|  | 2 | **CONSTRUCTION-PV AREA-AC SIDE** |  | 2026-05-11 | 2027-01-10 |  |  |  |
| S06A-CC-12890 |  | Block-19 -IDT Foundation Up To Rail | 21d | 2026-05-11 A | 2026-10-07 | S06A-EN-1070, S06A-PR-2750 SS, S06A-PR-2910 SS, S06A-PR-3070 SS | 75% | 64.7d |
| S06A-CC-12900 |  | Block-19 -HT & LT Station - Slab | 15d | 2026-05-12 A | 2026-10-08 | S06A-EN-1170, S06A-EN-1180, S06A-PR-2750 SS, S06A-PR-2910 SS | 62% | 85.7d |
| S06A-CC-12930 |  | Block-19 -IDT Foundation - Grade Slab Casting & Dyke Wall | 9d | 2026-06-12 A | 2026-10-03 | S06A-CC-12890 | 80% | 101.7d |
| S06A-CC-12910 |  | Block-19 -HT & LT Station - Shed Installation | 5d | 2026-10-01 | 2026-10-06 | S06A-CC-12900 SS, S06A-PR-3230 |  | 85.7d |
| S06A-CC-12920 |  | Block-19 -HT & LT Station - Sheeting Installation | 2d | 2026-10-07 | 2026-10-08 | S06A-CC-12910, S06A-PR-3230 |  | 85.7d |
| S06A-CC-12940 |  | Block-19 -NIFPS Foundation | 10d | 2026-10-08 | 2026-10-17 | S06A-CC-12890, S06A-EN-1090 |  | 64.7d |

| ID | WBS | Task | Duration | Start | Finish | Predecessors | Total float |
| --- | --- | --- | --- | --- | --- | --- | --- |
| S06A-CC-12950 |  | Block-19 -BOT Foundation | 10d | 2026-10-08 | 2026-10-17 | S06A-CC-12890 | 87.7d |
| S06A-CC-12960 |  | Block-19 -Aux Transformer Foundation | 5d | 2026-10-08 | 2026-10-12 | S06A-CC-12890 | 86.7d |
| S06A-CC-13000 |  | Block-19 -HT LT Station - Staircase | 2d | 2026-10-09 | 2026-10-10 | S06A-CC-12900 | 101.7d |
| S06A-CC-13030 |  | Block-19 -HT Cable Laying | 7d | 2026-10-23 | 2026-10-29 | S06A-EN-1940, S06A-PR-4510 SS | 81.7d |
| S06A-CC-13010 |  | Block-19 -Cable Hanger - Structure & Messenger Wire Erection | 5d | 2026-10-28 | 2026-11-01 | S06A-CC-12720 FF+4d, S06A-CC-12720 SS+4d, S06A-EN-3060, S06A-EN-1530, S06A-PR-3390 SS, S06A-PR-3550 SS, S06A-PR-3710 SS, S06A-PR-3870 SS, S06A-PR-4030 SS | 61.7d |
| S06A-CC-13040 |  | Block-19 -FO Cable Laying | 7d | 2026-10-28 | 2026-11-04 | S06A-CC-13030 FF, S06A-CC-13030 SS, S06A-EN-1960, S06A-PR-4670 | 76d |
| S06A-CC-13020 |  | Block-19 -LT Cable Laying | 20d | 2026-10-30 | 2026-11-18 | S06A-CC-13010 FF+2d, S06A-CC-13010 SS+2d, S06A-EN-2870, S06A-EN-1920, S06A-EN-1970, S06A-PR-4190 SS | 61.7d |
| S06A-CC-13070 |  | Block-19 -LT Panel Erection | 6d | 2026-11-10 | 2026-11-15 | S06A-PR-6790, S06A-CC-12920 FS+2d, S06A-EN-1740, S06A-EN-1750, S06A-PR-2430 SS | 55.7d |
| S06A-CC-13060 |  | Block-19 -HT Panel Erection | 1d | 2026-11-12 | 2026-11-12 | S06A-PR-6790, S06A-CC-12920 SS+2d, S06A-EN-1810, S06A-PR-2270 SS | 58.7d |
| S06A-CC-13090 |  | Block-19 -Inverter Installation | 7d | 2026-11-14 | 2026-11-20 | S06A-CC-12730 FS+2d, S06A-EN-1610, S06A-PR-1950 SS, S06A-PR-4830 SS, S06A-PR-4990, S06A-PR-5150 SS, S06A-PR-5310 SS | 52.7d |
| S06A-CC-13050 |  | Block-19 -Control Cable Laying | 5d | 2026-11-20 | 2026-11-25 | S06A-CC-13100 FF, S06A-CC-13100 SS, S06A-EN-2030, S06A-PR-4350 SS | 49d |
| S06A-CC-13100 |  | Block-19 -SCADA & SACU Installation | 5d | 2026-11-20 | 2026-11-25 | S06A-CC-12920, S06A-PR-6370 | 49d |
| S06A-CC-13080 |  | Block-19 -IDT Erection | 5d | 2026-11-25 | 2026-11-29 | S06A-PR-6790, S06A-CC-12890, S06A-PR-2110 SS | 37.7d |
| S06A-CC-13130 |  | Block-19 -NIFPS - Installation | 10d | 2026-11-25 | 2026-12-04 | S06A-CC-12940 FS+6d, S06A-EN-1660, S06A-PR-2110 SS | 32.7d |
| S06A-CC-13110 |  | Block-19 -ACDB Installation | 2d | 2027-01-01 | 2027-01-02 | S06A-CC-12920, S06A-EN-1760, S06A-PR-6690 SS | 10.7d |
| S06A-CC-13120 |  | Block-19 -Aux Transformer - Installation | 4d | 2027-01-01 | 2027-01-04 | S06A-CC-12960 FS+3d, S06A-PR-6690 SS | 9.7d |
| S06A-CC-13140 |  | Block-19 -HT Cable Terminations - IDT Side | 2d | 2027-01-01 | 2027-01-02 | S06A-CC-13060, S06A-CC-13040 FF+2d, S06A-CC-13040 SS+2d, S06A-CC-13030 FF+2d, S06A-CC-13030 SS+2d, S06A-CC-13080, S06A-PR-6690 SS | 18.7d |
| S06A-CC-13150 |  | Block-19 -LT Cable Terminations - LT Panel to IDT | 7d | 2027-01-01 | 2027-01-07 | S06A-CC-13070 FF+1d, S06A-CC-13020 FF+2d, S06A-CC-13020 SS+2d, S06A-CC-13080, S06A-EN-1850, S06A-PR-6690 SS | 13.7d |
| S06A-CC-13160 |  | Block-19 -LT Cable Terminations - Inverter to LT Panel | 7d | 2027-01-01 | 2027-01-07 | S06A-CC-13070 FF+1d, S06A-CC-13020 FF+2d, S06A-CC-13020 SS+2d, S06A-CC-13090 FF+2d, S06A-CC-13090 SS+2d, S06A-PR-6690 SS | 13.7d |
| S06A-CC-12990 |  | Block-19 -IDT Area - Gravel Filling | 5d | 2027-01-03 | 2027-01-07 | S06A-CC-13130, S06A-CC-13120 SS+1d, S06A-CC-13110, S06A-CC-13100, S06A-CC-13080, S06A-CC-13070, S06A-CC-13060, S06A-CC-13050, S06A-CC-12960, S06A-CC-12950, S06A-CC-12940, S06A-CC-12930, S06A-CC-12900, S06A-CC-12890 | 10.7d |
| S06A-CC-12970 |  | Block-19 -IDT Area - Fencing | 5d | 2027-01-05 | 2027-01-09 | S06A-CC-12990 SS+1d, S06A-CC-13130, S06A-CC-13120, S06A-CC-13110, S06A-CC-13100, S06A-CC-13080, S06A-CC-13070, S06A-CC-13060, S06A-EN-1100, S06A-PR-6530 SS | 9.7d |
| S06A-CC-12980 |  | Block-19 -IDT Area - Gate Installation | 1d | 2027-01-10 | 2027-01-10 | S06A-CC-12970, S06A-PR-6530 SS | 9.7d |
|  | 3 | **CONSTRUCTION-PV AREA-PRE COMMISSIONING** |  | 2026-11-13 | 2027-01-16 |  |  |
| S06A-CC-13190 |  | Block-19 -HT Panel Testing | 1d | 2026-11-13 | 2026-11-13 | S06A-CC-13060 | 58.7d |
| S06A-CC-13200 |  | Block-19 -LT Panel Testing | 1d | 2026-11-16 | 2026-11-16 | S06A-CC-13070 | 55.7d |
| S06A-CC-13170 |  | Block-19 -IDT Filtration | 3d | 2026-12-05 | 2026-12-07 | S06A-CC-13130, S06A-CC-13080 | 32.7d |
| S06A-CC-13180 |  | Block-19 -IDT Testing | 2d | 2026-12-08 | 2026-12-09 | S06A-CC-13170, S06A-EN-1680 | 32.7d |
| S06A-CC-13210 |  | Block-19 -Inspection Offer To Asset Commissioning Team | 1d | 2027-01-08 | 2027-01-08 | S06A-CC-13160, S06A-CC-13150, S06A-CC-13140 | 13.7d |
| S06A-CC-13220 |  | Block-19 -Punch Point Identification By Asset Commissioning Team | 3d | 2027-01-09 | 2027-01-11 | S06A-CC-13210 | 13.7d |
| S06A-CC-13230 |  | Block-19 -Punch Point Rectification And Pre Charging Sign Off | 5d | 2027-01-12 | 2027-01-16 | S06A-CC-13220 | 13.7d |
|  | 4 | **CONSTRUCTION-COMMISSIONING** |  | 2027-01-07 | 2027-02-28 |  |  |
| S06A-CC-13240 |  | Block-19 -CEA Application | 1d | 2027-01-07 | 2027-01-08 | S06A-CC-13200, S06A-CC-13190, S06A-CC-13180, S06A-PR-6210 | 4d |
| S06A-CC-13250 |  | Block-19 -CEA Inspection | 1d | 2027-01-16 | 2027-01-17 | S06A-CC-13000, S06A-CC-12980, S06A-CC-13240 FS+8d | 4d |
| S06A-CC-13260 |  | Block-19 -CEA Compliance & Approval | 5d | 2027-01-18 | 2027-01-23 | S06A-CC-13250 FS+1d | 4d |
| S06A-CC-13270 |  | Block-19 -First Time Charging - Application | 1d | 2027-02-15 | 2027-02-15 | S06A-CC-12800, S06A-CC-12840 SS+3d, S06A-CC-13260 | -17.3d |
| S06A-CC-13280 |  | Block-19 -First Time Charging - Approval | 2d | 2027-02-16 | 2027-02-17 | S06A-CC-13270 | -17.3d |
| S06A-CC-13290 |  | Block-19 -First Time Charging | 1d | 2027-02-18 | 2027-02-18 | S06A-CC-13230, S06A-CC-13280, S06A-CI-1010, PR-CA-23-020, PR-CA-27-014, PR-CA-27-013, PR-CA-16-020 | -17.3d |
| S06A-CC-13300 |  | Block-19 -Tracker Commissioning - SCADA | 8d | 2027-02-18 | 2027-02-25 | S06A-CC-13290 SS | -16.3d |
| S06A-CC-13310 |  | Block-19 -Robot Commissioning - SCADA | 8d | 2027-02-18 | 2027-02-25 | S06A-CC-13290 SS, S06A-CC-12870 SS+2d, S06A-CC-12860, S06A-CC-12880 FF+2d, S06A-CC-12880 SS+4d, S06A-CC-13270, S06A-CC-13100 | -16.3d |
| S06A-CC-13320 |  | Block-19 -Trial Operation | 1d | 2027-02-21 | 2027-02-21 | S06A-CC-12810, S06A-CC-12840 FF, S06A-CC-13290 SS+3d | -17.3d |
| S06A-CC-13330 |  | Block-19 -Trial Run Certificate | 1d | 2027-02-24 | 2027-02-24 | S06A-CC-13320 FS+2d | -17.3d |
| S06A-CC-13340 |  | Block-19 -COD | 2d | 2027-02-27 | 2027-02-28 | S06A-CC-13300, S06A-CC-13310, S06A-CC-13330 FS+2d, PR-CA-27-010 | -17.3d |
|  | 6 | **PR AND PG TEST** |  | 2027-03-01 | 2027-06-24 |  |  |
| S07-PG-1000 |  | PR Test - Phase 01 | 90d | 2027-03-01 | 2027-06-24 | S06A-CC-1640, S06A-CC-2290, S06A-CC-2940, S06A-CC-3590, S06A-CC-4240, S06A-CC-4890, S06A-CC-5540, S06A-CC-6190, S06A-CC-6840, S06A-CC-7490, S06A-CC-8140, S06A-CC-8790, S06A-CC-12040, S06A-CC-10740, S06A-CC-9440, S06A-CC-13340, S06A-CC-10080, S06A-CC-12690, S06A-CC-11390 | -17.3d |
| S07-PG-1010 |  | PG Test - Phase 01 | 90d | 2027-03-01 | 2027-06-24 | S06A-CC-1640, S06A-CC-2290, S06A-CC-2940, S06A-CC-3590, S06A-CC-4240, S06A-CC-4890, S06A-CC-5540, S06A-CC-6190, S06A-CC-6840, S06A-CC-7490, S06A-CC-8140, S06A-CC-8790, S06A-CC-12040, S06A-CC-10740, S06A-CC-9440, S06A-CC-13340, S06A-CC-10080, S06A-CC-12690, S06A-CC-11390 | -17.3d |
|  | 7 | **HOTO** |  | 2027-01-15 | 2027-06-25 |  |  |
|  | 1 | **PHASE-1 (50MW)** |  | 2027-01-15 | 2027-06-25 |  |  |
|  | 1 | **BLOCK-01** |  | 2027-01-15 | 2027-06-25 |  |  |
| S06A-HT-1000 |  | Block-01 -Final Inspection Offer To O&M Team | 4d | 2027-01-15 | 2027-01-18 | S06A-CC-1640 | 79.7d |
| S06A-HT-1010 |  | Block-01 -Punch Point Identification By O&M Team | 5d | 2027-01-19 | 2027-01-23 | S06A-HT-1000 | 79.7d |
| S06A-HT-1020 |  | Block-01 -Punch Point Rectification By Project Team | 22d | 2027-01-24 | 2027-02-15 | S06A-HT-1010 | 79.7d |
| S06A-HT-1050 |  | Block-01 -House Keeping & Removal of Scraps | 19d | 2027-02-03 | 2027-02-21 | S06A-HT-1030 FF, S06A-HT-1000 SS | 79.7d |
| S06A-HT-1060 |  | Block-01 -Handing Over of Mandatory Spares | 14d | 2027-02-08 | 2027-02-21 | S06A-HT-1030 FF, S06A-HT-1000 SS | 79.7d |
| S06A-HT-1040 |  | Block-01 -Submission of As-built Drawings,OEM Manuals, Warranty Certificates etc. through DMS | 10d | 2027-02-12 | 2027-02-22 | S06A-HT-1030 FF, S06A-HT-1000 SS | 97.78d |
| S06A-HT-1030 |  | Block-01 -Punch Point Closure Validation By O&M Team | 6d | 2027-02-16 | 2027-02-21 | S06A-HT-1020 | 79.7d |
| S06A-HT-1070 |  | Block-01 -HOTO Sign Off | 1d | 2027-06-24 | 2027-06-25 | S06A-HT-1060, S06A-HT-1050, S06A-HT-1040, S06A-HT-1030, S07-PG-1000, S07-PG-1010, S06A-HT-2500 | -17.3d |
|  | 2 | **BLOCK-02** |  | 2027-01-15 | 2027-06-25 |  |  |
| S06A-HT-1080 |  | Block-02 - Final Inspection Offer To O&M Team | 4d | 2027-01-15 | 2027-01-19 | S06A-CC-2290 | 79d |
| S06A-HT-1090 |  | Block-02 - Punch Point Identification By O&M Team | 5d | 2027-01-19 | 2027-01-24 | S06A-HT-1080 | 79d |
| S06A-HT-1100 |  | Block-02 - Punch Point Rectification By Project Team | 22d | 2027-01-24 | 2027-02-16 | S06A-HT-1090 | 79d |
| S06A-HT-1130 |  | Block-02 -House Keeping & Removal of Scraps | 19d | 2027-02-03 | 2027-02-22 | S06A-HT-1110 FF, S06A-HT-1080 SS | 79d |
| S06A-HT-1140 |  | Block-02 -Handing Over of Mandatory Spares | 14d | 2027-02-08 | 2027-02-22 | S06A-HT-1110 FF, S06A-HT-1080 SS | 79d |
| S06A-HT-1120 |  | Block-02 -Submission of As-built Drawings,OEM Manuals, Warranty Certificates etc. through DMS | 10d | 2027-02-13 | 2027-02-22 | S06A-HT-1110 FF, S06A-HT-1080 SS | 96.78d |
| S06A-HT-1110 |  | Block-02 - Punch Point Closure Validation By O&M Team | 6d | 2027-02-16 | 2027-02-22 | S06A-HT-1100 | 79d |
| S06A-HT-1150 |  | Block-02 - HOTO Sign Off | 1d | 2027-06-24 | 2027-06-25 | S06A-HT-1140, S06A-HT-1130, S06A-HT-1120, S06A-HT-1110, S07-PG-1000, S07-PG-1010, S06A-HT-2500 | -17.3d |
|  | 3 | **BLOCK-03** |  | 2027-01-15 | 2027-06-25 |  |  |
| S06A-HT-1160 |  | Block-03 - Final Inspection Offer To O&M Team | 4d | 2027-01-15 | 2027-01-19 | S06A-CC-2940 | 79d |
| S06A-HT-1170 |  | Block-03 - Punch Point Identification By O&M Team | 5d | 2027-01-19 | 2027-01-24 | S06A-HT-1160 | 79d |
| S06A-HT-1180 |  | Block-03 - Punch Point Rectification By Project Team | 22d | 2027-01-24 | 2027-02-16 | S06A-HT-1170 | 79d |
| S06A-HT-1210 |  | Block-03 -House Keeping & Removal of Scraps | 19d | 2027-02-03 | 2027-02-22 | S06A-HT-1190 FF, S06A-HT-1160 SS | 79d |

| ID | WBS | Task | Duration | Start | Finish | Predecessors | Total float |
| --- | --- | --- | --- | --- | --- | --- | --- |
| S06A-HT-1220 |  | Block-03 -Handing Over of Mandatory Spares | 14d | 2027-02-08 | 2027-02-22 | S06A-HT-1190 FF, S06A-HT-1160 SS | 79d |
| S06A-HT-1200 |  | Block-03 -Submission of As-built Drawings,OEM Manuals, Warranty Certificates etc. through DMS | 10d | 2027-02-13 | 2027-02-22 | S06A-HT-1190 FF, S06A-HT-1160 SS | 96.78d |
| S06A-HT-1190 |  | Block-03 - Punch Point Closure Validation By O&M Team | 6d | 2027-02-16 | 2027-02-22 | S06A-HT-1180 | 79d |
| S06A-HT-1230 |  | Block-03 - HOTO Sign Off | 1d | 2027-06-24 | 2027-06-25 | S06A-HT-1220, S06A-HT-1210, S06A-HT-1200, S06A-HT-1190, S07-PG-1000, S07-PG-1010, S06A-HT-2500 | -17.3d |
|  | 4 | **BLOCK-04** |  | 2027-01-15 | 2027-06-25 |  |  |
| S06A-HT-1240 |  | Block-04 - Final Inspection Offer To O&M Team | 4d | 2027-01-15 | 2027-01-19 | S06A-CC-3590 | 79d |
| S06A-HT-1250 |  | Block-04 - Punch Point Identification By O&M Team | 5d | 2027-01-19 | 2027-01-24 | S06A-HT-1240 | 79d |
| S06A-HT-1260 |  | Block-04 - Punch Point Rectification By Project Team | 22d | 2027-01-24 | 2027-02-16 | S06A-HT-1250 | 79d |
| S06A-HT-1290 |  | Block-04 -House Keeping & Removal of Scraps | 19d | 2027-02-03 | 2027-02-22 | S06A-HT-1270 FF, S06A-HT-1240 SS | 79d |
| S06A-HT-1300 |  | Block-04 -Handing Over of Mandatory Spares | 14d | 2027-02-08 | 2027-02-22 | S06A-HT-1270 FF, S06A-HT-1240 SS | 79d |
| S06A-HT-1280 |  | Block-04 -Submission of As-built Drawings,OEM Manuals, Warranty Certificates etc. through DMS | 10d | 2027-02-13 | 2027-02-22 | S06A-HT-1270 FF, S06A-HT-1240 SS | 96.78d |
| S06A-HT-1270 |  | Block-04 - Punch Point Closure Validation By O&M Team | 6d | 2027-02-16 | 2027-02-22 | S06A-HT-1260 | 79d |
| S06A-HT-1310 |  | Block-04 - HOTO Sign Off | 1d | 2027-06-24 | 2027-06-25 | S06A-HT-1300, S06A-HT-1290, S06A-HT-1280, S06A-HT-1270, S07-PG-1000, S07-PG-1010, S06A-HT-2500 | -17.3d |
|  | 2 | **PHASE-2 (50MW)** |  | 2027-01-25 | 2027-06-25 |  |  |
|  | 1 | **BLOCK-05** |  | 2027-01-25 | 2027-06-25 |  |  |
| S06A-HT-1320 |  | Block-05 - Final Inspection Offer To O&M Team | 4d | 2027-01-25 | 2027-01-29 | S06A-CC-4240 | 72.7d |
| S06A-HT-1330 |  | Block-05 - Punch Point Identification By O&M Team | 4d | 2027-01-30 | 2027-02-02 | S06A-HT-1320 | 72.7d |
| S06A-HT-1340 |  | Block-05 - Punch Point Rectification By Project Team | 22d | 2027-02-03 | 2027-02-24 | S06A-HT-1330 | 72.7d |
| S06A-HT-1370 |  | Block-05 -House Keeping & Removal of Scraps | 19d | 2027-02-10 | 2027-02-28 | S06A-HT-1350 FF, S06A-HT-1320 SS | 72.7d |
| S06A-HT-1380 |  | Block-05 -Handing Over of Mandatory Spares | 14d | 2027-02-15 | 2027-02-28 | S06A-HT-1350 FF, S06A-HT-1320 SS | 72.7d |
| S06A-HT-1360 |  | Block-05 -Submission of As-built Drawings,OEM Manuals, Warranty Certificates etc. through DMS | 10d | 2027-02-19 | 2027-03-01 | S06A-HT-1350 FF, S06A-HT-1320 SS | 90.78d |
| S06A-HT-1350 |  | Block-05 - Punch Point Closure Validation By O&M Team | 4d | 2027-02-25 | 2027-02-28 | S06A-HT-1340 | 72.7d |
| S06A-HT-1390 |  | Block-05 - HOTO Sign Off | 1d | 2027-06-24 | 2027-06-25 | S06A-HT-1380, S06A-HT-1370, S06A-HT-1360, S06A-HT-1350, S07-PG-1000, S07-PG-1010, S06A-HT-2500 | -17.3d |
|  | 2 | **BLOCK-06** |  | 2027-01-25 | 2027-06-25 |  |  |
| S06A-HT-1400 |  | Block-06 - Final Inspection Offer To O&M Team | 4d | 2027-01-25 | 2027-01-29 | S06A-CC-4890 | 72.7d |
| S06A-HT-1410 |  | Block-06 - Punch Point Identification By O&M Team | 4d | 2027-01-30 | 2027-02-02 | S06A-HT-1400 | 72.7d |
| S06A-HT-1420 |  | Block-06 - Punch Point Rectification By Project Team | 22d | 2027-02-03 | 2027-02-24 | S06A-HT-1410 | 72.7d |
| S06A-HT-1450 |  | Block-06 -House Keeping & Removal of Scraps | 19d | 2027-02-10 | 2027-02-28 | S06A-HT-1430 FF, S06A-HT-1400 SS | 72.7d |
| S06A-HT-1460 |  | Block-06 -Handing Over of Mandatory Spares | 14d | 2027-02-15 | 2027-02-28 | S06A-HT-1430 FF, S06A-HT-1400 SS | 72.7d |
| S06A-HT-1440 |  | Block-06 -Submission of As-built Drawings,OEM Manuals, Warranty Certificates etc. through DMS | 10d | 2027-02-19 | 2027-03-01 | S06A-HT-1430 FF, S06A-HT-1400 SS | 90.78d |
| S06A-HT-1430 |  | Block-06 - Punch Point Closure Validation By O&M Team | 4d | 2027-02-25 | 2027-02-28 | S06A-HT-1420 | 72.7d |
| S06A-HT-1470 |  | Block-06 - HOTO Sign Off | 1d | 2027-06-24 | 2027-06-25 | S06A-HT-1460, S06A-HT-1450, S06A-HT-1440, S06A-HT-1430, S07-PG-1000, S07-PG-1010, S06A-HT-2500 | -17.3d |
|  | 3 | **BLOCK-07** |  | 2027-01-25 | 2027-06-25 |  |  |
| S06A-HT-1480 |  | Block-07 - Final Inspection Offer To O&M Team | 4d | 2027-01-25 | 2027-01-29 | S06A-CC-5540 | 72.7d |
| S06A-HT-1490 |  | Block-07 - Punch Point Identification By O&M Team | 4d | 2027-01-30 | 2027-02-02 | S06A-HT-1480 | 72.7d |
| S06A-HT-1500 |  | Block-07 - Punch Point Rectification By Project Team | 22d | 2027-02-03 | 2027-02-24 | S06A-HT-1490 | 72.7d |
| S06A-HT-1530 |  | Block-07 -House Keeping & Removal of Scraps | 19d | 2027-02-10 | 2027-02-28 | S06A-HT-1510 FF, S06A-HT-1480 SS | 72.7d |
| S06A-HT-1540 |  | Block-07 -Handing Over of Mandatory Spares | 14d | 2027-02-15 | 2027-02-28 | S06A-HT-1510 FF, S06A-HT-1480 SS | 72.7d |
| S06A-HT-1520 |  | Block-07 -Submission of As-built Drawings,OEM Manuals, Warranty Certificates etc. through DMS | 10d | 2027-02-19 | 2027-03-01 | S06A-HT-1510 FF, S06A-HT-1480 SS | 90.78d |
| S06A-HT-1510 |  | Block-07 - Punch Point Closure Validation By O&M Team | 4d | 2027-02-25 | 2027-02-28 | S06A-HT-1500 | 72.7d |
| S06A-HT-1550 |  | Block-07 - HOTO Sign Off | 1d | 2027-06-24 | 2027-06-25 | S06A-HT-1540, S06A-HT-1530, S06A-HT-1520, S06A-HT-1510, S07-PG-1000, S07-PG-1010, S06A-HT-2500 | -17.3d |
|  | 4 | **BLOCK-08** |  | 2027-01-25 | 2027-06-25 |  |  |
| S06A-HT-1560 |  | Block-08 - Final Inspection Offer To O&M Team | 4d | 2027-01-25 | 2027-01-29 | S06A-CC-6190 | 72.7d |
| S06A-HT-1570 |  | Block-08 - Punch Point Identification By O&M Team | 4d | 2027-01-30 | 2027-02-02 | S06A-HT-1560 | 72.7d |
| S06A-HT-1580 |  | Block-08 - Punch Point Rectification By Project Team | 22d | 2027-02-03 | 2027-02-24 | S06A-HT-1570 | 72.7d |
| S06A-HT-1610 |  | Block-08 -House Keeping & Removal of Scraps | 19d | 2027-02-10 | 2027-02-28 | S06A-HT-1590 FF, S06A-HT-1560 SS | 72.7d |
| S06A-HT-1620 |  | Block-08 -Handing Over of Mandatory Spares | 14d | 2027-02-15 | 2027-02-28 | S06A-HT-1590 FF, S06A-HT-1560 SS | 72.7d |
| S06A-HT-1600 |  | Block-08 -Submission of As-built Drawings,OEM Manuals, Warranty Certificates etc. through DMS | 10d | 2027-02-19 | 2027-03-01 | S06A-HT-1590 FF, S06A-HT-1560 SS | 90.78d |
| S06A-HT-1590 |  | Block-08 - Punch Point Closure Validation By O&M Team | 4d | 2027-02-25 | 2027-02-28 | S06A-HT-1580 | 72.7d |
| S06A-HT-1630 |  | Block-08 - HOTO Sign Off | 1d | 2027-06-24 | 2027-06-25 | S06A-HT-1620, S06A-HT-1610, S06A-HT-1600, S06A-HT-1590, S07-PG-1000, S07-PG-1010, S06A-HT-2500 | -17.3d |
|  | 3 | **PHASE-3 (50MW)** |  | 2027-01-31 | 2027-06-25 |  |  |
|  | 1 | **BLOCK-09** |  | 2027-01-31 | 2027-06-25 |  |  |
| S06A-HT-1640 |  | Block-09 - Final Inspection Offer To O&M Team | 4d | 2027-01-31 | 2027-02-03 | S06A-CC-6840 | 69.7d |
| S06A-HT-1650 |  | Block-09 - Punch Point Identification By O&M Team | 4d | 2027-02-04 | 2027-02-07 | S06A-HT-1640 | 69.7d |
| S06A-HT-1660 |  | Block-09 - Punch Point Rectification By Project Team | 20d | 2027-02-08 | 2027-02-27 | S06A-HT-1650 | 69.7d |
| S06A-HT-1690 |  | Block-09 -House Keeping & Removal of Scraps | 19d | 2027-02-13 | 2027-03-03 | S06A-HT-1670 FF, S06A-HT-1640 SS | 69.7d |
| S06A-HT-1700 |  | Block-09 -Handing Over of Mandatory Spares | 14d | 2027-02-18 | 2027-03-03 | S06A-HT-1670 FF, S06A-HT-1640 SS | 69.7d |
| S06A-HT-1680 |  | Block-09 -Submission of As-built Drawings,OEM Manuals, Warranty Certificates etc. through DMS | 10d | 2027-02-22 | 2027-03-04 | S06A-HT-1670 FF, S06A-HT-1640 SS | 87.78d |
| S06A-HT-1670 |  | Block-09 - Punch Point Closure Validation By O&M Team | 4d | 2027-02-28 | 2027-03-03 | S06A-HT-1660 | 69.7d |
| S06A-HT-1710 |  | Block-09 - HOTO Sign Off | 1d | 2027-06-24 | 2027-06-25 | S06A-HT-1700, S06A-HT-1690, S06A-HT-1680, S06A-HT-1670, S07-PG-1000, S07-PG-1010, S06A-HT-2500 | -17.3d |
|  | 2 | **BLOCK-10** |  | 2027-01-31 | 2027-06-25 |  |  |
| S06A-HT-1720 |  | Block-10 - Final Inspection Offer To O&M Team | 4d | 2027-01-31 | 2027-02-03 | S06A-CC-7490 | 69.7d |
| S06A-HT-1730 |  | Block-10 - Punch Point Identification By O&M Team | 4d | 2027-02-04 | 2027-02-07 | S06A-HT-1720 | 69.7d |
| S06A-HT-1740 |  | Block-10 - Punch Point Rectification By Project Team | 20d | 2027-02-08 | 2027-02-27 | S06A-HT-1730 | 69.7d |
| S06A-HT-1770 |  | Block-10 -House Keeping & Removal of Scraps | 19d | 2027-02-13 | 2027-03-03 | S06A-HT-1750 FF, S06A-HT-1720 SS | 69.7d |
| S06A-HT-1780 |  | Block-10 -Handing Over of Mandatory Spares | 14d | 2027-02-18 | 2027-03-03 | S06A-HT-1750 FF, S06A-HT-1720 SS | 69.7d |
| S06A-HT-1760 |  | Block-10 -Submission of As-built Drawings,OEM Manuals, Warranty Certificates etc. through DMS | 10d | 2027-02-22 | 2027-03-04 | S06A-HT-1750 FF, S06A-HT-1720 SS | 87.78d |
| S06A-HT-1750 |  | Block-10 - Punch Point Closure Validation By O&M Team | 4d | 2027-02-28 | 2027-03-03 | S06A-HT-1740 | 69.7d |
| S06A-HT-1790 |  | Block-10 - HOTO Sign Off | 1d | 2027-06-24 | 2027-06-25 | S06A-HT-1780, S06A-HT-1770, S06A-HT-1760, S06A-HT-1750, S07-PG-1000, S07-PG-1010, S06A-HT-2500 | -17.3d |
|  | 3 | **BLOCK-11** |  | 2027-01-31 | 2027-06-25 |  |  |

| ID | WBS | Task | Duration | Start | Finish | Predecessors | Total float |
| --- | --- | --- | --- | --- | --- | --- | --- |
| S06A-HT-1800 |  | Block-11 - Final Inspection Offer To O&M Team | 4d | 2027-01-31 | 2027-02-03 | S06A-CC-8140 | 69.7d |
| S06A-HT-1810 |  | Block-11 - Punch Point Identification By O&M Team | 4d | 2027-02-04 | 2027-02-07 | S06A-HT-1800 | 69.7d |
| S06A-HT-1820 |  | Block-11 - Punch Point Rectification By Project Team | 20d | 2027-02-08 | 2027-02-27 | S06A-HT-1810 | 69.7d |
| S06A-HT-1850 |  | Block-11 -House Keeping & Removal of Scraps | 19d | 2027-02-13 | 2027-03-03 | S06A-HT-1830 FF, S06A-HT-1800 SS | 69.7d |
| S06A-HT-1860 |  | Block-11 -Handing Over of Mandatory Spares | 14d | 2027-02-18 | 2027-03-03 | S06A-HT-1830 FF, S06A-HT-1800 SS | 69.7d |
| S06A-HT-1840 |  | Block-11 -Submission of As-built Drawings,OEM Manuals, Warranty Certificates etc. through DMS | 10d | 2027-02-22 | 2027-03-04 | S06A-HT-1830 FF, S06A-HT-1800 SS | 87.78d |
| S06A-HT-1830 |  | Block-11 - Punch Point Closure Validation By O&M Team | 4d | 2027-02-28 | 2027-03-03 | S06A-HT-1820 | 69.7d |
| S06A-HT-1870 |  | Block-11 - HOTO Sign Off | 1d | 2027-06-24 | 2027-06-25 | S06A-HT-1860, S06A-HT-1850, S06A-HT-1840, S06A-HT-1830, S07-PG-1000, S07-PG-1010, S06A-HT-2500 | -17.3d |
|  | 4 | **BLOCK-12** |  | 2027-01-31 | 2027-06-25 |  |  |
| S06A-HT-1880 |  | Block-12 - Final Inspection Offer To O&M Team | 4d | 2027-01-31 | 2027-02-03 | S06A-CC-8790 | 69.7d |
| S06A-HT-1890 |  | Block-12 - Punch Point Identification By O&M Team | 4d | 2027-02-04 | 2027-02-07 | S06A-HT-1880 | 69.7d |
| S06A-HT-1900 |  | Block-12 - Punch Point Rectification By Project Team | 20d | 2027-02-08 | 2027-02-27 | S06A-HT-1890 | 69.7d |
| S06A-HT-1930 |  | Block-12 -House Keeping & Removal of Scraps | 19d | 2027-02-13 | 2027-03-03 | S06A-HT-1910 FF, S06A-HT-1880 SS | 69.7d |
| S06A-HT-1940 |  | Block-12 -Handing Over of Mandatory Spares | 14d | 2027-02-18 | 2027-03-03 | S06A-HT-1910 FF, S06A-HT-1880 SS | 69.7d |
| S06A-HT-1920 |  | Block-12 -Submission of As-built Drawings,OEM Manuals, Warranty Certificates etc. through DMS | 10d | 2027-02-22 | 2027-03-04 | S06A-HT-1910 FF, S06A-HT-1880 SS | 87.78d |
| S06A-HT-1910 |  | Block-12 - Punch Point Closure Validation By O&M Team | 4d | 2027-02-28 | 2027-03-03 | S06A-HT-1900 | 69.7d |
| S06A-HT-1950 |  | Block-12 - HOTO Sign Off | 1d | 2027-06-24 | 2027-06-25 | S06A-HT-1940, S06A-HT-1930, S06A-HT-1920, S06A-HT-1910, S07-PG-1000, S07-PG-1010, S06A-HT-2500 | -17.3d |
|  | 4 | **PHASE-4 (50MW)** |  | 2027-02-27 | 2027-06-25 |  |  |
|  | 1 | **BLOCK-13** |  | 2027-02-27 | 2027-06-25 |  |  |
| S06A-HT-1960 |  | Block-13 - Final Inspection Offer To O&M Team | 4d | 2027-02-27 | 2027-03-02 | S06A-CC-9440 | 45.7d |
| S06A-HT-1970 |  | Block-13 - Punch Point Identification By O&M Team | 5d | 2027-03-03 | 2027-03-07 | S06A-HT-1960 | 45.7d |
| S06A-HT-1980 |  | Block-13 - Punch Point Rectification By Project Team | 16d | 2027-03-08 | 2027-03-23 | S06A-HT-1970 | 45.7d |
| S06A-HT-2010 |  | Block-13 -House Keeping & Removal of Scraps | 19d | 2027-03-09 | 2027-03-27 | S06A-HT-1990 FF, S06A-HT-1960 SS | 45.7d |
| S06A-HT-2020 |  | Block-13 -Handing Over of Mandatory Spares | 14d | 2027-03-14 | 2027-03-27 | S06A-HT-1990 FF, S06A-HT-1960 SS | 45.7d |
| S06A-HT-2000 |  | Block-13 -Submission of As-built Drawings,OEM Manuals, Warranty Certificates etc. through DMS | 10d | 2027-03-18 | 2027-03-28 | S06A-HT-1990 FF, S06A-HT-1960 SS | 63.78d |
| S06A-HT-1990 |  | Block-13 - Punch Point Closure Validation By O&M Team | 4d | 2027-03-24 | 2027-03-27 | S06A-HT-1980 | 45.7d |
| S06A-HT-2030 |  | Block-13 - HOTO Sign Off | 1d | 2027-06-24 | 2027-06-25 | S06A-HT-2020, S06A-HT-2010, S06A-HT-2000, S06A-HT-1990, S07-PG-1000, S07-PG-1010, S06A-HT-2500 | -17.3d |
|  | 2 | **BLOCK-14** |  | 2027-02-27 | 2027-06-25 |  |  |
| S06A-HT-2040 |  | Block-14 - Final Inspection Offer To O&M Team | 4d | 2027-02-27 | 2027-03-02 | S06A-CC-10080 | 45.7d |
| S06A-HT-2050 |  | Block-14 - Punch Point Identification By O&M Team | 5d | 2027-03-03 | 2027-03-07 | S06A-HT-2040 | 45.7d |
| S06A-HT-2060 |  | Block-14 - Punch Point Rectification By Project Team | 16d | 2027-03-08 | 2027-03-23 | S06A-HT-2050 | 45.7d |
| S06A-HT-2090 |  | Block-14 -House Keeping & Removal of Scraps | 19d | 2027-03-09 | 2027-03-27 | S06A-HT-2070 FF, S06A-HT-2040 SS | 45.7d |
| S06A-HT-2100 |  | Block-14 -Handing Over of Mandatory Spares | 14d | 2027-03-14 | 2027-03-27 | S06A-HT-2070 FF, S06A-HT-2040 SS | 45.7d |
| S06A-HT-2080 |  | Block-14 -Submission of As-built Drawings,OEM Manuals, Warranty Certificates etc. through DMS | 10d | 2027-03-18 | 2027-03-28 | S06A-HT-2070 FF, S06A-HT-2040 SS | 63.78d |
| S06A-HT-2070 |  | Block-14 - Punch Point Closure Validation By O&M Team | 4d | 2027-03-24 | 2027-03-27 | S06A-HT-2060 | 45.7d |
| S06A-HT-2110 |  | Block-14 - HOTO Sign Off | 1d | 2027-06-24 | 2027-06-25 | S06A-HT-2100, S06A-HT-2090, S06A-HT-2080, S06A-HT-2070, S07-PG-1000, S07-PG-1010, S06A-HT-2500 | -17.3d |
|  | 3 | **BLOCK-15** |  | 2027-02-27 | 2027-06-25 |  |  |
| S06A-HT-2120 |  | Block-15 - Final Inspection Offer To O&M Team | 4d | 2027-02-27 | 2027-03-02 | S06A-CC-10740 | 45.7d |
| S06A-HT-2130 |  | Block-15 - Punch Point Identification By O&M Team | 5d | 2027-03-03 | 2027-03-07 | S06A-HT-2120 | 45.7d |
| S06A-HT-2140 |  | Block-15 - Punch Point Rectification By Project Team | 16d | 2027-03-08 | 2027-03-23 | S06A-HT-2130 | 45.7d |
| S06A-HT-2170 |  | Block-15 -House Keeping & Removal of Scraps | 19d | 2027-03-09 | 2027-03-27 | S06A-HT-2150 FF, S06A-HT-2120 SS | 45.7d |
| S06A-HT-2180 |  | Block-15 -Handing Over of Mandatory Spares | 14d | 2027-03-14 | 2027-03-27 | S06A-HT-2150 FF, S06A-HT-2120 SS | 45.7d |
| S06A-HT-2160 |  | Block-15 -Submission of As-built Drawings,OEM Manuals, Warranty Certificates etc. through DMS | 10d | 2027-03-18 | 2027-03-28 | S06A-HT-2150 FF, S06A-HT-2120 SS | 63.78d |
| S06A-HT-2150 |  | Block-15 - Punch Point Closure Validation By O&M Team | 4d | 2027-03-24 | 2027-03-27 | S06A-HT-2140 | 45.7d |
| S06A-HT-2190 |  | Block-15 - HOTO Sign Off | 1d | 2027-06-24 | 2027-06-25 | S06A-HT-2180, S06A-HT-2170, S06A-HT-2160, S06A-HT-2150, S07-PG-1000, S07-PG-1010, S06A-HT-2500 | -17.3d |
|  | 4 | **BLOCK-16** |  | 2027-02-27 | 2027-06-25 |  |  |
| S06A-HT-2200 |  | Block-16 - Final Inspection Offer To O&M Team | 4d | 2027-02-27 | 2027-03-02 | S06A-CC-11390 | 45.7d |
| S06A-HT-2210 |  | Block-16 - Punch Point Identification By O&M Team | 5d | 2027-03-03 | 2027-03-07 | S06A-HT-2200 | 45.7d |
| S06A-HT-2220 |  | Block-16 - Punch Point Rectification By Project Team | 16d | 2027-03-08 | 2027-03-23 | S06A-HT-2210 | 45.7d |
| S06A-HT-2250 |  | Block-16 -House Keeping & Removal of Scraps | 19d | 2027-03-09 | 2027-03-27 | S06A-HT-2230 FF, S06A-HT-2200 SS | 45.7d |
| S06A-HT-2260 |  | Block-16 -Handing Over of Mandatory Spares | 14d | 2027-03-14 | 2027-03-27 | S06A-HT-2230 FF, S06A-HT-2200 SS | 45.7d |
| S06A-HT-2240 |  | Block-16 -Submission of As-built Drawings,OEM Manuals, Warranty Certificates etc. through DMS | 10d | 2027-03-18 | 2027-03-28 | S06A-HT-2230 FF, S06A-HT-2200 SS | 63.78d |
| S06A-HT-2230 |  | Block-16 - Punch Point Closure Validation By O&M Team | 4d | 2027-03-24 | 2027-03-27 | S06A-HT-2220 | 45.7d |
| S06A-HT-2270 |  | Block-16 - HOTO Sign Off | 1d | 2027-06-24 | 2027-06-25 | S06A-HT-2260, S06A-HT-2250, S06A-HT-2240, S06A-HT-2230, S07-PG-1000, S07-PG-1010, S06A-HT-2500 | -17.3d |
|  | 5 | **PHASE-5 (34MW)** |  | 2027-03-01 | 2027-06-25 |  |  |
|  | 1 | **BLOCK-17** |  | 2027-03-01 | 2027-06-25 |  |  |
| S06A-HT-2280 |  | Block-17 - Final Inspection Offer To O&M Team | 3d | 2027-03-01 | 2027-03-03 | S06A-CC-12040 | 46.7d |
| S06A-HT-2290 |  | Block-17 - Punch Point Identification By O&M Team | 3d | 2027-03-04 | 2027-03-06 | S06A-HT-2280 | 46.7d |
| S06A-HT-2300 |  | Block-17 - Punch Point Rectification By Project Team | 16d | 2027-03-07 | 2027-03-22 | S06A-HT-2290 | 46.7d |
| S06A-HT-2330 |  | Block-17 -House Keeping & Removal of Scraps | 19d | 2027-03-08 | 2027-03-26 | S06A-HT-2310 FF, S06A-HT-2280 SS | 46.7d |
| S06A-HT-2340 |  | Block-17 -Handing Over of Mandatory Spares | 14d | 2027-03-13 | 2027-03-26 | S06A-HT-2310 FF, S06A-HT-2280 SS | 46.7d |
| S06A-HT-2320 |  | Block-17 -Submission of As-built Drawings,OEM Manuals, Warranty Certificates etc. through DMS | 10d | 2027-03-17 | 2027-03-27 | S06A-HT-2310 FF, S06A-HT-2280 SS | 64.78d |
| S06A-HT-2310 |  | Block-17 - Punch Point Closure Validation By O&M Team | 4d | 2027-03-23 | 2027-03-26 | S06A-HT-2300 | 46.7d |
| S06A-HT-2350 |  | Block-17 - HOTO Sign Off | 1d | 2027-06-24 | 2027-06-25 | S06A-HT-2340, S06A-HT-2330, S06A-HT-2320, S06A-HT-2310, S07-PG-1000, S07-PG-1010, S06A-HT-2500 | -17.3d |
|  | 2 | **BLOCK-18** |  | 2027-03-01 | 2027-06-25 |  |  |
| S06A-HT-2360 |  | Block-18 - Final Inspection Offer To O&M Team | 3d | 2027-03-01 | 2027-03-03 | S06A-CC-12690 | 46.7d |
| S06A-HT-2370 |  | Block-18 - Punch Point Identification By O&M Team | 3d | 2027-03-04 | 2027-03-06 | S06A-HT-2360 | 46.7d |
| S06A-HT-2380 |  | Block-18 - Punch Point Rectification By Project Team | 16d | 2027-03-07 | 2027-03-22 | S06A-HT-2370 | 46.7d |
| S06A-HT-2410 |  | Block-18 -House Keeping & Removal of Scraps | 19d | 2027-03-08 | 2027-03-26 | S06A-HT-2390 FF, S06A-HT-2360 SS | 46.7d |
| S06A-HT-2420 |  | Block-18 -Handing Over of Mandatory Spares | 16d | 2027-03-11 | 2027-03-27 | S06A-HT-2390 FF, S06A-HT-2360 SS | 64.78d |

| ID | WBS | Task | Duration | Start | Finish | Predecessors | Total float |
| --- | --- | --- | --- | --- | --- | --- | --- |
| S06A-HT-2400 |  | Block-18 -Submission of As-built Drawings,OEM Manuals, Warranty Certificates etc. through DMS | 10d | 2027-03-17 | 2027-03-27 | S06A-HT-2390 FF, S06A-HT-2360 SS | 64.78d |
| S06A-HT-2390 |  | Block-18 - Punch Point Closure Validation By O&M Team | 4d | 2027-03-23 | 2027-03-26 | S06A-HT-2380 | 46.7d |
| S06A-HT-2430 |  | Block-18 - HOTO Sign Off | 1d | 2027-06-24 | 2027-06-25 | S06A-HT-2420, S06A-HT-2410, S06A-HT-2400, S06A-HT-2390, S07-PG-1000, S07-PG-1010, S06A-HT-2500 | -17.3d |
|  | 3 | **BLOCK-19** |  | 2027-03-01 | 2027-06-25 |  |  |
| S06A-HT-2440 |  | Block-19 - Final Inspection Offer To O&M Team | 3d | 2027-03-01 | 2027-03-03 | S06A-CC-13340 | 46.7d |
| S06A-HT-2450 |  | Block-19 - Punch Point Identification By O&M Team | 3d | 2027-03-04 | 2027-03-06 | S06A-HT-2440 | 46.7d |
| S06A-HT-2460 |  | Block-19 - Punch Point Rectification By Project Team | 16d | 2027-03-07 | 2027-03-22 | S06A-HT-2450 | 46.7d |
| S06A-HT-2490 |  | Block-19 -House Keeping & Removal of Scraps | 19d | 2027-03-08 | 2027-03-26 | S06A-HT-2470 FF, S06A-HT-2440 SS | 46.7d |
| S06A-HT-2500 |  | Block-19 -Handing Over of Mandatory Spares | 14d | 2027-03-13 | 2027-03-26 | S06A-HT-2470 FF, S06A-HT-2440 SS | 46.7d |
| S06A-HT-2480 |  | Block-19 -Submission of As-built Drawings,OEM Manuals, Warranty Certificates etc. through DMS | 10d | 2027-03-17 | 2027-03-27 | S06A-HT-2470 FF, S06A-HT-2440 SS | 64.78d |
| S06A-HT-2470 |  | Block-19 - Punch Point Closure Validation By O&M Team | 4d | 2027-03-23 | 2027-03-26 | S06A-HT-2460 | 46.7d |
| S06A-HT-2510 |  | Block-19 - HOTO Sign Off | 1d | 2027-06-24 | 2027-06-25 | S06A-HT-2500, S06A-HT-2490, S06A-HT-2480, S06A-HT-2470, S07-PG-1000, S07-PG-1010 | -17.3d |
|  | 8 | **CONTRACT CLOSURE** |  | 2027-06-25 | 2027-07-25 |  |  |
|  | 1 | **PHASE-1 (50MW)** |  | 2027-06-25 | 2027-07-25 |  |  |
| S06A-CL-1000 |  | Block-01 -Contract Closure | 30d | 2027-06-25 | 2027-07-25 | S06A-HT-1070 | -24.89d |
| S06A-CL-1010 |  | Block-02 - Contract Closure | 30d | 2027-06-25 | 2027-07-25 | S06A-HT-1150 | -24.89d |
| S06A-CL-1020 |  | Block-03 - Contract Closure | 30d | 2027-06-25 | 2027-07-25 | S06A-HT-1230 | -24.89d |
| S06A-CL-1030 |  | Block-04 - Contract Closure | 30d | 2027-06-25 | 2027-07-25 | S06A-HT-1310 | -24.89d |
|  | 2 | **PHASE-2 (50MW)** |  | 2027-06-25 | 2027-07-25 |  |  |
| S06A-CL-1040 |  | Block-05 - Contract Closure | 30d | 2027-06-25 | 2027-07-25 | S06A-HT-1390 | -24.89d |
| S06A-CL-1050 |  | Block-06 - Contract Closure | 30d | 2027-06-25 | 2027-07-25 | S06A-HT-1470 | -24.89d |
| S06A-CL-1060 |  | Block-07 - Contract Closure | 30d | 2027-06-25 | 2027-07-25 | S06A-HT-1550 | -24.89d |
| S06A-CL-1070 |  | Block-08 - Contract Closure | 30d | 2027-06-25 | 2027-07-25 | S06A-HT-1630 | -24.89d |
|  | 3 | **PHASE-3 (50MW)** |  | 2027-06-25 | 2027-07-25 |  |  |
| S06A-CL-1120 |  | Block-09 - Contract Closure | 30d | 2027-06-25 | 2027-07-25 | S06A-HT-1710 | -24.89d |
| S06A-CL-1130 |  | Block-10 - Contract Closure | 30d | 2027-06-25 | 2027-07-25 | S06A-HT-1790 | -24.89d |
| S06A-CL-1140 |  | Block-11 - Contract Closure | 30d | 2027-06-25 | 2027-07-25 | S06A-HT-1870 | -24.89d |
| S06A-CL-1150 |  | Block-12 - Contract Closure | 30d | 2027-06-25 | 2027-07-25 | S06A-HT-1950 | -24.89d |
|  | 4 | **PHASE-4 (50MW)** |  | 2027-06-25 | 2027-07-25 |  |  |
| S06A-CL-1080 |  | Block-13 - Contract Closure | 30d | 2027-06-25 | 2027-07-25 | S06A-HT-2030 | -24.89d |
| S06A-CL-1090 |  | Block-14 - Contract Closure | 30d | 2027-06-25 | 2027-07-25 | S06A-HT-2110 | -24.89d |
| S06A-CL-1100 |  | Block-15 - Contract Closure | 30d | 2027-06-25 | 2027-07-25 | S06A-HT-2190 | -24.89d |
| S06A-CL-1110 |  | Block-16 - Contract Closure | 30d | 2027-06-25 | 2027-07-25 | S06A-HT-2270 | -24.89d |
|  | 5 | **PHASE-5 (34MW)** |  | 2027-06-25 | 2027-07-25 |  |  |
| S06A-CL-1160 |  | Block-17 - Contract Closure | 30d | 2027-06-25 | 2027-07-25 | S06A-HT-2350 | -24.89d |
| S06A-CL-1170 |  | Block-18 - Contract Closure | 30d | 2027-06-25 | 2027-07-25 | S06A-HT-2430 | -24.89d |
| S06A-CL-1180 |  | Block-19 - Contract Closure | 30d | 2027-06-25 | 2027-07-25 | S06A-HT-2510 | -24.89d |

## Version 2 (data date 2026-09-26, saved 2026-10-01, file FY26-P18 S6a 01.10.2026.xer)

Note of the change: Khavda S6a digital twin: PDF + P6 schedule to IFC4 4D model and web viewer

Last finish 2027-10-01 → 2027-07-25 (-68d). Complete tasks 497 → 534.

Changed:

| ID | Task | Start | Finish | Total float | Other |
| --- | --- | --- | --- | --- | --- |
| 1 | **MILESTONES** |  | 2027-10-01 → 2027-07-25 (-68d) |  |  |
| 1 | **GENERAL** |  | 2027-10-01 → 2027-07-25 (-68d) |  |  |
| S06A-LD-1000 | Land Sub Lease Agreement with SPV | 2026-08-23 → 2026-09-27 (+35d) | 2026-08-27 → 2026-10-01 (+35d) | 395.12d → 292.5d |  |
| S06A-MS-1030 | Contract Closure | 2027-10-01 → 2027-07-25 (-68d) | 2027-10-01 → 2027-07-25 (-68d) |  |  |
| 2 | **COMMISSIONING** | 2027-01-01 → 2026-12-24 (-8d) |  |  |  |
| 1 | **PHASE-1 (50MW)** | 2027-01-01 → 2026-12-24 (-8d) | 2027-01-15 → 2027-01-07 (-8d) |  |  |
| S06A-MS-1040 | First Time Charging - Phase-I (50 MW) | 2027-01-01 → 2026-12-24 (-8d) | 2027-01-01 → 2026-12-24 (-8d) | 152d → 160d |  |
| S06A-MS-1060 | Trial Run Finish - Phase-I (50 MW) | 2027-01-08 → 2026-12-31 (-8d) | 2027-01-08 → 2026-12-31 (-8d) | 145d → 153d |  |
| S06A-MS-1050 | Robot Commissioning Finish - Phase-I (50 MW) | 2027-01-12 → 2027-01-04 (-8d) | 2027-01-12 → 2027-01-04 (-8d) | 141d → 149d |  |
| S06A-MS-1070 | COD - Phase-I (50 MW) | 2027-01-15 → 2027-01-07 (-8d) | 2027-01-15 → 2027-01-07 (-8d) | 138d → 146d |  |
| 2 | **PHASE-2 (50MW)** | 2027-01-10 → 2027-01-02 (-8d) | 2027-01-24 → 2027-01-16 (-8d) |  |  |
| S06A-MS-1080 | First Time Charging - Phase-II (50 MW) | 2027-01-10 → 2027-01-02 (-8d) | 2027-01-10 → 2027-01-02 (-8d) | 142.7d → 150.7d |  |
| S06A-MS-1100 | Trial Run Finish - Phase-II (50 MW) | 2027-01-17 → 2027-01-09 (-8d) | 2027-01-17 → 2027-01-09 (-8d) | 135.7d → 143.7d |  |
| S06A-MS-1090 | Robot Commissioning Finish - Phase-II (50 MW) | 2027-01-21 → 2027-01-13 (-8d) | 2027-01-21 → 2027-01-13 (-8d) | 131.7d → 139.7d |  |
| S06A-MS-1110 | COD - Phase-II (50 MW) | 2027-01-24 → 2027-01-16 (-8d) | 2027-01-24 → 2027-01-16 (-8d) | 128.7d → 136.7d |  |
| 3 | **PHASE-3 (50MW)** | 2027-01-15 → 2027-01-07 (-8d) | 2027-01-30 → 2027-01-21 (-9d) |  |  |
| S06A-MS-1120 | First Time Charging - Phase-III (50 MW) | 2027-01-15 → 2027-01-07 (-8d) | 2027-01-15 → 2027-01-07 (-8d) | 137.7d → 145.7d |  |
| S06A-MS-1140 | Trial Run Finish - Phase-III (50 MW) | 2027-01-22 → 2027-01-14 (-8d) | 2027-01-22 → 2027-01-14 (-8d) | 130.7d → 138.7d |  |
| S06A-MS-1130 | Robot Commissioning Finish - Phase-III (50 MW) | 2027-01-27 → 2027-01-18 (-9d) | 2027-01-27 → 2027-01-18 (-9d) | 126.7d → 134.7d |  |
| S06A-MS-1150 | COD - Phase-III (50 MW) | 2027-01-30 → 2027-01-21 (-9d) | 2027-01-30 → 2027-01-21 (-9d) | 123.7d → 131.7d |  |
| 4 | **PHASE-4 (50MW)** | 2027-02-12 → 2027-02-15 (+3d) | 2027-02-26 → 2027-02-28 (+2d) |  |  |
| S06A-MS-1160 | First Time Charging - Phase-IV (50 MW) | 2027-02-12 → 2027-02-15 (+3d) | 2027-02-12 → 2027-02-15 (+3d) | 110.7d → 108d |  |
| S06A-MS-1180 | Trial Run Finish - Phase-IV (50 MW) | 2027-02-19 → 2027-02-22 (+3d) | 2027-02-19 → 2027-02-22 (+3d) | 103.7d → 101d |  |
| S06A-MS-1170 | Robot Commissioning Finish - Phase-IV (50 MW) | 2027-02-23 → 2027-02-26 (+3d) | 2027-02-23 → 2027-02-26 (+3d) | 99.7d → 97d |  |
| S06A-MS-1190 | COD - Phase-IV (50 MW) | 2027-02-26 → 2027-02-28 (+2d) | 2027-02-26 → 2027-02-28 (+2d) | 96.7d → 95d |  |
| 3 | **MATERIAL DELIVERY** |  | 2027-01-01 → 2026-12-27 (-5d) |  |  |
| S06A-MS-1260 | Module Dispatch from China Start | 2026-10-30 → 2026-10-22 (-8d) | 2026-10-30 → 2026-10-22 (-8d) | 215.7d → 223.7d |  |
| S06A-MS-1270 | Module Delivery at Site Finish | 2027-01-01 → 2026-12-27 (-5d) | 2027-01-01 → 2026-12-27 (-5d) | 152d → 157d |  |
| 4 | **CONSTRUCTION** |  | 2026-11-18 → 2026-11-10 (-8d) |  |  |
| S06A-MS-1290 | Module Installation Start | 2026-11-18 → 2026-11-10 (-8d) | 2026-11-18 → 2026-11-10 (-8d) | 196.7d → 204.7d |  |
| 5 | **CLIENT INPUT & HANDOVER** | 2026-08-23 → 2026-09-27 (+35d) | 2026-12-29 → 2026-12-21 (-8d) |  |  |
| S06A-CI-1000 | Handing Over Encumbrance Free Land | 2026-08-23 → 2026-09-27 (+35d) | 2026-08-23 → 2026-09-27 (+35d) | 402.22d → 299.56d |  |
| S06A-CI-1010 | PSS Power Supply for FTC | 2026-12-29 → 2026-12-21 (-8d) | 2026-12-29 → 2026-12-21 (-8d) | 28.78d → 53.78d |  |
| 6 | **SITE ESTABLISHMENT AND PRELIMINARY CIVIL WORKS** |  | 2026-10-17 → 2026-11-21 (+35d) |  |  |
| S06A-SE-1010 | Development of Labour Camp |  | 2026-10-17 → 2026-11-21 (+35d) | 347.22d → 244.56d |  |
| 2 | **PRE-CONSTRUCTION** |  | 2026-08-31 → 2026-10-05 (+35d) |  |  |
| 2 | **CLEARANCES & APPROVALS** |  | 2026-08-31 → 2026-10-05 (+35d) |  |  |
| PR-CA-04-010 | Application Submission |  |  |  | resources none → Land Resource [13500 h]; Weightage |
| 8 | **OTHERS IF ANY** |  | 2026-08-31 → 2026-10-05 (+35d) |  |  |
| PR-CA-27-018 | Contract Labour Registration (CLRA) License |  |  |  | resources none → Land Resource [13500 h]; Weightage |
| PR-CA-27-019 | Registration Under Buildings And Other Construction Works (BOCW) |  |  |  | resources none → Land Resource [13500 h]; Weightage |
| PR-CA-27-015 | EAR Policy |  |  |  | resources none → Land Resource [13500 h]; Weightage |
| PR-CA-27-013 | First Time Charging Approval of Line & Bay from RLDC | 2026-08-23 → 2026-09-27 (+35d) | 2026-08-23 → 2026-09-27 (+35d) | 157d → 139d |  |
| PR-CA-27-012 | SPV Name Finalization | 2026-08-28 → 2026-10-02 (+35d) | 2026-08-31 → 2026-10-05 (+35d) | 395.12d → 292.5d |  |
| 3 | **ENGINEERING** |  | 2026-08-28 → 2026-09-29 (+32d) |  |  |
| 1 | **PLANT LEVEL** |  | 2026-08-28 → 2026-09-29 (+32d) |  |  |
| 1 | **CIVIL** |  | 2026-08-25 → 2026-09-29 (+35d) |  |  |
| 1 | **GENERAL** |  | 2026-08-25 → 2026-09-29 (+35d) |  |  |
| S06A-EN-1050 | Design Basis - Civil & Structural Works |  |  |  | resources none → Engineering Resource [225 h]; Weightage [8036.3 h] |
| S06A-EN-1000 | Geo-Technical Investigation Report + ERT Report |  |  |  | resources none → Engineering Resource [135 h]; Weightage [8035.71 h] |
| S06A-EN-1010 | Topography And Contour Survey Report |  |  |  | resources none → Engineering Resource [135 h]; Weightage [8035.71 h] |
| S06A-EN-1020 | Hydrology Report |  |  |  | resources none → Engineering Resource [54 h]; Weightage [8035.71 h] |
| S06A-EN-1030 | Water Test Report |  |  |  | resources none → Engineering Resource [54 h]; Weightage [8035.71 h] |
| S06A-EN-1040 | MMS Pile Load Test Results [Pull Out & Lateral Test] |  | 2026-08-25 → 2026-09-29 (+35d) | 399.22d → 296.56d | resources none → Engineering Resource [45 h]; Weightage [8035.6 h] |
| S06A-EN-1060 | Inverter Duty Transformer - Foundation Design Calculations |  |  |  | resources none → Engineering Resource [216 h]; Weightage [8035.71 h] |
| S06A-EN-1070 | Inverter Duty Transformer - Foundation Layout And RC Details |  |  |  | resources none → Engineering Resource [216 h]; Weightage [8035.71 h] |
| S06A-EN-1080 | NIFPS Foundation & Burnt Oil Pit Design Calculation |  |  |  | resources none → Engineering Resource [2592 h]; Weightage [8035.71 h] |
| S06A-EN-1090 | GA & RC Details Of Burnt Oil Pit & NIFPS for IDT |  |  |  | resources none → Engineering Resource [216 h]; Weightage [8035.71 h] |
| S06A-EN-1100 | Inverter Duty Transformer - Yard Fence Details |  |  |  | resources none → Engineering Resource [261 h]; Weightage [8035.71 h] |
| S06A-EN-1170 | IDT Station - LT - HT Panel Platform Fencing Layout And Details |  |  |  | resources none → Engineering Resource [306 h]; Weightage [8035.71 h] |
| S06A-EN-1140 | IDT Station LT - HT Panel Platform Foundation Layout And Details |  |  |  | resources none → Engineering Resource [270 h]; Weightage [8035.71 h] |
| S06A-EN-1150 | IDT Station LT- HT Panel Platform R.C.C Beam & Slab Layout And Details |  |  |  | resources none → Engineering Resource [270 h]; Weightage [8035.71 h] |
| S06A-EN-1160 | IDT Station - LT - HT Panel Platform Canopy Layout And Details |  |  |  | resources none → Engineering Resource [270 h]; Weightage [8035.71 h] |
| S06A-EN-1130 | IDT Station LT - HT Panel Architectural Plan, Sections And Elevations |  |  |  | resources none → Engineering Resource [405 h]; Weightage [8035.71 h] |
| S06A-EN-1180 | HT-LT Platform Shed Fabrication Details |  |  |  | resources none → Engineering Resource [45 h]; Weightage [8035.71 h] |
| S06A-EN-1110 | IDT Station - LT - HT Panel Foundation Design Calculations |  |  |  | resources none → Engineering Resource [306 h]; Weightage [8035.71 h] |
| S06A-EN-1120 | IDT Station - LT - HT Panel Super Structure And Canopy Design Calculations |  |  |  | resources none → Engineering Resource [135 h]; Weightage [8035.71 h] |
| S06A-EN-1200 | Inverter Mounting Structure GA & Foundation Details |  |  |  | resources none → Engineering Resource [220 h]; Weightage [8035.71 h] |
| S06A-EN-1210 | Inverter Mounting Structure Fabrication |  |  |  | resources none → Engineering Resource [220 h]; Weightage [8035.71 h] |
| S06A-EN-1190 | Design Calculations For Inverter Mounting Structure |  |  |  | resources none → Engineering Resource [54 h]; Weightage [8035.71 h] |

| ID | Task | Start | Finish | Complete | Total float | Other |
| --- | --- | --- | --- | --- | --- | --- |
| S06A-EN-1220 | WMS Foundation Design Calculations |  |  |  |  | resources none → Engineering Resource [54 h]; Weightage [8035.71 h] |
| S06A-EN-1230 | WMS Foundation GA & Details |  |  |  |  | resources none → Engineering Resource [54 h]; Weightage [8035.71 h] |
| S06A-EN-1240 | WMS Location Array Layout |  |  |  |  | resources none → Engineering Resource [36 h]; Weightage [8035.71 h] |
| S06A-EN-1250 | LA Foundation Design Calculations |  |  |  |  | resources none → Engineering Resource [54 h]; Weightage [8035.71 h] |
| S06A-EN-1260 | LA Foundation GA & Details |  |  |  |  | resources none → Engineering Resource [54 h]; Weightage [8035.71 h] |
| S06A-EN-1270 | Street Light Foundation Design Calculations |  |  |  |  | resources none → Engineering Resource [54 h]; Weightage [8035.71 h] |
| S06A-EN-1280 | Street Light Foundation GA & Details |  |  |  |  | resources none → Engineering Resource [54 h]; Weightage [8035.71 h] |
| 8 | **MODULE CLEANING SYSTEM** |  | 2026-08-25 → 2026-09-29 (+35d) |  |  |  |
| S06A-EN-1290 | Robotic Cleaning System Docking Station Design Calculations |  | 2026-08-25 → 2026-09-29 (+35d) |  | 399.22d → 296.56d | resources none → Engineering Resource [54 h]; Weightage [8035.71 h] |
| S06A-EN-1300 | Robotic Cleaning System Docking Station Structure Detailed GA Details |  | 2026-08-25 → 2026-09-29 (+35d) |  | 399.22d → 296.56d | resources none → Engineering Resource [54 h]; Weightage [8035.71 h] |
| S06A-EN-1310 | Typical Pile Details For Docking Station |  | 2026-08-25 → 2026-09-29 (+35d) |  | 130d → 112d | resources none → Engineering Resource [54 h]; Weightage [8035.71 h] |
| S06A-EN-1320 | Robotic Cleaning System Docking Station Structure Fabrication Details |  | 2026-08-25 → 2026-09-29 (+35d) |  | 399.22d → 296.56d | resources none → Engineering Resource [54 h]; Weightage [8035.71 h] |
| S06A-EN-1340 | Cable Supporting Structure Drawing |  |  |  |  | resources none → Engineering Resource [225 h]; Weightage [8035.71 h] |
| S06A-EN-1330 | Cable Supporting Structure Design Calculation |  |  |  |  | resources none → Engineering Resource [225 h]; Weightage [8035.71 h] |
| S06A-EN-1360 | Plant Drainage System Drawing |  |  |  |  | resources none → Engineering Resource [54 h]; Weightage [8035.71 h] |
| S06A-EN-1350 | Plant Drainage System Design Calculations |  |  |  |  | resources none → Engineering Resource [54 h]; Weightage [8035.71 h] |
| S06A-EN-1370 | Road Layout For Plot |  |  |  |  | resources none → Engineering Resource [54 h]; Weightage [8035.71 h] |
| S06A-EN-1380 | Road Detailed Drawing And Cross Sections |  |  |  |  | resources none → Engineering Resource [54 h]; Weightage [8035.71 h] |
| S06A-EN-1390 | Typical Culvert Details |  |  |  |  | resources none → Engineering Resource [90 h]; Weightage [8035.71 h] |
| S06A-EN-1400 | MMS Pile Load Test Marking Layout (Pullout , Lateral And Compression Test ) |  |  |  |  | resources none → Engineering Resource [54 h]; Weightage [8035.71 h] |
| S06A-EN-1410 | Geo-Technical Investigation Borehole Location |  |  |  |  | resources none → Engineering Resource [18 h]; Weightage [8035.71 h] |
| S06A-EN-1420 | FIX TILT Pile Load Test Methodology |  |  |  |  | resources none → Weightage [8035.71 h]; Engineering Resource [36 h] |
| S06A-EN-1430 | FIX TILT Design Basis Report |  |  |  |  | resources none → Weightage [8035.71 h]; Engineering Resource [36 h] |
| S06A-EN-1440 | Design Calculation for MMS FIX TILT Foundation |  |  |  |  | resources none → Weightage [8035.71 h]; Engineering Resource [36 h] |
| S06A-EN-1460 | GA of 2Px28 MMS Exterior Table (MMS FIX TILT GA) |  |  |  |  | resources none → Weightage [8035.71 h]; Engineering Resource [36 h] |
| S06A-EN-1470 | GA of 2Px28 MMS Interior Table (MMS FIX TILT GA) |  |  |  |  | resources none → Weightage [8035.71 h]; Engineering Resource [36 h] |
| S06A-EN-1480 | FIX TILT Foundation Drawings |  |  |  |  | resources none → Weightage [8035.71 h]; Engineering Resource [36 h] |
| S06A-EN-1490 | MMS FIX TILT Fabrication Drawings (Exterior) |  |  |  |  | resources none → Weightage [8035.71 h]; Engineering Resource [36 h] |
| S06A-EN-1500 | MMS FIX TILT Fabrication Drawings (Interior) |  |  |  |  | resources none → Weightage [8035.71 h]; Engineering Resource [36 h] |
| S06A-EN-1450 | Design Calculation for MMS FIX TILT Piers |  |  |  |  | resources none → Weightage [8035.71 h]; Engineering Resource [36 h] |
| S06A-EN-1510 | FIX TILT Slope Analysis |  |  |  |  | resources none → Weightage [8035.71 h]; Engineering Resource [36 h] |
| S06A-EN-1530 | Cable Hanger Arrangement- Fabrication |  |  |  |  | resources none → Engineering Resource [216 h]; Weightage [8035.71 h] |
| S06A-EN-1520 | Cable Hanger Arrangement- GA |  |  |  |  | resources none → Engineering Resource [216 h]; Weightage [8035.71 h] |
| 16 | **ROBOT COMMUNICATION BOX** |  | 2026-08-25 → 2026-09-29 (+35d) |  |  |  |
| S06A-EN-1540 | Robot Communication Box GA & Foundation |  | 2026-08-25 → 2026-09-29 (+35d) |  | 307d → 272d | resources none → Engineering Resource [45 h]; Weightage [8035.71 h] |
| S06A-EN-1550 | Robot Installation Manual |  | 2026-08-25 → 2026-09-29 (+35d) |  | 134d → 116d | resources none → Engineering Resource [171.43 h]; Weightage [8035.71 h] |
| 2 | **ELECTRICAL** |  | 2026-08-28 → 2026-09-28 (+31d) |  |  |  |
| S06A-EN-1560 | Overall Plant Array Layout |  |  |  |  | resources none → Engineering Resource [45 h]; Weightage [8035.71 h] |
| S06A-EN-1570 | Overall Plant AC SLD |  |  |  |  | resources none → Engineering Resource [405 h]; Weightage [8035.71 h] |
| S06A-EN-1590 | Auxiliary Load Sizing & Auxiliary SLD |  |  |  |  | resources none → Engineering Resource [306 h]; Weightage [8035.71 h] |
| S06A-EN-1580 | Overall Plant DC SLD |  |  |  |  | resources none → Engineering Resource [45 h]; Weightage [8035.71 h] |
| S06A-EN-1600 | Inverter Datasheet |  |  |  |  | resources none → Engineering Resource [9 h]; Weightage [8035.71 h] |
| S06A-EN-1610 | Inverter Installation Manual |  |  |  |  | resources none → Engineering Resource [25.67 h]; Weightage [8035.71 h] |
| S06A-EN-1620 | PV Module Data Sheet |  |  |  |  | resources none → Engineering Resource [9 h]; Weightage [8035.71 h] |
| S06A-EN-1630 | PV Module Installation Manual |  |  |  |  | resources none → Engineering Resource [160.67 h]; Weightage [8035.71 h] |
| S06A-EN-1640 | GA Drawings With List of Fittings For IDT |  |  |  |  | resources none → Engineering Resource [9 h]; Weightage [8035.71 h] |
| S06A-EN-1650 | GA of Marshalling Box & Wiring Diagram |  |  |  |  | resources none → Engineering Resource [9 h]; Weightage [8035.71 h] |
| S06A-EN-1660 | NIFPS (Nitrogen Injection & Fire Protection System) Drawings |  |  |  |  | resources none → Engineering Resource [9 h]; Weightage [8035.71 h] |
| S06A-EN-1670 | GTP of IDT |  |  |  |  | resources none → Engineering Resource [9 h]; Weightage [8035.71 h] |
| S06A-EN-1680 | O&M Manual Of IDT |  |  |  |  | resources none → Engineering Resource [8.5 h]; Weightage [8035.71 h] |
| S06A-EN-1690 | HT Cable Sizing Calculation |  |  |  |  | resources none → Engineering Resource [81 h]; Weightage [8035.71 h] |
| S06A-EN-1700 | GTP of HT Cable 3C X 300 Sq.mm |  |  |  |  | resources none → Engineering Resource [9 h]; Weightage [8035.71 h] |
| S06A-EN-1730 | GTP of LT Cable 3C X 300 Sq.mm |  |  |  |  | resources none → Engineering Resource [9 h]; Weightage [8035.71 h] |
| S06A-EN-1720 | LT Cable Sizing Calculation |  |  |  |  | resources none → Engineering Resource [72 h]; Weightage [8035.71 h] |
| S06A-EN-1710 | GTP of DC String Cable |  |  |  |  | resources none → Engineering Resource [9 h]; Weightage [8035.71 h] |
| S06A-EN-1770 | GTP of HDPE / DWC Pipe |  |  |  |  | resources none → Engineering Resource [9 h]; Weightage [8035.71 h] |
| S06A-EN-1740 | GA, GTP, SLD, BOM And Scheme Drawing Of FRP Based LT Panel Type-1 |  |  |  |  | resources none → Engineering Resource [9 h]; Weightage [8035.71 h] |
| S06A-EN-1750 | GA, GTP, SLD, BOM And Scheme Drawing Of FRP Based LT Panel Type-NNX |  |  |  |  | resources none → Engineering Resource [9 h]; Weightage [8035.71 h] |
| S06A-EN-1760 | GA, GTP, SLD, BOM And Scheme Drawing Of ACDB |  |  |  |  | resources none → Engineering Resource [54 h]; Weightage [8035.71 h] |
| S06A-EN-1780 | GA, GTP of Auxiliary Transformer |  |  |  |  | resources none → Engineering Resource [54 h]; Weightage [8035.71 h] |
| S06A-EN-1790 | GTP of LT & Control Cable |  |  |  |  | resources none → Engineering Resource [54 h]; Weightage [8035.71 h] |
| S06A-EN-1810 | GA, GTP Drawing of HT Outdoor Panel |  |  |  |  | resources none → Engineering Resource [54 h]; Weightage [8035.71 h] |
| 14 | **ROBORT** | 2026-08-23 → 2026-09-01 (+9d) | 2026-08-28 → 2026-09-03 (+6d) |  |  |  |
| S06A-EN-1800 | GA, GTP, SLD, MBOM And Scheme Drawing | 2026-08-23 → 2026-09-01 A (+9d) | 2026-08-28 → 2026-09-03 A (+6d) | 0% → 100% | 22d → none | resources none → Engineering Resource [54 h]; Weightage [8035.71 h] |
| S06A-EN-1820 | GA, GTP of MC4 Connector |  |  |  |  | resources none → Engineering Resource [54 h]; Weightage [8035.71 h] |
| S06A-EN-1830 | GA, GTP of Cable Jointing & Termination Kits |  |  |  |  | resources none → Engineering Resource [54 h]; Weightage [8035.71 h] |
| S06A-EN-1840 | GTP of Earth Electrodes |  |  |  |  | resources none → Engineering Resource [54 h]; Weightage [8035.71 h] |
| S06A-EN-1850 | GA, GTP Of Lugs & Glands |  |  |  |  | resources none → Engineering Resource [54 h]; Weightage [8035.71 h] |
| S06A-EN-1860 | GTP Of Lighting Fixtures |  |  |  |  | resources none → Engineering Resource [54 h]; Weightage [8035.71 h] |
| S06A-EN-1870 | WMS with AWS Layout |  |  |  |  | resources none → Engineering Resource [54 h]; Weightage [8035.71 h] |

| ID | Task | Start | Finish | Complete | Total float | Other |
| --- | --- | --- | --- | --- | --- | --- |
| S06A-EN-1880 | WMS with AWS GTP, DRAWINGS & QAP |  |  |  |  | resources none → Weightage [8035.71 h]; Engineering Resource [36 h] |
| S06A-EN-1890 | Earthing Calculation |  |  |  |  | resources none → Engineering Resource [54 h]; Weightage [8035.71 h] |
| S06A-EN-1900 | Typical Array Earthing Details |  |  |  |  | resources none → Engineering Resource [54 h]; Weightage [8035.71 h] |
| S06A-EN-1910 | Typical Array Lighting Protection Details |  |  |  |  | resources none → Engineering Resource [54 h]; Weightage [8035.71 h] |
| S06A-EN-1920 | LT Cable Typical Section Details Drawing |  |  |  |  | resources none → Engineering Resource [54 h]; Weightage [8035.71 h] |
| S06A-EN-1940 | HT Cable Typical Section Details Drawing |  |  |  |  | resources none → Engineering Resource [54 h]; Weightage [8035.71 h] |
| S06A-EN-1930 | HT & FO Cable Routing Layout |  |  |  |  | resources none → Engineering Resource [54 h]; Weightage [8035.71 h] |
| S06A-EN-1950 | HT Cable Schedule |  |  |  |  | resources none → Engineering Resource [54 h]; Weightage [8035.71 h] |
| S06A-EN-1960 | FO Cable Schedule |  |  |  |  | resources none → Engineering Resource [54 h]; Weightage [8035.71 h] |
| S06A-EN-1970 | Typical DC String Cable Arrangement |  |  |  |  | resources none → Engineering Resource [54 h]; Weightage [8035.71 h] |
| 27 | **IDT STATION** |  | 2026-08-28 → 2026-09-03 (+6d) |  |  |  |
| S06A-EN-1990 | Equipment Layout Of IDT Station Type Bb (33Kv Switchgear) |  |  |  |  | resources none → Engineering Resource [252 h]; Weightage [8035.71 h] |
| S06A-EN-2000 | Illumination Layout Of IDT Station Type Bb (33Kv Switchgear) |  |  |  |  | resources none → Engineering Resource [198 h]; Weightage [8035.71 h] |
| S06A-EN-2020 | Earthing Layout Of IDT Station Type Bb (33Kv Switchgear) |  |  |  |  | resources none → Engineering Resource [54 h]; Weightage [8035.71 h] |
| S06A-EN-1980 | Lightening Protection System Layout |  |  |  |  | resources none → Engineering Resource [54 h]; Weightage [8035.71 h] |
| S06A-EN-2010 | Cable Route Layout Of IDT Station Type Bb (33Kv Switchgear) |  |  |  |  | resources none → Engineering Resource [54 h]; Weightage [8035.71 h] |
| S06A-EN-2030 | Control & Auxiliary Cable Schedule Of IDT Station | 2026-08-23 → 2026-09-01 A (+9d) | 2026-08-28 → 2026-09-03 A (+6d) | 0% → 100% | 128d → none | resources none → Engineering Resource [54 h]; Weightage [8035.71 h] |
| 28 | **CONTROL & INSTRUMENTATION CABLES** |  | 2026-08-24 → 2026-09-07 (+14d) |  |  |  |
| S06A-EN-2060 | RS485, CAT6 & FO Cable GTP, Cross-Section Drawings & QAP |  |  |  |  | resources none → Weightage [8035.71 h]; Engineering Resource [36 h] |
| S06A-EN-2050 | Communication & Control Cable Schedule of SCADA |  | 2026-08-24 → 2026-09-07 A (+14d) | 50% → 100% | 400.22d → none | resources none → Weightage [8035.71 h]; Engineering Resource [36 h] |
| S06A-EN-2040 | Communication & Control Cable Routing Layout of SCADA |  |  |  |  | resources none → Weightage [8035.71 h]; Engineering Resource [36 h] |
| S06A-EN-2070 | Module Allocation Schedule |  |  |  |  | resources none → Weightage [8035.71 h]; Engineering Resource [36 h] |
| 30 | **SCADA & PPC** |  | 2026-08-24 → 2026-09-28 (+35d) |  |  |  |
| S06A-EN-2080 | SCADA System Architecture Communication Scheme |  |  |  |  | resources none → Weightage [8035.71 h]; Engineering Resource [36 h] |
| S06A-EN-2100 | SCADA & PPC GTP, GA Drawings & QAP |  |  |  |  | resources none → Weightage [8035.71 h]; Engineering Resource [36 h] |
| S06A-EN-2090 | I/O List of SCADA System |  | 2026-08-24 → 2026-09-28 (+35d) |  | 308d → 273d | resources none → Weightage [8035.71 h]; Engineering Resource [36 h] |
| S06A-EN-2110 | IP List |  |  |  |  | resources none → Weightage [8035.71 h]; Engineering Resource [36 h] |
| S06A-EN-2120 | FIX TILT Pier Coordinates & Layout For Block-01 |  |  |  |  | resources none → Engineering Resource [45 h]; Weightage [11842.1 h] |
| S06A-EN-2130 | FIX TILT Pier Coordinates & Layout For Block-02 |  |  |  |  | resources none → Engineering Resource [45 h]; Weightage [11842.1 h] |
| S06A-EN-2140 | FIX TILT Pier Coordinates & Layout For Block-03 |  |  |  |  | resources none → Engineering Resource [45 h]; Weightage [11842.1 h] |
| S06A-EN-2150 | FIX TILT Pier Coordinates & Layout For Block-04 |  |  |  |  | resources none → Engineering Resource [45 h]; Weightage [11842.1 h] |
| S06A-EN-2160 | FIX TILT Pier Coordinates & Layout For Block-05 |  |  |  |  | resources none → Engineering Resource [45 h]; Weightage [11842.1 h] |
| S06A-EN-2170 | FIX TILT Pier Coordinates & Layout For Block-06 |  |  |  |  | resources none → Engineering Resource [45 h]; Weightage [11842.1 h] |
| S06A-EN-2180 | FIX TILT Pier Coordinates & Layout For Block-07 |  |  |  |  | resources none → Engineering Resource [45 h]; Weightage [11842.1 h] |
| S06A-EN-2190 | FIX TILT Pier Coordinates & Layout For Block-08 |  |  |  |  | resources none → Engineering Resource [45 h]; Weightage [11842.1 h] |
| S06A-EN-2200 | FIX TILT Pier Coordinates & Layout For Block-09 |  |  |  |  | resources none → Engineering Resource [45 h]; Weightage [11842.1 h] |
| S06A-EN-2210 | FIX TILT Pier Coordinates & Layout For Block-10 |  |  |  |  | resources none → Engineering Resource [45 h]; Weightage [11842.1 h] |
| S06A-EN-2220 | FIX TILT Pier Coordinates & Layout For Block-11 |  |  |  |  | resources none → Engineering Resource [45 h]; Weightage [11842.1 h] |
| S06A-EN-2230 | FIX TILT Pier Coordinates & Layout For Block-12 |  |  |  |  | resources none → Engineering Resource [45 h]; Weightage [11842.1 h] |
| S06A-EN-2240 | FIX TILT Pier Coordinates & Layout For Block-13 |  |  |  |  | resources none → Engineering Resource [45 h]; Weightage [11842.1 h] |
| S06A-EN-2250 | FIX TILT Pier Coordinates & Layout For Block-14 |  |  |  |  | resources none → Engineering Resource [45 h]; Weightage [11842.1 h] |
| S06A-EN-2260 | FIX TILT Pier Coordinates & Layout For Block-15 |  |  |  |  | resources none → Engineering Resource [45 h]; Weightage [11842.1 h] |
| S06A-EN-2270 | FIX TILT Pier Coordinates & Layout For Block-16 |  |  |  |  | resources none → Engineering Resource [45 h]; Weightage [11842.1 h] |
| S06A-EN-2280 | FIX TILT Pier Coordinates & Layout For Block-17 |  |  |  |  | resources none → Engineering Resource [45 h]; Weightage [11842.1 h] |
| S06A-EN-2290 | FIX TILT Pier Coordinates & Layout For Block-18 |  |  |  |  | resources none → Engineering Resource [45 h]; Weightage [11842.1 h] |
| S06A-EN-2300 | FIX TILT Pier Coordinates & Layout For Block-19 |  |  |  |  | resources none → Engineering Resource [45 h]; Weightage [11841.9 h] |
| S06A-EN-2310 | Array Earthing Layout (Plot-S07) For Block-01 |  |  |  |  | resources none → Engineering Resource [45 h]; Weightage [3947.37 h] |
| S06A-EN-2320 | Array Earthing Layout (Plot-S07) For Block-02 |  |  |  |  | resources none → Engineering Resource [45 h]; Weightage [3947.37 h] |
| S06A-EN-2330 | Array Earthing Layout (Plot-S07) For Block-03 |  |  |  |  | resources none → Engineering Resource [45 h]; Weightage [3947.37 h] |
| S06A-EN-2340 | Array Earthing Layout (Plot-S07) For Block-04 |  |  |  |  | resources none → Engineering Resource [45 h]; Weightage [3947.37 h] |
| S06A-EN-2350 | Array Earthing Layout (Plot-S07) For Block-05 |  |  |  |  | resources none → Engineering Resource [45 h]; Weightage [3947.37 h] |
| S06A-EN-2360 | Array Earthing Layout (Plot-S07) For Block-06 |  |  |  |  | resources none → Engineering Resource [45 h]; Weightage [3947.37 h] |
| S06A-EN-2370 | Array Earthing Layout (Plot-S07) For Block-07 |  |  |  |  | resources none → Engineering Resource [45 h]; Weightage [3947.37 h] |
| S06A-EN-2380 | Array Earthing Layout (Plot-S07) For Block-08 |  |  |  |  | resources none → Engineering Resource [45 h]; Weightage [3947.37 h] |
| S06A-EN-2390 | Array Earthing Layout (Plot-S07) For Block-09 |  |  |  |  | resources none → Engineering Resource [45 h]; Weightage [3947.37 h] |
| S06A-EN-2400 | Array Earthing Layout (Plot-S07) For Block-10 |  |  |  |  | resources none → Engineering Resource [45 h]; Weightage [3947.37 h] |
| S06A-EN-2410 | Array Earthing Layout (Plot-S07) For Block-11 |  |  |  |  | resources none → Engineering Resource [45 h]; Weightage [3947.37 h] |
| S06A-EN-2420 | Array Earthing Layout (Plot-S07) For Block-12 |  |  |  |  | resources none → Engineering Resource [45 h]; Weightage [3947.37 h] |
| S06A-EN-2430 | Array Earthing Layout (Plot-S07) For Block-13 |  |  |  |  | resources none → Engineering Resource [45 h]; Weightage [3947.37 h] |
| S06A-EN-2440 | Array Earthing Layout (Plot-S07) For Block-14 |  |  |  |  | resources none → Engineering Resource [45 h]; Weightage [3947.37 h] |
| S06A-EN-2450 | Array Earthing Layout (Plot-S07) For Block-15 |  |  |  |  | resources none → Engineering Resource [45 h]; Weightage [3947.37 h] |
| S06A-EN-2460 | Array Earthing Layout (Plot-S07) For Block-16 |  |  |  |  | resources none → Engineering Resource [45 h]; Weightage [3947.37 h] |
| S06A-EN-2470 | Array Earthing Layout (Plot-S07) For Block-17 |  |  |  |  | resources none → Engineering Resource [45 h]; Weightage [3947.37 h] |
| S06A-EN-2480 | Array Earthing Layout (Plot-S07) For Block-18 |  |  |  |  | resources none → Engineering Resource [45 h]; Weightage [3947.37 h] |
| S06A-EN-2490 | Array Earthing Layout (Plot-S07) For Block-19 |  |  |  |  | resources none → Engineering Resource [45 h]; Weightage [3947.37 h] |
| S06A-EN-2500 | LT Cable Routing Layout (Plot-S07) For Block-01 |  |  |  |  | resources none → Engineering Resource [45 h]; Weightage [3947.37 h] |
| S06A-EN-2510 | LT Cable Routing Layout (Plot-S07) For Block-02 |  |  |  |  | resources none → Engineering Resource [45 h]; Weightage [3947.37 h] |
| S06A-EN-2520 | LT Cable Routing Layout (Plot-S07) For Block-03 |  |  |  |  | resources none → Engineering Resource [45 h]; Weightage [3947.37 h] |
| S06A-EN-2530 | LT Cable Routing Layout (Plot-S07) For Block-04 |  |  |  |  | resources none → Engineering Resource [45 h]; Weightage [3947.37 h] |
| S06A-EN-2540 | LT Cable Routing Layout (Plot-S07) For Block-05 |  |  |  |  | resources none → Engineering Resource [45 h]; Weightage [3947.37 h] |

| ID | Task | Start | Finish | Duration | Complete | Total float | Predecessors | Other |
| --- | --- | --- | --- | --- | --- | --- | --- | --- |
| S06A-EN-2550 | LT Cable Routing Layout (Plot-S07) For Block-06 |  |  |  |  |  |  | resources none → Engineering Resource [45 h]; Weightage [3947.37 h] |
| S06A-EN-2560 | LT Cable Routing Layout (Plot-S07) For Block-07 |  |  |  |  |  |  | resources none → Engineering Resource [45 h]; Weightage [3947.37 h] |
| S06A-EN-2570 | LT Cable Routing Layout (Plot-S07) For Block-08 |  |  |  |  |  |  | resources none → Engineering Resource [45 h]; Weightage [3947.37 h] |
| S06A-EN-2580 | LT Cable Routing Layout (Plot-S07) For Block-09 |  |  |  |  |  |  | resources none → Engineering Resource [45 h]; Weightage [3947.37 h] |
| S06A-EN-2590 | LT Cable Routing Layout (Plot-S07) For Block-10 |  |  |  |  |  |  | resources none → Engineering Resource [45 h]; Weightage [3947.37 h] |
| S06A-EN-2600 | LT Cable Routing Layout (Plot-S07) For Block-11 |  |  |  |  |  |  | resources none → Engineering Resource [45 h]; Weightage [3947.37 h] |
| S06A-EN-2610 | LT Cable Routing Layout (Plot-S07) For Block-12 |  |  |  |  |  |  | resources none → Engineering Resource [45 h]; Weightage [3947.37 h] |
| S06A-EN-2620 | LT Cable Routing Layout (Plot-S07) For Block-13 |  |  |  |  |  |  | resources none → Engineering Resource [45 h]; Weightage [3947.37 h] |
| S06A-EN-2630 | LT Cable Routing Layout (Plot-S07) For Block-14 |  |  |  |  |  |  | resources none → Engineering Resource [45 h]; Weightage [3947.37 h] |
| S06A-EN-2640 | LT Cable Routing Layout (Plot-S07) For Block-15 |  |  |  |  |  |  | resources none → Engineering Resource [45 h]; Weightage [3947.37 h] |
| S06A-EN-2650 | LT Cable Routing Layout (Plot-S07) For Block-16 |  |  |  |  |  |  | resources none → Engineering Resource [45 h]; Weightage [3947.37 h] |
| S06A-EN-2660 | LT Cable Routing Layout (Plot-S07) For Block-17 |  |  |  |  |  |  | resources none → Engineering Resource [45 h]; Weightage [3947.37 h] |
| S06A-EN-2670 | LT Cable Routing Layout (Plot-S07) For Block-18 |  |  |  |  |  |  | resources none → Engineering Resource [45 h]; Weightage [3947.37 h] |
| S06A-EN-2680 | LT Cable Routing Layout (Plot-S07) For Block-19 |  |  |  |  |  |  | resources none → Engineering Resource [45 h]; Weightage [3947.37 h] |
| S06A-EN-2690 | LT Cable Schedule (Plot-S07) For Block-01 |  |  |  |  |  |  | resources none → Engineering Resource [45 h]; Weightage [7894.74 h] |
| S06A-EN-2700 | LT Cable Schedule (Plot-S07) For Block-02 |  |  |  |  |  |  | resources none → Engineering Resource [45 h]; Weightage [7894.74 h] |
| S06A-EN-2710 | LT Cable Schedule (Plot-S07) For Block-03 |  |  |  |  |  |  | resources none → Engineering Resource [45 h]; Weightage [7894.74 h] |
| S06A-EN-2720 | LT Cable Schedule (Plot-S07) For Block-04 |  |  |  |  |  |  | resources none → Engineering Resource [45 h]; Weightage [7894.74 h] |
| S06A-EN-2730 | LT Cable Schedule (Plot-S07) For Block-05 |  |  |  |  |  |  | resources none → Engineering Resource [45 h]; Weightage [7894.74 h] |
| S06A-EN-2740 | LT Cable Schedule (Plot-S07) For Block-06 |  |  |  |  |  |  | resources none → Engineering Resource [45 h]; Weightage [7894.74 h] |
| S06A-EN-2750 | LT Cable Schedule (Plot-S07) For Block-07 |  |  |  |  |  |  | resources none → Engineering Resource [45 h]; Weightage [7894.74 h] |
| S06A-EN-2760 | LT Cable Schedule (Plot-S07) For Block-08 |  |  |  |  |  |  | resources none → Engineering Resource [45 h]; Weightage [7894.74 h] |
| S06A-EN-2770 | LT Cable Schedule (Plot-S07) For Block-09 |  |  |  |  |  |  | resources none → Engineering Resource [45 h]; Weightage [7894.74 h] |
| S06A-EN-2780 | LT Cable Schedule (Plot-S07) For Block-10 |  |  |  |  |  |  | resources none → Engineering Resource [45 h]; Weightage [7894.74 h] |
| S06A-EN-2790 | LT Cable Schedule (Plot-S07) For Block-11 |  |  |  |  |  |  | resources none → Engineering Resource [45 h]; Weightage [7894.74 h] |
| S06A-EN-2800 | LT Cable Schedule (Plot-S07) For Block-12 |  |  |  |  |  |  | resources none → Engineering Resource [45 h]; Weightage [7894.74 h] |
| S06A-EN-2810 | LT Cable Schedule (Plot-S07) For Block-13 |  |  |  |  |  |  | resources none → Engineering Resource [45 h]; Weightage [7894.74 h] |
| S06A-EN-2820 | LT Cable Schedule (Plot-S07) For Block-14 |  |  |  |  |  |  | resources none → Engineering Resource [45 h]; Weightage [7894.74 h] |
| S06A-EN-2830 | LT Cable Schedule (Plot-S07) For Block-15 |  |  |  |  |  |  | resources none → Engineering Resource [45 h]; Weightage [7894.74 h] |
| S06A-EN-2840 | LT Cable Schedule (Plot-S07) For Block-16 |  |  |  |  |  |  | resources none → Engineering Resource [45 h]; Weightage [7894.74 h] |
| S06A-EN-2850 | LT Cable Schedule (Plot-S07) For Block-17 |  |  |  |  |  |  | resources none → Engineering Resource [45 h]; Weightage [7894.74 h] |
| S06A-EN-2860 | LT Cable Schedule (Plot-S07) For Block-18 |  |  |  |  |  |  | resources none → Engineering Resource [45 h]; Weightage [7894.74 h] |
| S06A-EN-2870 | LT Cable Schedule (Plot-S07) For Block-19 |  |  |  |  |  |  | resources none → Engineering Resource [45 h]; Weightage [7894.74 h] |
| S06A-EN-2920 | Pile Layout For Cable Hanging Arrangement For Block-05 |  |  |  |  |  |  | resources none → Engineering Resource [45 h]; Weightage [3947.37 h] |
| S06A-EN-2880 | Pile Layout For Cable Hanging Arrangement For Block-01 |  |  |  |  |  |  | resources none → Engineering Resource [45 h]; Weightage [3947.37 h] |
| S06A-EN-2890 | Pile Layout For Cable Hanging Arrangement For Block-02 |  |  |  |  |  |  | resources none → Engineering Resource [45 h]; Weightage [3947.37 h] |
| S06A-EN-2900 | Pile Layout For Cable Hanging Arrangement For Block-03 |  |  |  |  |  |  | resources none → Engineering Resource [45 h]; Weightage [3947.37 h] |
| S06A-EN-2910 | Pile Layout For Cable Hanging Arrangement For Block-04 |  |  |  |  |  |  | resources none → Engineering Resource [45 h]; Weightage [3947.37 h] |
| S06A-EN-2940 | Pile Layout For Cable Hanging Arrangement For Block-07 |  |  |  |  |  |  | resources none → Engineering Resource [45 h]; Weightage [3947.37 h] |
| S06A-EN-2950 | Pile Layout For Cable Hanging Arrangement For Block-08 |  |  |  |  |  |  | resources none → Engineering Resource [45 h]; Weightage [3947.37 h] |
| S06A-EN-2960 | Pile Layout For Cable Hanging Arrangement For Block-09 |  |  |  |  |  |  | resources none → Engineering Resource [45 h]; Weightage [3947.37 h] |
| S06A-EN-2970 | Pile Layout For Cable Hanging Arrangement For Block-10 |  |  |  |  |  |  | resources none → Engineering Resource [45 h]; Weightage [3947.37 h] |
| S06A-EN-3010 | Pile Layout For Cable Hanging Arrangement For Block-14 |  |  |  |  |  |  | resources none → Engineering Resource [45 h]; Weightage [3947.37 h] |
| S06A-EN-2930 | Pile Layout For Cable Hanging Arrangement For Block-06 |  |  |  |  |  |  | resources none → Engineering Resource [45 h]; Weightage [3947.37 h] |
| S06A-EN-3030 | Pile Layout For Cable Hanging Arrangement For Block-16 |  |  |  |  |  |  | resources none → Engineering Resource [45 h]; Weightage [3947.37 h] |
| S06A-EN-2980 | Pile Layout For Cable Hanging Arrangement For Block-11 |  |  |  |  |  |  | resources none → Engineering Resource [45 h]; Weightage [3947.37 h] |
| S06A-EN-2990 | Pile Layout For Cable Hanging Arrangement For Block-12 |  |  |  |  |  |  | resources none → Engineering Resource [45 h]; Weightage [3947.37 h] |
| S06A-EN-3000 | Pile Layout For Cable Hanging Arrangement For Block-13 |  |  |  |  |  |  | resources none → Engineering Resource [45 h]; Weightage [3947.37 h] |
| S06A-EN-3050 | Pile Layout For Cable Hanging Arrangement For Block-18 |  |  |  |  |  |  | resources none → Engineering Resource [45 h]; Weightage [3947.37 h] |
| S06A-EN-3020 | Pile Layout For Cable Hanging Arrangement For Block-15 |  |  |  |  |  |  | resources none → Engineering Resource [45 h]; Weightage [3947.37 h] |
| S06A-EN-3040 | Pile Layout For Cable Hanging Arrangement For Block-17 |  |  |  |  |  |  | resources none → Engineering Resource [45 h]; Weightage [3947.37 h] |
| S06A-EN-3060 | Pile Layout For Cable Hanging Arrangement For Block-19 |  |  |  |  |  |  | resources none → Engineering Resource [45 h]; Weightage [3947.37 h] |
| 4 | **PROCUREMENT** |  | 2027-01-07 → 2027-01-05 (-2d) |  |  |  |  |  |
| 1 | **PROCUREMENT- ORDERING & DELIVERY** |  | 2027-01-07 → 2027-01-05 (-2d) |  |  |  |  |  |
| 1 | **PILING STUB - MMS** |  | 2026-09-09 → 2026-10-15 (+36d) |  |  |  |  |  |
| S06A-PR-1000 | Piling Stub MMS-BOQ & Tech Specs Release |  |  |  |  |  |  | resources none → Procurement Resource [48 h]; Weightage [7500 h] |
| S06A-PR-1010 | Piling Stub MMS-TBER |  |  |  |  |  |  | resources none → Procurement Resource [300 h]; Weightage [15000 h] |
| S06A-PR-1020 | Piling Stub MMS-Purchase Requisition |  |  |  |  |  |  | resources none → Procurement Resource [48 h]; Weightage [4500 h] |
| S06A-PR-1030 | Piling Stub MMS-Note For Approval |  |  |  |  |  |  | resources none → Procurement Resource [48 h]; Weightage [3000 h] |
| S06A-PR-1040 | Piling Stub MMS-LOI / PO Release |  |  |  |  |  |  | resources none → Procurement Resource [48 h]; Weightage [15000 h] |
| S06A-PR-1050 | Piling Stub MMS-Manufacturing Clearance & Manufacturing |  | 2026-09-09 → 2026-10-15 (+36d) |  |  | 384.22d → 281.56d |  | resources none → Procurement Resource [1300 h]; Weightage [60000 h] |
| S06A-PR-1060 | Piling Stub MMS-Dispatch For Site-Lot-01 |  |  |  |  |  |  | resources none → Procurement Resource [164 h]; Weightage [4500 h] |
| S06A-PR-1070 | Piling Stub MMS-Receipt At Site-Lot-01 |  |  |  |  |  |  | resources none → Procurement Resource [164 h]; Weightage [4500 h]; Piling Stub - MMS - Supply [21800 NoS] |
| S06A-PR-1080 | Piling Stub MMS-Dispatch For Site-Lot-02 |  | 2026-08-27 → 2026-08-06 A (-21d) |  | 38% → 100% | 82d → none |  | resources none → Procurement Resource [164 h]; Weightage [4500 h] |
| S06A-PR-1090 | Piling Stub MMS-Receipt At Site-Lot-02 |  | 2026-08-30 → 2026-08-10 A (-20d) |  | 38% → 100% | 83d → none |  | resources none → Procurement Resource [164 h]; Weightage [4500 h]; Piling Stub - MMS - Supply [21800 NoS] |
| S06A-PR-1100 | Piling Stub MMS-Dispatch For Site-Lot-03 | 2026-08-23 → 2026-09-13 A (+21d) | 2026-08-30 → 2026-09-15 A (+16d) | 8d → 10d | 0% → 100% | 82d → none |  | resources none → Procurement Resource [164 h]; Weightage [4500 h] |
| S06A-PR-1110 | Piling Stub MMS-Receipt At Site-Lot-03 | 2026-08-25 → 2026-09-17 A (+23d) | 2026-09-01 → 2026-09-19 A (+18d) |  | 0% → 100% | 83d → none |  | resources none → Procurement Resource [164 h]; Weightage [4500 h]; Piling Stub - MMS - Supply [21800 NoS] |
| S06A-PR-1120 | Piling Stub MMS-Dispatch For Site-Lot-04 | 2026-08-25 → 2026-09-17 A (+23d) | 2026-09-01 → 2026-10-07 (+36d) | 8d → 10d | 0% → 39% | 82d → 286.56d | S06A-PR-1100 SS+2d → S06A-PR-1100 SS+5d | resources none → Procurement Resource [164 h]; Weightage [4500 h] |
| S06A-PR-1140 | Piling Stub MMS-Dispatch For Site-Lot-05 | 2026-08-27 → 2026-09-27 (+31d) | 2026-08-30 → 2026-10-07 (+38d) | 4d → 10d |  | 82d → 286.56d | S06A-PR-1120 SS+2d → S06A-PR-1120 SS+7d | resources none → Procurement Resource [164 h]; Weightage [4500 h] |
| S06A-PR-1130 | Piling Stub MMS-Receipt At Site-Lot-04 | 2026-08-28 → 2026-10-03 A (+36d) | 2026-09-04 → 2026-10-10 (+36d) |  |  | 389.22d → 286.56d |  | resources none → Procurement Resource [164 h]; Weightage [4500 h]; Piling Stub - MMS - Supply [12400 NoS] |

| ID | Task | Start | Finish | Duration | Complete | Total float | Other |
| --- | --- | --- | --- | --- | --- | --- | --- |
| S06A-PR-1150 | Piling Stub MMS-Receipt At Site-Lot-05 | 2026-08-31 → 2026-10-08 (+38d) | 2026-09-02 → 2026-10-10 (+38d) |  |  | 82d → 286.56d | resources none → Piling Stub - MMS - Supply [9300 NoS]; Procurement Resource [164 h]; Weightage [4500 h] |
| 2 | **PILING STUB - INVERTER** |  | 2026-09-25 → 2026-10-31 (+36d) |  |  |  |  |
| S06A-PR-1160 | Piling Stub Inverter-BOQ & Tech Specs Release |  |  |  |  |  | resources none → Procurement Resource [27 h]; Weightage [5250 h] |
| S06A-PR-1170 | Piling Stub Inverter-TBER |  |  |  |  |  | resources none → Procurement Resource [27 h]; Weightage [10500 h] |
| S06A-PR-1180 | Piling Stub Inverter-Purchase Requisition |  |  |  |  |  | resources none → Procurement Resource [27 h]; Weightage [3150 h] |
| S06A-PR-1190 | Piling Stub Inverter-Note For Approval |  |  |  |  |  | resources none → Procurement Resource [9 h]; Weightage [2100 h] |
| S06A-PR-1200 | Piling Stub Inverter-LOI / PO Release |  |  |  |  |  | resources none → Procurement Resource [27 h]; Weightage [10500 h] |
| S06A-PR-1210 | Piling Stub Inverter-Manufacturing Clearance & Manufacturing |  | 2026-09-05 → 2026-10-11 (+36d) |  |  | 89d → 71d | resources none → Procurement Resource [117 h]; Weightage [42000 h] |
| S06A-PR-1220 | Piling Stub Inverter-Dispatch For Site-Lot-01 | 2026-08-23 → 2026-09-27 (+35d) | 2026-08-28 → 2026-10-03 (+36d) |  |  | 89d → 71d | resources none → Procurement Resource [27 h]; Weightage [3150 h] |
| S06A-PR-1230 | Piling Stub Inverter-Receipt At Site-Lot-01 | 2026-08-26 → 2026-09-30 (+35d) | 2026-08-31 → 2026-10-06 (+36d) |  |  | 114d → 96d | resources none → Procurement Resource [27 h]; Weightage [3150 h]; Piling Stub - Invertor - Supply [360 NoS] |
| S06A-PR-1240 | Piling Stub Inverter-Dispatch For Site-Lot-02 | 2026-08-28 → 2026-10-03 (+36d) | 2026-09-02 → 2026-10-08 (+36d) |  |  | 89d → 71d | resources none → Procurement Resource [27 h]; Weightage [3150 h] |
| S06A-PR-1250 | Piling Stub Inverter-Receipt At Site-Lot-02 | 2026-08-31 → 2026-10-06 (+36d) | 2026-09-05 → 2026-10-11 (+36d) |  |  | 109d → 91d | resources none → Procurement Resource [27 h]; Weightage [3150 h]; Piling Stub - Invertor - Supply [360 NoS] |
| S06A-PR-1260 | Piling Stub Inverter-Dispatch For Site-Lot-03 | 2026-09-02 → 2026-10-08 (+36d) | 2026-09-07 → 2026-10-13 (+36d) |  |  | 89d → 71d | resources none → Procurement Resource [27 h]; Weightage [3150 h] |
| S06A-PR-1270 | Piling Stub Inverter-Receipt At Site-Lot-03 | 2026-09-04 → 2026-10-10 (+36d) | 2026-09-09 → 2026-10-15 (+36d) |  |  | 105d → 87d | resources none → Procurement Resource [27 h]; Weightage [3150 h]; Piling Stub - Invertor - Supply [360 NoS] |
| S06A-PR-1280 | Piling Stub Inverter-Dispatch For Site-Lot-04 | 2026-09-07 → 2026-10-13 (+36d) | 2026-09-12 → 2026-10-18 (+36d) |  |  | 89d → 71d | resources none → Procurement Resource [27 h]; Weightage [3150 h] |
| S06A-PR-1290 | Piling Stub Inverter-Receipt At Site-Lot-04 | 2026-09-09 → 2026-10-15 (+36d) | 2026-09-14 → 2026-10-20 (+36d) |  |  | 100d → 83d | resources none → Procurement Resource [27 h]; Weightage [3150 h]; Piling Stub - Invertor - Supply [360 NoS] |
| S06A-PR-1300 | Piling Stub Inverter-Dispatch For Site-Lot-05 | 2026-09-12 → 2026-10-18 (+36d) | 2026-09-17 → 2026-10-23 (+36d) |  |  | 89d → 71d | resources none → Procurement Resource [27 h]; Weightage [3150 h] |
| S06A-PR-1310 | Piling Stub Inverter-Receipt At Site-Lot-05 | 2026-09-20 → 2026-10-26 (+36d) | 2026-09-25 → 2026-10-31 (+36d) |  |  | 89d → 71d | resources none → Procurement Resource [27 h]; Weightage [3150 h]; Piling Stub - Invertor - Supply [270 NoS] |
| 3 | **PILING STUB - LT CABLE SUPPORT STRUCTURE** |  | 2026-09-20 → 2026-10-26 (+36d) |  |  |  |  |
| S06A-PR-1320 | Piling Stub-LT Cable Support Structure-BOQ & Tech Specs Release |  |  |  |  |  | resources none → Procurement Resource [9 h]; Weightage [3750 h] |
| S06A-PR-1330 | Piling Stub-LT Cable Support Structure-TBER |  |  |  |  |  | resources none → Procurement Resource [9 h]; Weightage [7500 h] |
| S06A-PR-1340 | Piling Stub-LT Cable Support Structure-Purchase Requisition |  |  |  |  |  | resources none → Procurement Resource [9 h]; Weightage [2250 h] |
| S06A-PR-1350 | Piling Stub-LT Cable Support Structure-Note For Approval |  |  |  |  |  | resources none → Procurement Resource [9 h]; Weightage [1500 h] |
| S06A-PR-1360 | Piling Stub-Lt Cable Support Structure-LOI / PO Release |  |  |  |  |  | resources none → Procurement Resource [9 h]; Weightage [7500 h] |
| S06A-PR-1370 | Piling Stub-LT Cable Support Structure-Manufacturing Clearance & Manufacturing |  | 2026-09-07 → 2026-10-13 (+36d) |  |  | 85d → 67d | resources none → Procurement Resource [45 h]; Weightage [30000 h] |
| S06A-PR-1380 | Piling Stub-LT Cable Support Structure-Dispatch For Site-Lot-01 | 2026-08-23 → 2026-09-27 (+35d) | 2026-08-28 → 2026-10-03 (+36d) |  |  | 85d → 67d | resources none → Procurement Resource [9 h]; Weightage [2250 h] |
| S06A-PR-1390 | Piling Stub-LT Cable Support Structure-Receipt At Site-Lot-01 | 2026-08-26 → 2026-09-30 (+35d) | 2026-08-31 → 2026-10-06 (+36d) |  |  | 100d → 82d | resources none → Procurement Resource [9 h]; Weightage [2250 h]; Piling Stub - LT Cable Hanger - Supply [160 NoS] |
| S06A-PR-1400 | Piling Stub-LT Cable Support Structure-Dispatch For Site-Lot-02 | 2026-08-28 → 2026-10-03 (+36d) | 2026-09-02 → 2026-10-08 (+36d) |  |  | 85d → 67d | resources none → Procurement Resource [9 h]; Weightage [2250 h] |
| S06A-PR-1410 | Piling Stub-LT Cable Support Structure-Receipt At Site-Lot-02 | 2026-08-31 → 2026-10-06 (+36d) | 2026-09-05 → 2026-10-11 (+36d) |  |  | 95d → 77d | resources none → Procurement Resource [9 h]; Weightage [2250 h]; Piling Stub - LT Cable Hanger - Supply [160 NoS] |
| S06A-PR-1420 | Piling Stub-LT Cable Support Structure-Dispatch For Site-Lot-03 | 2026-09-02 → 2026-10-08 (+36d) | 2026-09-07 → 2026-10-13 (+36d) |  |  | 85d → 67d | resources none → Procurement Resource [9 h]; Weightage [2250 h] |
| S06A-PR-1430 | Piling Stub-LT Cable Support Structure-Receipt At Site-Lot-03 | 2026-09-05 → 2026-10-11 (+36d) | 2026-09-10 → 2026-10-16 (+36d) |  |  | 91d → 73d | resources none → Procurement Resource [9 h]; Weightage [2250 h]; Piling Stub - LT Cable Hanger - Supply [160 NoS] |
| S06A-PR-1440 | Piling Stub-LT Cable Support Structure-Dispatch For Site-Lot-04 | 2026-09-07 → 2026-10-13 (+36d) | 2026-09-12 → 2026-10-18 (+36d) |  |  | 85d → 67d | resources none → Procurement Resource [9 h]; Weightage [2250 h] |
| S06A-PR-1450 | Piling Stub-LT Cable Support Structure-Receipt At Site-Lot-04 | 2026-09-10 → 2026-10-16 (+36d) | 2026-09-15 → 2026-10-21 (+36d) |  |  | 86d → 69d | resources none → Procurement Resource [9 h]; Weightage [2250 h]; Piling Stub - LT Cable Hanger - Supply [160 NoS] |
| S06A-PR-1460 | Piling Stub-LT Cable Support Structure-Dispatch For Site-Lot-05 | 2026-09-12 → 2026-10-18 (+36d) | 2026-09-17 → 2026-10-23 (+36d) |  |  | 85d → 67d | resources none → Procurement Resource [9 h]; Weightage [2250 h] |
| S06A-PR-1470 | Piling Stub-LT Cable Support Structure-Receipt At Site-Lot-05 | 2026-09-15 → 2026-10-21 (+36d) | 2026-09-20 → 2026-10-26 (+36d) |  |  | 85d → 67d | resources none → Procurement Resource [9 h]; Weightage [2250 h]; Piling Stub - LT Cable Hanger - Supply [120 NoS] |
| 4 | **PILING STUB - ROBOTIC DOCKING STATION** | 2026-09-21 → 2026-10-20 (+29d) | 2026-11-22 → 2026-12-20 (+28d) |  |  |  |  |
| S06A-PR-1480 | Piling Stub-Robotic Docking Station-BOQ & Tech Specs Release | 2026-09-21 → 2026-10-20 (+29d) | 2026-09-22 → 2026-10-21 (+29d) |  |  | 38d → 27d | resources none → Procurement Resource [306 h]; Weightage [3750 h] |
| S06A-PR-1490 | Piling Stub-Robotic Docking Station-TBER | 2026-09-23 → 2026-10-22 (+29d) | 2026-09-25 → 2026-10-24 (+29d) |  |  | 38d → 27d | resources none → Procurement Resource [243 h]; Weightage [7500 h] |
| S06A-PR-1500 | Piling Stub-Robotic Docking Station-Purchase Requisition | 2026-09-26 → 2026-10-25 (+29d) | 2026-09-27 → 2026-10-26 (+29d) |  |  | 38d → 27d | resources none → Procurement Resource [243 h]; Weightage [2250 h] |
| S06A-PR-1510 | Piling Stub-Robotic Docking Station-Note For Approval | 2026-09-28 → 2026-10-27 (+29d) | 2026-09-28 → 2026-10-27 (+29d) |  |  | 38d → 27d | resources none → Procurement Resource [126 h]; Weightage [1500 h] |
| S06A-PR-1520 | Piling Stub-Robotic Docking Station-LOI / PO Release | 2026-09-29 → 2026-10-28 (+29d) | 2026-09-30 → 2026-10-29 (+29d) |  |  | 38d → 27d | resources none → Procurement Resource [306 h]; Weightage [7500 h] |
| S06A-PR-1530 | Piling Stub-Robotic Docking Station-Manufacturing Clearance & Manufacturing | 2026-10-05 → 2026-11-02 (+28d) | 2026-11-13 → 2026-12-11 (+28d) |  |  | 38d → 27d | resources none → Procurement Resource [1134 h]; Weightage [30000 h] |
| S06A-PR-1540 | Piling Stub-Robotic Docking Station-Dispatch For Site-Lot-01 | 2026-10-20 → 2026-11-17 (+28d) | 2026-10-25 → 2026-11-22 (+28d) |  |  | 43d → 32d | resources none → Procurement Resource [288 h]; Weightage [2250 h] |
| S06A-PR-1550 | Piling Stub-Robotic Docking Station-Receipt At Site-Lot-01 | 2026-10-23 → 2026-11-20 (+28d) | 2026-10-28 → 2026-11-25 (+28d) |  |  | 69d → 58d | resources none → Procurement Resource [288 h]; Weightage [2250 h]; Piling Stub - Robot Docking - Supply [100 NoS] |
| S06A-PR-1560 | Piling Stub-Robotic Docking Station-Dispatch For Site-Lot-02 | 2026-10-25 → 2026-11-22 (+28d) | 2026-10-30 → 2026-11-27 (+28d) |  |  | 43d → 32d | resources none → Procurement Resource [288 h]; Weightage [2250 h] |
| S06A-PR-1570 | Piling Stub-Robotic Docking Station-Receipt At Site-Lot-02 | 2026-10-28 → 2026-11-25 (+28d) | 2026-11-02 → 2026-11-30 (+28d) |  |  | 60d → 49d | resources none → Procurement Resource [288 h]; Weightage [2250 h]; Piling Stub - Robot Docking - Supply [100 NoS] |
| S06A-PR-1580 | Piling Stub-Robotic Docking Station-Dispatch For Site-Lot-03 | 2026-10-30 → 2026-11-27 (+28d) | 2026-11-04 → 2026-12-02 (+28d) |  |  | 43d → 32d | resources none → Procurement Resource [288 h]; Weightage [2250 h] |
| S06A-PR-1590 | Piling Stub-Robotic Docking Station-Receipt At Site-Lot-03 | 2026-11-02 → 2026-11-30 (+28d) | 2026-11-07 → 2026-12-05 (+28d) |  |  | 54d → 43d | resources none → Procurement Resource [288 h]; Weightage [2250 h]; Piling Stub - Robot Docking - Supply [100 NoS] |
| S06A-PR-1600 | Piling Stub-Robotic Docking Station-Dispatch For Site-Lot-04 | 2026-11-04 → 2026-12-02 (+28d) | 2026-11-09 → 2026-12-07 (+28d) |  |  | 43d → 32d | resources none → Procurement Resource [288 h]; Weightage [2250 h] |
| S06A-PR-1610 | Piling Stub-Robotic Docking Station-Receipt At Site-Lot-04 | 2026-11-07 → 2026-12-05 (+28d) | 2026-11-12 → 2026-12-10 (+28d) |  |  | 48d → 38d | resources none → Procurement Resource [288 h]; Weightage [2250 h]; Piling Stub - Robot Docking - Supply [100 NoS] |
| S06A-PR-1620 | Piling Stub-Robotic Docking Station-Dispatch For Site-Lot-05 | 2026-11-14 → 2026-12-12 (+28d) | 2026-11-19 → 2026-12-17 (+28d) |  |  | 38d → 27d | resources none → Procurement Resource [288 h]; Weightage [2250 h] |
| S06A-PR-1630 | Piling Stub-Robotic Docking Station-Receipt At Site-Lot-05 | 2026-11-17 → 2026-12-15 (+28d) | 2026-11-22 → 2026-12-20 (+28d) |  |  | 38d → 27d | resources none → Procurement Resource [288 h]; Weightage [2250 h]; Piling Stub - Robot Docking - Supply [75 NoS] |
| 5 | **MMS - FT** |  | 2026-09-22 → 2026-10-22 (+30d) |  |  |  |  |
| S06A-PR-1640 | MMS - FT-BOQ & Tech Specs Release |  |  |  |  |  | resources none → Procurement Resource [96 h]; Weightage [12750 h] |
| S06A-PR-1650 | MMS - FT-TBER |  |  |  |  |  | resources none → Procurement Resource [300 h]; Weightage [25500 h] |
| S06A-PR-1660 | MMS - FT-Purchase Requisition |  |  |  |  |  | resources none → Procurement Resource [148 h]; Weightage [7650 h] |
| S06A-PR-1670 | MMS - FT-Note For Approval |  |  |  |  |  | resources none → Procurement Resource [96 h]; Weightage [5100 h] |
| S06A-PR-1680 | MMS - FT-LOI / PO Release |  |  |  |  |  | resources none → Procurement Resource [96 h]; Weightage [25500 h] |
| S06A-PR-1690 | MMS - FT-Manufacturing Clearance & Manufacturing |  | 2026-09-17 → 2026-10-17 (+30d) |  |  | 80d → 68d | resources none → Procurement Resource [1000 h]; Weightage [102000 h] |
| S06A-PR-1700 | MMS - FT-Dispatch For Site-Lot-01 |  | 2026-08-24 → 2026-09-13 A (+20d) |  | 33% → 100% | 100.02d → none | resources none → Procurement Resource [112 h]; Weightage [7650 h] |
| S06A-PR-1710 | MMS - FT-Receipt At Site-Lot-01 |  | 2026-08-27 → 2026-09-15 A (+19d) |  | 33% → 100% | 100.02d → none | resources none → Procurement Resource [112 h]; Weightage [7650 h]; MMS - FT Purlin - Supply [1944 TBL]; MMS - Bracing - Supply [1944 TBL]; MMS - Rafter - Supply [1944 TBL] |
| S06A-PR-1720 | MMS - FT-Dispatch For Site-Lot-02 |  | 2026-08-26 → 2026-09-30 (+35d) |  |  | 92d → 81d | resources none → Procurement Resource [112 h]; Weightage [7650 h] |
| S06A-PR-1730 | MMS - FT-Receipt At Site-Lot-02 |  | 2026-08-29 → 2026-10-04 (+36d) |  |  | 99d → 81d | resources none → Procurement Resource [112 h]; Weightage [7650 h]; MMS - FT Purlin - Supply [1944 TBL]; MMS - Bracing - Supply [1944 TBL]; MMS - Rafter - Supply [1944 TBL] |
| S06A-PR-1740 | MMS - FT-Dispatch For Site-Lot-03 | 2026-08-23 → 2026-09-09 A (+17d) | 2026-08-28 → 2026-10-04 (+37d) | 6d → 7d | 0% → 30% | 92d → 78d | resources none → Procurement Resource [112 h]; Weightage [7650 h] |
| S06A-PR-1750 | MMS - FT-Receipt At Site-Lot-03 | 2026-08-26 → 2026-09-15 A (+20d) | 2026-08-31 → 2026-10-07 (+37d) |  |  | 98d → 79d | resources none → Procurement Resource [112 h]; Weightage [7650 h]; MMS - FT Purlin - Supply [1944 TBL]; MMS - Bracing - Supply [1944 TBL]; MMS - Rafter - Supply [1944 TBL] |
| S06A-PR-1760 | MMS - FT-Dispatch For Site-Lot-04 | 2026-08-28 → 2026-09-27 (+30d) | 2026-09-02 → 2026-10-04 (+32d) | 6d → 7d |  | 92d → 78d | resources none → Procurement Resource [112 h]; Weightage [7650 h] |
| S06A-PR-1770 | MMS - FT-Receipt At Site-Lot-04 | 2026-08-31 → 2026-10-01 (+31d) | 2026-09-05 → 2026-10-07 (+32d) |  |  | 92d → 79d | resources none → Procurement Resource [112 h]; Weightage [7650 h]; MMS - FT Purlin - Supply [1944 TBL]; MMS - Bracing - Supply [1944 TBL]; MMS - Rafter - Supply [1944 TBL] |
| S06A-PR-1780 | MMS - FT-Dispatch For Site-Lot-05 | 2026-09-02 → 2026-10-03 (+31d) | 2026-09-07 → 2026-10-09 (+32d) | 6d → 7d |  | 92d → 78d | resources none → Procurement Resource [112 h]; Weightage [7650 h] |
| S06A-PR-1790 | MMS - FT-Receipt At Site-Lot-05 | 2026-09-18 → 2026-10-18 (+30d) | 2026-09-22 → 2026-10-22 (+30d) |  |  | 80d → 68d | resources none → Procurement Resource [112 h]; Weightage [7650 h]; MMS - FT Purlin - Supply [1944 TBL]; MMS - Bracing - Supply [1944 TBL]; MMS - Rafter - Supply [1944 TBL] |
| 6 | **INVERTER** |  | 2026-11-19 → 2026-10-27 (-23d) |  |  |  |  |

| ID | Task | Start | Finish | Duration | Complete | Total float | Predecessors | Other |
| --- | --- | --- | --- | --- | --- | --- | --- | --- |
| S06A-PR-1800 | Inverter-BOQ & Tech Specs Release |  |  |  |  |  |  | resources none → Procurement Resource [112 h]; Weightage [12750 h] |
| S06A-PR-1810 | Inverter-TBER |  |  |  |  |  |  | resources none → Procurement Resource [148 h]; Weightage [25500 h] |
| S06A-PR-1820 | Inverter-Purchase Requisition |  |  |  |  |  |  | resources none → Procurement Resource [62 h]; Weightage [7650 h] |
| S06A-PR-1830 | Inverter-Note For Approval |  |  |  |  |  |  | resources none → Procurement Resource [148 h]; Weightage [5100 h] |
| S06A-PR-1840 | Inverter-LOI / PO Release |  |  |  |  |  |  | resources none → Procurement Resource [48 h]; Weightage [25500 h] |
| S06A-PR-1850 | Inverter-Manufacturing Clearance & Manufacturing | 2026-10-01 → 2026-09-27 (-4d) | 2026-11-10 → 2026-10-22 (-19d) | 40d → 25d |  | 53d → 89d | S06A-PR-1840 FS+225d → S06A-PR-1840 FS+209d | resources none → Procurement Resource [1000 h]; Weightage [102000 h] |
| S06A-PR-1860 | Inverter-Dispatch For Site-Lot-01 | 2026-10-17 → 2026-10-04 (-13d) | 2026-10-22 → 2026-10-09 (-13d) |  |  | 58d → 91d | S06A-PR-1850 SS+15d → S06A-PR-1850 SS+6d | resources none → Procurement Resource [96 h]; Weightage [7650 h] |
| S06A-PR-1870 | Inverter-Receipt At Site--Lot-01 | 2026-10-20 → 2026-10-07 (-13d) | 2026-10-25 → 2026-10-12 (-13d) |  |  | 78d → 108d |  | resources none → Procurement Resource [96 h]; Weightage [7650 h]; Invertor - Supply [196 NoS] |
| S06A-PR-1880 | Inverter-Dispatch For Site-Lot-02 | 2026-10-22 → 2026-10-08 (-14d) | 2026-10-27 → 2026-10-13 (-14d) |  |  | 58d → 91d | S06A-PR-1860 SS+5d → S06A-PR-1860 SS+4d | resources none → Procurement Resource [96 h]; Weightage [7650 h] |
| S06A-PR-1890 | Inverter-Receipt At Site--Lot-02 | 2026-10-25 → 2026-10-11 (-14d) | 2026-10-30 → 2026-10-16 (-14d) |  |  | 73d → 104d |  | resources none → Procurement Resource [96 h]; Weightage [7650 h]; Invertor - Supply [196 NoS] |
| S06A-PR-1900 | Inverter-Dispatch For Site-Lot-03 | 2026-10-27 → 2026-10-12 (-15d) | 2026-11-01 → 2026-10-17 (-15d) |  |  | 58d → 91d | S06A-PR-1880 SS+5d → S06A-PR-1880 SS+4d | resources none → Procurement Resource [96 h]; Weightage [7650 h] |
| S06A-PR-1910 | Inverter-Receipt At Site--Lot-03 | 2026-10-30 → 2026-10-15 (-15d) | 2026-11-04 → 2026-10-20 (-15d) |  |  | 68d → 100d |  | resources none → Procurement Resource [96 h]; Weightage [7650 h]; Invertor - Supply [196 NoS] |
| S06A-PR-1920 | Inverter-Dispatch For Site-Lot-04 | 2026-11-01 → 2026-10-16 (-16d) | 2026-11-06 → 2026-10-21 (-16d) |  |  | 58d → 91d | S06A-PR-1900 SS+5d → S06A-PR-1900 SS+4d | resources none → Procurement Resource [96 h]; Weightage [7650 h] |
| S06A-PR-1930 | Inverter-Receipt At Site--Lot-04 | 2026-11-04 → 2026-10-19 (-16d) | 2026-11-09 → 2026-10-24 (-16d) |  |  | 63d → 97d |  | resources none → Procurement Resource [96 h]; Weightage [7650 h]; Invertor - Supply [196 NoS] |
| S06A-PR-1940 | Inverter-Dispatch For Site-Lot-05 | 2026-11-11 → 2026-10-23 (-19d) | 2026-11-16 → 2026-10-24 (-23d) | 6d → 2d |  | 53d → 89d |  | resources none → Procurement Resource [96 h]; Weightage [7650 h] |
| S06A-PR-1950 | Inverter-Receipt At Site--Lot-05 | 2026-11-14 → 2026-10-26 (-19d) | 2026-11-19 → 2026-10-27 (-23d) | 6d → 2d |  | 53d → 89d |  | resources none → Procurement Resource [96 h]; Weightage [7650 h]; Invertor - Supply [137 NoS] |
| 7 | **IDT (INCL. NIFPS)** |  | 2026-12-03 → 2026-12-21 (+18d) |  |  |  |  |  |
| S06A-PR-1960 | IDT (Incl. NIFPS)-BOQ & Tech Specs Release |  |  |  |  |  |  | resources none → Procurement Resource [34 h]; Weightage [12750 h] |
| S06A-PR-1970 | IDT (Incl. NIFPS)-TBER |  |  |  |  |  |  | resources none → Procurement Resource [278 h]; Weightage [25500 h] |
| S06A-PR-1980 | IDT (Incl. NIFPS)-Purchase Requisition |  |  |  |  |  |  | resources none → Procurement Resource [28 h]; Weightage [7650 h] |
| S06A-PR-1990 | IDT (Incl. NIFPS)-Note For Approval |  |  |  |  |  |  | resources none → Procurement Resource [48 h]; Weightage [5100 h] |
| S06A-PR-2000 | IDT (Incl. NIFPS)-LOI / PO Release |  |  |  |  |  |  | resources none → Procurement Resource [48 h]; Weightage [25500 h] |
| S06A-PR-2010 | IDT (Incl. NIFPS)-Manufacturing Clearance & Manufacturing |  | 2026-11-21 → 2026-12-06 (+15d) |  | 2% → 10% | 33d → 27d |  | resources none → Procurement Resource [1000 h]; Weightage [102000 h] |
| S06A-PR-2020 | IDT (Incl. NIFPS)-Dispatch For Site-Lot-01 | 2026-08-23 → 2026-09-27 (+35d) | 2026-08-28 → 2026-10-09 (+42d) | 6d → 12d |  | 43d → 27d |  | resources none → Procurement Resource [112 h]; Weightage [7650 h] |
| S06A-PR-2030 | IDT (Incl. NIFPS)-Receipt At Site-Lot-01 | 2026-08-26 → 2026-10-07 (+42d) | 2026-08-31 → 2026-10-12 (+42d) |  |  | 115d → 91d |  | resources none → Procurement Resource [112 h]; Weightage [7650 h]; IDT - Supply [4 NoS] |
| S06A-PR-2040 | IDT (Incl. NIFPS)-Dispatch For Site-Lot-02 | 2026-09-17 → 2026-10-23 (+36d) | 2026-09-22 → 2026-10-28 (+36d) |  |  | 43d → 27d |  | resources none → Procurement Resource [112 h]; Weightage [7650 h] |
| S06A-PR-2050 | IDT (Incl. NIFPS)-Receipt At Site-Lot-02 | 2026-09-20 → 2026-10-26 (+36d) | 2026-09-25 → 2026-10-31 (+36d) |  |  | 89d → 71d |  | resources none → Procurement Resource [112 h]; Weightage [7650 h]; IDT - Supply [4 NoS] |
| S06A-PR-2060 | IDT (Incl. NIFPS)-Dispatch For Site-Lot-03 | 2026-10-23 → 2026-11-17 (+25d) | 2026-10-28 → 2026-11-22 (+25d) |  |  | 43d → 27d | S06A-PR-2040 SS+35d → S06A-PR-2040 SS+25d | resources none → Procurement Resource [112 h]; Weightage [7650 h] |
| S06A-PR-2070 | IDT (Incl. NIFPS)-Receipt At Site-Lot-03 | 2026-10-26 → 2026-11-20 (+25d) | 2026-10-31 → 2026-11-25 (+25d) |  |  | 59d → 51d |  | resources none → Procurement Resource [112 h]; Weightage [7650 h]; IDT - Supply [4 NoS] |
| S06A-PR-2080 | IDT (Incl. NIFPS)-Dispatch For Site-Lot-04 | 2026-11-07 → 2026-12-02 (+25d) | 2026-11-12 → 2026-12-07 (+25d) |  |  | 43d → 27d |  | resources none → Procurement Resource [112 h]; Weightage [7650 h] |
| S06A-PR-2090 | IDT (Incl. NIFPS)-Receipt At Site-Lot-04 | 2026-11-10 → 2026-12-05 (+25d) | 2026-11-15 → 2026-12-10 (+25d) |  |  | 44d → 37d |  | resources none → Procurement Resource [112 h]; Weightage [7650 h]; IDT - Supply [4 NoS] |
| S06A-PR-2100 | IDT (Incl. NIFPS)-Dispatch For Site-Lot-05 | 2026-11-22 → 2026-12-10 (+18d) | 2026-11-27 → 2026-12-15 (+18d) |  |  | 33d → 27d | S06A-PR-2080 SS+5d, S06A-PR-2010 → S06A-PR-2080 SS+8d, S06A-PR-2010 | resources none → Procurement Resource [112 h]; Weightage [7650 h] |
| S06A-PR-2110 | IDT (Incl. NIFPS)-Receipt At Site-Lot-05 | 2026-11-25 → 2026-12-13 (+18d) | 2026-12-03 → 2026-12-21 (+18d) |  |  | 33d → 27d |  | resources none → Procurement Resource [112 h]; Weightage [7650 h]; IDT - Supply [3 NoS] |
| 8 | **HT PANEL** |  | 2026-11-17 → 2026-11-13 (-4d) |  |  |  |  |  |
| S06A-PR-2120 | HT Panel-BOQ & Tech Specs Release |  |  |  |  |  |  | resources none → Procurement Resource [459 h]; Weightage [12000 h] |
| S06A-PR-2130 | HT Panel-TBER |  |  |  |  |  |  | resources none → Procurement Resource [369 h]; Weightage [24000 h] |
| S06A-PR-2140 | HT Panel-Purchase Requisition |  |  |  |  |  |  | resources none → Procurement Resource [369 h]; Weightage [7200 h] |
| S06A-PR-2150 | HT Panel-Note For Approval |  |  |  |  |  |  | resources none → Procurement Resource [189 h]; Weightage [4800 h] |
| S06A-PR-2160 | HT Panel-LOI / PO Release |  |  |  |  |  |  | resources none → Procurement Resource [459 h]; Weightage [24000 h] |
| S06A-PR-2170 | HT Panel-Manufacturing Clearance & Manufacturing | 2026-09-29 → 2026-08-27 A (-33d) | 2026-11-08 → 2026-09-21 A (-48d) | 40d → 25d | 0% → 100% | 59d → none | S06A-PR-2160 FS+220d → S06A-PR-2160 FS+199d | resources none → Procurement Resource [1728 h]; Weightage [96000 h] |
| S06A-PR-2180 | HT Panel-Dispatch For Site-Lot-01 | 2026-10-15 → 2026-09-27 (-18d) | 2026-10-20 → 2026-10-03 (-17d) |  |  | 64d → 70d | S06A-PR-2170 SS+15d → S06A-PR-2170 SS+5d | resources none → Procurement Resource [432 h]; Weightage [7200 h] |
| S06A-PR-2190 | HT Panel-Receipt At Site-Lot-01 | 2026-10-18 → 2026-09-30 (-18d) | 2026-10-23 → 2026-10-06 (-17d) |  |  | 81d → 115d |  | resources none → Procurement Resource [432 h]; Weightage [7200 h]; HT Panel - Supply [4 NoS] |
| S06A-PR-2200 | HT Panel-Dispatch For Site-Lot-02 | 2026-10-20 → 2026-10-08 (-12d) | 2026-10-25 → 2026-10-13 (-12d) |  |  | 64d → 70d | S06A-PR-2180 SS+5d → S06A-PR-2180 SS+10d | resources none → Procurement Resource [432 h]; Weightage [7200 h] |
| S06A-PR-2210 | HT Panel-Receipt At Site-Lot-02 | 2026-10-23 → 2026-10-11 (-12d) | 2026-10-28 → 2026-10-16 (-12d) |  |  | 75d → 104d |  | resources none → Procurement Resource [432 h]; Weightage [7200 h]; HT Panel - Supply [4 NoS] |
| S06A-PR-2220 | HT Panel-Dispatch For Site-Lot-03 | 2026-10-25 → 2026-10-18 (-7d) | 2026-10-30 → 2026-10-23 (-7d) |  |  | 64d → 70d | S06A-PR-2200 SS+5d → S06A-PR-2200 SS+10d | resources none → Procurement Resource [432 h]; Weightage [7200 h] |
| S06A-PR-2230 | HT Panel-Receipt At Site-Lot-03 | 2026-10-28 → 2026-10-21 (-7d) | 2026-11-02 → 2026-10-26 (-7d) |  |  | 70d → 94d |  | resources none → Procurement Resource [432 h]; Weightage [7200 h]; HT Panel - Supply [4 NoS] |
| S06A-PR-2240 | HT Panel-Dispatch For Site-Lot-04 | 2026-10-30 → 2026-10-28 (-2d) | 2026-11-04 → 2026-11-02 (-2d) |  |  | 64d → 70d | S06A-PR-2220 SS+5d → S06A-PR-2220 SS+10d | resources none → Procurement Resource [432 h]; Weightage [7200 h] |
| S06A-PR-2250 | HT Panel-Receipt At Site-Lot-04 | 2026-11-02 → 2026-10-31 (-2d) | 2026-11-07 → 2026-11-05 (-2d) |  |  | 65d → 85d |  | resources none → Procurement Resource [432 h]; Weightage [7200 h]; HT Panel - Supply [4 NoS] |
| S06A-PR-2260 | HT Panel-Dispatch For Site-Lot-05 | 2026-11-09 → 2026-11-05 (-4d) | 2026-11-14 → 2026-11-10 (-4d) |  |  | 59d → 70d | S06A-PR-2240 SS+5d, S06A-PR-2170 → S06A-PR-2240 SS+8d, S06A-PR-2170 | resources none → Procurement Resource [432 h]; Weightage [7200 h] |
| S06A-PR-2270 | HT Panel-Receipt At Site-Lot-05 | 2026-11-12 → 2026-11-08 (-4d) | 2026-11-17 → 2026-11-13 (-4d) |  |  | 59d → 70d |  | resources none → Procurement Resource [432 h]; Weightage [7200 h]; HT Panel - Supply [3 NoS] |
| 9 | **LT PANEL** |  | 2026-11-15 → 2026-10-20 (-26d) |  |  |  |  |  |
| S06A-PR-2280 | LT Panel-BOQ & Tech Specs Release |  |  |  |  |  |  | resources none → Procurement Resource [486 h]; Weightage [3000 h] |
| S06A-PR-2290 | LT Panel-TBER |  |  |  |  |  |  | resources none → Procurement Resource [387 h]; Weightage [6000 h] |
| S06A-PR-2300 | LT Panel-Purchase Requisition |  |  |  |  |  |  | resources none → Procurement Resource [387 h]; Weightage [1800 h] |
| S06A-PR-2310 | LT Panel-Note For Approval |  |  |  |  |  |  | resources none → Procurement Resource [198 h]; Weightage [1200 h] |
| S06A-PR-2320 | LT Panel-LOI / PO Release |  |  |  |  |  |  | resources none → Procurement Resource [486 h]; Weightage [6000 h] |
| S06A-PR-2330 | LT Panel-Manufacturing Clearance & Manufacturing | 2026-09-27 → 2026-08-12 A (-46d) | 2026-11-06 → 2026-09-16 A (-51d) |  | 0% → 100% | 56d → none | S06A-PR-2320 FS+220d → S06A-PR-2320 FS+201d | resources none → Procurement Resource [1818 h]; Weightage [24000 h] |
| S06A-PR-2340 | LT Panel-Dispatch For Site-Lot-01 | 2026-10-13 → 2026-09-14 A (-29d) | 2026-10-18 → 2026-09-17 A (-31d) |  | 0% → 100% | 61d → none | S06A-PR-2330 SS+15d → S06A-PR-2330 SS+10d |  |
| S06A-PR-2350 | LT Panel-Receipt At Site-Lot-01 | 2026-10-16 → 2026-09-16 A (-30d) | 2026-10-21 → 2026-09-19 A (-32d) |  | 0% → 100% | 78d → none |  |  |
| S06A-PR-2360 | LT Panel-Dispatch For Site-Lot-02 | 2026-10-18 → 2026-09-16 A (-32d) | 2026-10-23 → 2026-09-27 (-26d) |  | 0% → 56% | 61d → 94d | S06A-PR-2340 SS+5d → S06A-PR-2340 SS+6d | resources none → Procurement Resource [450 h]; Weightage [1800 h] |
| S06A-PR-2370 | LT Panel-Receipt At Site-Lot-02 | 2026-10-21 → 2026-09-19 A (-32d) | 2026-10-26 → 2026-10-03 (-23d) |  | 0% → 56% | 72d → 112d |  | resources none → Procurement Resource [450 h]; Weightage [1800 h]; LT Panel - Supply [64 NoS] |
| S06A-PR-2380 | LT Panel-Dispatch For Site-Lot-03 | 2026-10-23 → 2026-09-27 (-26d) | 2026-10-28 → 2026-10-03 (-25d) |  |  | 61d → 94d | S06A-PR-2360 SS+5d → S06A-PR-2360 SS+6d | resources none → Procurement Resource [450 h]; Weightage [1800 h] |
| S06A-PR-2390 | LT Panel-Receipt At Site-Lot-03 | 2026-10-26 → 2026-09-30 (-26d) | 2026-10-31 → 2026-10-06 (-25d) |  |  | 67d → 109d |  | resources none → Procurement Resource [450 h]; Weightage [1800 h]; LT Panel - Supply [64 NoS] |
| S06A-PR-2400 | LT Panel-Dispatch For Site-Lot-04 | 2026-10-28 → 2026-10-04 (-24d) | 2026-11-02 → 2026-10-09 (-24d) |  |  | 61d → 94d | S06A-PR-2380 SS+5d → S06A-PR-2380 SS+6d | resources none → Procurement Resource [450 h]; Weightage [1800 h] |
| S06A-PR-2410 | LT Panel-Receipt At Site-Lot-04 | 2026-10-31 → 2026-10-07 (-24d) | 2026-11-05 → 2026-10-12 (-24d) |  |  | 62d → 104d |  | resources none → Procurement Resource [450 h]; Weightage [1800 h]; LT Panel - Supply [64 NoS] |
| S06A-PR-2420 | LT Panel-Dispatch For Site-Lot-05 | 2026-11-07 → 2026-10-09 (-29d) | 2026-11-12 → 2026-10-14 (-29d) |  |  | 56d → 94d |  | resources none → Procurement Resource [450 h]; Weightage [1800 h] |
| S06A-PR-2430 | LT Panel-Receipt At Site-Lot-05 | 2026-11-10 → 2026-10-15 (-26d) | 2026-11-15 → 2026-10-20 (-26d) |  |  | 56d → 94d | S06A-PR-2420 SS+3d, S06A-PR-2420 FF+3d → S06A-PR-2420 SS+6d, S06A-PR-2420 FF+3d | resources none → Procurement Resource [450 h]; Weightage [1800 h]; LT Panel - Supply [48 NoS] |
| 10 | **EARTHING FLAT** |  | 2026-09-05 → 2026-10-22 (+47d) |  |  |  |  |  |
| S06A-PR-2440 | Earthing Flat-BOQ & Tech Specs Release |  |  |  |  |  |  | resources none → Procurement Resource; Weightage [1500 h] |
| S06A-PR-2450 | Earthing Flat-TBER |  |  |  |  |  |  | resources none → Procurement Resource; Weightage [3000 h] |

| ID | Task | Start | Finish | Duration | Total float | Predecessors | Other |
| --- | --- | --- | --- | --- | --- | --- | --- |
| S06A-PR-2460 | Earthing Flat-Purchase Requisition |  |  |  |  |  | resources none → Procurement Resource; Weightage [900 h] |
| S06A-PR-2470 | Earthing Flat-Note For Approval |  |  |  |  |  | resources none → Procurement Resource [63 h]; Weightage [600 h] |
| S06A-PR-2480 | Earthing Flat-LOI / PO Release |  |  |  |  |  | resources none → Procurement Resource [162 h]; Weightage [3000 h] |
| S06A-PR-2490 | Earthing Flat-Manufacturing Clearance & Manufacturing |  | 2026-08-30 → 2026-10-17 (+48d) |  | 99d → 68d |  | resources none → Procurement Resource [612 h]; Weightage [12000 h] |
| S06A-PR-2520 | Earthing Flat-Dispatch For Site-Lot-02 |  |  |  |  |  | resources none → Procurement Resource [153 h]; Weightage [900 h] |
| S06A-PR-2500 | Earthing Flat-Dispatch For Site-Lot-01 |  |  |  |  |  | resources none → Procurement Resource [153 h]; Weightage [900 h] |
| S06A-PR-2510 | Earthing Flat-Receipt At Site-Lot-01 |  |  |  |  |  | resources none → Procurement Resource [153 h]; Weightage [900 h]; Earthing - Supply [24.83 KM] |
| S06A-PR-2530 | Earthing Flat-Receipt At Site-Lot-02 |  |  |  |  |  | resources none → Procurement Resource [153 h]; Weightage [900 h]; Earthing - Supply [24.83 KM] |
| S06A-PR-2540 | Earthing Flat-Dispatch For Site-Lot-03 | 2026-08-23 → 2026-09-27 (+35d) | 2026-08-28 → 2026-10-03 (+36d) |  | 97d → 61d | S06A-PR-2520 SS+5d → S06A-PR-2520 SS+8d | resources none → Procurement Resource [153 h]; Weightage [900 h] |
| S06A-PR-2550 | Earthing Flat-Receipt At Site-Lot-03 | 2026-08-25 → 2026-09-29 (+35d) | 2026-08-30 → 2026-10-05 (+36d) |  | 102d → 84d |  | resources none → Procurement Resource [153 h]; Weightage [900 h]; Earthing - Supply [24.83 KM] |
| S06A-PR-2560 | Earthing Flat-Dispatch For Site-Lot-04 | 2026-08-28 → 2026-10-06 (+39d) | 2026-08-30 → 2026-10-08 (+39d) |  | 97d → 61d | S06A-PR-2540 SS+5d → S06A-PR-2540 SS+8d | resources none → Procurement Resource [153 h]; Weightage [900 h] |
| S06A-PR-2570 | Earthing Flat-Receipt At Site-Lot-04 | 2026-08-30 → 2026-10-08 (+39d) | 2026-09-01 → 2026-10-10 (+39d) |  | 97d → 61d |  | resources none → Procurement Resource [153 h]; Weightage [900 h]; Earthing - Supply [24.83 KM] |
| S06A-PR-2580 | Earthing Flat-Dispatch For Site-Lot-05 | 2026-09-02 → 2026-10-18 (+46d) | 2026-09-03 → 2026-10-20 (+47d) | 2d → 3d | 97d → 68d | S06A-PR-2560 SS+5d, S06A-PR-2490 → S06A-PR-2560 SS+8d, S06A-PR-2490 | resources none → Procurement Resource [153 h]; Weightage [900 h] |
| S06A-PR-2590 | Earthing Flat-Receipt At Site-Lot-05 | 2026-09-04 → 2026-10-21 (+47d) | 2026-09-05 → 2026-10-22 (+47d) |  | 97d → 68d |  | resources none → Procurement Resource [153 h]; Weightage [900 h]; Earthing - Supply [18.67 KM] |
| S06A-PR-2600 | IDT Station - Rebar-BOQ & Tech Specs Release |  |  |  |  |  | resources none → Procurement Resource [153 h]; Weightage [2250 h] |
| S06A-PR-2610 | IDT Station - Rebar-TBER |  |  |  |  |  | resources none → Procurement Resource [126 h]; Weightage [4500 h] |
| S06A-PR-2620 | IDT Station - Rebar-Purchase Requisition |  |  |  |  |  | resources none → Procurement Resource [126 h]; Weightage [1350 h] |
| S06A-PR-2650 | IDT Station - Rebar-Manufacturing Clearance & Manufacturing |  |  |  |  |  | resources none → Procurement Resource [567 h]; Weightage [18000 h] |
| S06A-PR-2660 | IDT Station - Rebar-Dispatch For Site-Lot-01 |  |  |  |  |  | resources none → Procurement Resource [144 h]; Weightage [1350 h] |
| S06A-PR-2670 | IDT Station - Rebar-Receipt At Site-Lot-01 |  |  |  |  |  | resources none → Procurement Resource [144 h]; Weightage [1350 h]; IDT Station - Rebar - Supply [34.2 NoS] |
| S06A-PR-2680 | IDT Station - Rebar-Dispatch For Site-Lot-02 |  |  |  |  |  | resources none → Procurement Resource [144 h]; Weightage [1350 h] |
| S06A-PR-2630 | IDT Station - Rebar-Note For Approval |  |  |  |  |  | resources none → Procurement Resource [63 h]; Weightage [900 h] |
| S06A-PR-2640 | IDT Station - Rebar-LOI / PO Release |  |  |  |  |  | resources none → Procurement Resource [153 h]; Weightage [4500 h] |
| S06A-PR-2700 | IDT Station - Rebar-Dispatch For Site-Lot-03 |  |  |  |  |  | resources none → Procurement Resource [144 h]; Weightage [1350 h] |
| S06A-PR-2690 | IDT Station - Rebar-Receipt At Site-Lot-02 |  |  |  |  |  | resources none → Procurement Resource [144 h]; Weightage [1350 h]; IDT Station - Rebar - Supply [34.2 NoS] |
| S06A-PR-2710 | IDT Station - Rebar-Receipt At Site-Lot-03 |  |  |  |  |  | resources none → Procurement Resource [144 h]; Weightage [1350 h]; IDT Station - Rebar - Supply [34.2 NoS] |
| S06A-PR-2720 | IDT Station - Rebar-Dispatch For Site-Lot-04 |  |  |  |  |  | resources none → Procurement Resource [144 h]; Weightage [1350 h] |
| S06A-PR-2740 | IDT Station - Rebar-Dispatch For Site-Lot-05 |  |  |  |  |  | resources none → Procurement Resource [144 h]; Weightage [1350 h] |
| S06A-PR-2730 | IDT Station - Rebar-Receipt At Site-Lot-04 |  |  |  |  |  | resources none → Procurement Resource [144 h]; Weightage [1350 h]; IDT Station - Rebar - Supply [34.2 NoS] |
| S06A-PR-2750 | IDT Station - Rebar-Receipt At Site-Lot-05 |  |  |  |  |  | resources none → Procurement Resource [144 h]; Weightage [1350 h]; IDT Station - Rebar - Supply [34.2 NoS] |
| 12 | **IDT STATION - FOUNDATION BOLT & INSERTS** |  | 2026-10-01 → 2026-11-06 (+36d) |  |  |  |  |
| S06A-PR-2760 | IDT Station - Foundation Bolt & Inserts-BOQ & Tech Specs Release |  |  |  |  |  | resources none → Procurement Resource [9 h]; Weightage [1500 h] |
| S06A-PR-2770 | IDT Station - Foundation Bolt & Inserts-TBER |  |  |  |  |  | resources none → Procurement Resource [9 h]; Weightage [3000 h] |
| S06A-PR-2780 | IDT Station - Foundation Bolt & Inserts-Purchase Requistion |  |  |  |  |  | resources none → Procurement Resource [9 h]; Weightage [900 h] |
| S06A-PR-2790 | IDT Station - Foundation Bolt & Inserts-Note For Approval |  |  |  |  |  | resources none → Procurement Resource [9 h]; Weightage [600 h] |
| S06A-PR-2800 | IDT Station - Foundation Bolt & Inserts-LOI / PO Release |  |  |  |  |  | resources none → Procurement Resource [9 h]; Weightage [3000 h] |
| S06A-PR-2810 | IDT Station - Foundation Bolt & Inserts-Manufacturing Clearance & Manufacturing |  | 2026-10-01 → 2026-11-06 (+36d) |  | 362.22d → 259.56d |  | resources none → Procurement Resource [45 h]; Weightage [12000 h] |
| S06A-PR-2820 | IDT Station - Foundation Bolt & Inserts-Dispatch For Site-Lot-01 |  |  |  |  |  | resources none → Procurement Resource [9 h]; Weightage [900 h] |
| S06A-PR-2830 | IDT Station - Foundation Bolt & Inserts-Receipt At Site-Lot-01 |  |  |  |  |  | resources none → Procurement Resource [9 h]; Weightage [900 h]; IDT Station - Foundation Bolt & Inserts - Supply [4 NoS] |
| S06A-PR-2840 | IDT Station - Foundation Bolt & Inserts-Dispatch For Site-Lot-02 |  |  |  |  |  | resources none → Procurement Resource [9 h]; Weightage [900 h] |
| S06A-PR-2850 | IDT Station - Foundation Bolt & Inserts-Receipt At Site-Lot-02 |  |  |  |  |  | resources none → Procurement Resource [9 h]; Weightage [900 h]; IDT Station - Foundation Bolt & Inserts - Supply [4 NoS] |
| S06A-PR-2860 | IDT Station - Foundation Bolt & Inserts-Dispatch For Site-Lot-03 |  |  |  |  |  | resources none → Procurement Resource [9 h]; Weightage [900 h] |
| S06A-PR-2880 | IDT Station - Foundation Bolt & Inserts-Dispatch For Site-Lot-04 |  |  |  |  |  | resources none → Procurement Resource [9 h]; Weightage [900 h] |
| S06A-PR-2900 | IDT Station - Foundation Bolt & Inserts-Dispatch For Site-Lot-05 |  |  |  |  |  | resources none → Procurement Resource [9 h]; Weightage [900 h] |
| S06A-PR-2870 | IDT Station - Foundation Bolt & Inserts-Receipt At Site-Lot-03 |  |  |  |  |  | resources none → Procurement Resource [9 h]; Weightage [900 h]; IDT Station - Foundation Bolt & Inserts - Supply [4 NoS] |
| S06A-PR-2890 | IDT Station - Foundation Bolt & Inserts-Receipt At Site-Lot-04 |  |  |  |  |  | resources none → Procurement Resource [9 h]; Weightage [900 h]; IDT Station - Foundation Bolt & Inserts - Supply [4 NoS] |
| S06A-PR-2910 | IDT Station - Foundation Bolt & Inserts-Receipt At Site-Lot-05 |  |  |  |  |  | resources none → Procurement Resource [9 h]; Weightage [900 h]; IDT Station - Foundation Bolt & Inserts - Supply [3 NoS] |
| S06A-PR-2920 | IDT Station - Rail-BOQ & Tech Specs Release |  |  |  |  |  | resources none → Procurement Resource [54 h]; Weightage [1500 h] |
| S06A-PR-2930 | IDT Station - Rail-TBER |  |  |  |  |  | resources none → Procurement Resource [45 h]; Weightage [3000 h] |
| S06A-PR-2940 | IDT Station - Rail-Purchase Requisition |  |  |  |  |  | resources none → Procurement Resource [45 h]; Weightage [900 h] |
| S06A-PR-2950 | IDT Station - Rail-Note For Approval |  |  |  |  |  | resources none → Procurement Resource [18 h]; Weightage [600 h] |
| S06A-PR-2960 | IDT Station - Rail-LOI / PO Release |  |  |  |  |  | resources none → Procurement Resource [54 h]; Weightage [3000 h] |
| S06A-PR-2970 | IDT Station - Rail-Manufacturing Clearance & Manufacturing |  |  |  |  |  | resources none → Procurement Resource [207 h]; Weightage [12000 h] |
| S06A-PR-2980 | IDT Station - Rail-Dispatch For Site-Lot-01 |  |  |  |  |  | resources none → Procurement Resource [54 h]; Weightage [900 h] |
| S06A-PR-3000 | IDT Station - Rail-Dispatch For Site-Lot-02 |  |  |  |  |  | resources none → Procurement Resource [54 h]; Weightage [900 h] |
| S06A-PR-3020 | IDT Station - Rail-Dispatch For Site-Lot-03 |  |  |  |  |  | resources none → Procurement Resource [54 h]; Weightage [900 h] |
| S06A-PR-3040 | IDT Station - Rail-Dispatch For Site-Lot-04 |  |  |  |  |  | resources none → Procurement Resource [54 h]; Weightage [900 h] |
| S06A-PR-3060 | IDT Station - Rail-Dispatch For Site-Lot-05 |  |  |  |  |  | resources none → Procurement Resource [54 h]; Weightage [900 h] |
| S06A-PR-2990 | IDT Station - Rail-Receipt For Site-Lot-01 |  |  |  |  |  | resources none → Procurement Resource [54 h]; Weightage [900 h]; IDT Station - Rail - Supply [4 NoS] |
| S06A-PR-3010 | IDT Station - Rail-Receipt For Site-Lot-02 |  |  |  |  |  | resources none → Procurement Resource [54 h]; Weightage [900 h]; IDT Station - Rail - Supply [4 NoS] |
| S06A-PR-3030 | IDT Station - Rail-Receipt For Site-Lot-03 |  |  |  |  |  | resources none → Procurement Resource [54 h]; Weightage [900 h]; IDT Station - Rail - Supply [4 NoS] |
| S06A-PR-3050 | IDT Station - Rail-Receipt For Site-Lot-04 |  |  |  |  |  | resources none → Procurement Resource [54 h]; Weightage [900 h]; IDT Station - Rail - Supply [4 NoS] |
| S06A-PR-3070 | IDT Station - Rail-Receipt For Site-Lot-05 |  |  |  |  |  | resources none → Procurement Resource [54 h]; Weightage [900 h]; IDT Station - Rail - Supply [3 NoS] |
| 14 | **IDT STATION - STRUCTURE, SHEETING & FASTENERS** |  | 2026-08-29 → 2026-10-05 (+37d) |  |  |  |  |
| S06A-PR-3080 | IDT Station - Structure, Sheeting & Fasteners-BOQ & Tech Specs Release |  |  |  |  |  | resources none → Procurement Resource [216 h]; Weightage [1500 h] |
| S06A-PR-3090 | IDT Station - Structure, Sheeting & Fasteners-TBER |  |  |  |  |  | resources none → Procurement Resource [171 h]; Weightage [3000 h] |
| S06A-PR-3100 | IDT Station - Structure, Sheeting & Fasteners-Purchase Requistion |  |  |  |  |  | resources none → Procurement Resource [171 h]; Weightage [900 h] |
| S06A-PR-3110 | IDT Station - Structure, Sheeting & Fasteners-Note For Approval |  |  |  |  |  | resources none → Procurement Resource [90 h]; Weightage [600 h] |
| S06A-PR-3120 | IDT Station - Structure, Sheeting & Fasteners-LOI / PO Release |  |  |  |  |  | resources none → Procurement Resource [216 h]; Weightage [3000 h] |
| S06A-PR-3130 | IDT Station - Structure, Sheeting & Fasteners-Manufacturing Clearance & Manufacturing |  |  |  |  |  | resources none → Procurement Resource [819 h]; Weightage [12000 h] |

| ID | Task | Start | Finish | Total float | Predecessors | Other |
| --- | --- | --- | --- | --- | --- | --- |
| S06A-PR-3140 | IDT Station - Structure, Sheeting & Fasteners-Dispatch For Site-Lot-01 |  | 2026-08-26 → 2026-09-30 (+35d) | 121d → 103d |  | resources none → Procurement Resource [207 h]; Weightage [900 h] |
| S06A-PR-3150 | IDT Station - Structure, Sheeting & Fasteners-Receipt At Site-Lot-01 |  | 2026-08-29 → 2026-10-04 (+36d) | 121d → 103d |  | resources none → Procurement Resource [207 h]; Weightage [900 h]; IDT Sheeting - Supply [4 NoS]; IDT Shed - Supply [4 NoS] |
| S06A-PR-3160 | IDT Station - Structure, Sheeting & Fasteners-Dispatch For Site-Lot-02 |  | 2026-08-26 → 2026-09-30 (+35d) | 118d → 100d |  | resources none → Procurement Resource [207 h]; Weightage [900 h] |
| S06A-PR-3170 | IDT Station - Structure, Sheeting & Fasteners-Receipt At Site-Lot-02 |  | 2026-08-29 → 2026-10-04 (+36d) | 118d → 100d |  | resources none → Procurement Resource [207 h]; Weightage [900 h]; IDT Sheeting - Supply [4 NoS]; IDT Shed - Supply [4 NoS] |
| S06A-PR-3180 | IDT Station - Structure, Sheeting & Fasteners-Dispatch For Site-Lot-03 |  | 2026-08-26 → 2026-10-01 (+36d) | 118d → 99d |  | resources none → Procurement Resource [207 h]; Weightage [900 h] |
| S06A-PR-3190 | IDT Station - Structure, Sheeting & Fasteners-Receipt At Site-Lot-03 |  | 2026-08-29 → 2026-10-05 (+37d) | 118d → 99d |  | resources none → Procurement Resource [207 h]; Weightage [900 h]; IDT Sheeting - Supply [4 NoS]; IDT Shed - Supply [4 NoS] |
| S06A-PR-3200 | IDT Station - Structure, Sheeting & Fasteners-Dispatch For Site-Lot-04 |  | 2026-08-26 → 2026-10-01 (+36d) | 118d → 100d |  |  |
| S06A-PR-3210 | IDT Station - Structure, Sheeting & Fasteners-Receipt At Site-Lot-04 |  | 2026-08-29 → 2026-10-05 (+37d) | 118d → 100d |  |  |
| S06A-PR-3220 | IDT Station - Structure, Sheeting & Fasteners-Dispatch For Site-Lot-05 |  | 2026-08-26 → 2026-10-01 (+36d) | 118d → 99d |  | resources none → Procurement Resource [207 h]; Weightage [900 h] |
| S06A-PR-3230 | IDT Station - Structure, Sheeting & Fasteners-Receipt At Site-Lot-05 |  | 2026-08-29 → 2026-10-05 (+37d) | 118d → 99d |  | resources none → Procurement Resource [207 h]; Weightage [900 h]; IDT Sheeting - Supply [3 NoS]; IDT Shed - Supply [3 NoS] |
| 15 | **LT CABLE - SUPPORT STRUCTURE** |  | 2026-09-20 → 2026-11-05 (+46d) |  |  |  |
| S06A-PR-3240 | LT Cable - Support Structure-BOQ & Tech Specs Release |  |  |  |  | resources none → Procurement Resource [45 h]; Weightage [1500 h] |
| S06A-PR-3250 | LT Cable - Support Structure-TBER |  |  |  |  | resources none → Procurement Resource [36 h]; Weightage [3000 h] |
| S06A-PR-3260 | LT Cable - Support Structure-Purchase Requisition |  |  |  |  | resources none → Procurement Resource [36 h]; Weightage [900 h] |
| S06A-PR-3290 | LT Cable - Support Structure-Manufacturing Clearance & Manufacturing |  |  |  |  | resources none → Procurement Resource [180 h]; Weightage [12000 h] |
| S06A-PR-3300 | LT Cable - Support Structure-Dispatch For Site-Lot-01 | 2026-08-23 → 2026-09-27 (+35d) | 2026-08-28 → 2026-10-03 (+36d) | 104d → 76d |  | resources none → Procurement Resource [45 h]; Weightage [900 h] |
| S06A-PR-3310 | LT Cable - Support Structure-Receipt At Site-Lot-01 | 2026-08-26 → 2026-09-30 (+35d) | 2026-08-31 → 2026-10-06 (+36d) | 119d → 101d |  | resources none → Procurement Resource [45 h]; Weightage [900 h]; LT Cable - Support Structure - Supply [4 Lot] |
| S06A-PR-3320 | LT Cable - Support Structure-Dispatch For Site-Lot-02 | 2026-08-28 → 2026-10-06 (+39d) | 2026-09-02 → 2026-10-11 (+39d) | 104d → 76d | S06A-PR-3300 SS+5d → S06A-PR-3300 SS+8d | resources none → Procurement Resource [45 h]; Weightage [900 h] |
| S06A-PR-3330 | LT Cable - Support Structure-Receipt At Site-Lot-02 | 2026-08-31 → 2026-10-09 (+39d) | 2026-09-05 → 2026-10-14 (+39d) | 114d → 93d |  | resources none → Procurement Resource [45 h]; Weightage [900 h]; LT Cable - Support Structure - Supply [4 Lot] |
| S06A-PR-3340 | LT Cable - Support Structure-Dispatch For Site-Lot-03 | 2026-09-02 → 2026-10-14 (+42d) | 2026-09-07 → 2026-10-19 (+42d) | 104d → 76d | S06A-PR-3320 SS+5d → S06A-PR-3320 SS+8d | resources none → Procurement Resource [45 h]; Weightage [900 h] |
| S06A-PR-3350 | LT Cable - Support Structure-Receipt At Site-Lot-03 | 2026-09-05 → 2026-10-17 (+42d) | 2026-09-10 → 2026-10-22 (+42d) | 110d → 86d |  | resources none → Procurement Resource [45 h]; Weightage [900 h]; LT Cable - Support Structure - Supply [4 Lot] |
| S06A-PR-3360 | LT Cable - Support Structure-Dispatch For Site-Lot-04 | 2026-09-07 → 2026-10-22 (+45d) | 2026-09-12 → 2026-10-27 (+45d) | 104d → 76d | S06A-PR-3340 SS+5d → S06A-PR-3340 SS+8d | resources none → Procurement Resource [45 h]; Weightage [900 h] |
| S06A-PR-3370 | LT Cable - Support Structure-Receipt At Site-Lot-04 | 2026-09-10 → 2026-10-25 (+45d) | 2026-09-15 → 2026-10-30 (+45d) | 105d → 79d |  | resources none → Procurement Resource [45 h]; Weightage [900 h]; LT Cable - Support Structure - Supply [4 Lot] |
| S06A-PR-3380 | LT Cable - Support Structure-Dispatch For Site-Lot-05 | 2026-09-12 → 2026-10-28 (+46d) | 2026-09-17 → 2026-11-02 (+46d) | 104d → 76d | S06A-PR-3360 SS+5d, S06A-PR-3290 → S06A-PR-3360 SS+6d, S06A-PR-3290 | resources none → Procurement Resource [45 h]; Weightage [900 h] |
| S06A-PR-3390 | LT Cable - Support Structure-Receipt At Site-Lot-05 | 2026-09-15 → 2026-10-31 (+46d) | 2026-09-20 → 2026-11-05 (+46d) | 104d → 76d |  | resources none → Procurement Resource [45 h]; Weightage [900 h]; LT Cable - Support Structure - Supply [3 Lot] |
| 16 | **LT CABLE - FASTENERS** |  | 2026-09-20 → 2026-10-26 (+36d) |  |  |  |
| S06A-PR-3400 | LT Cable - Fasteners-BOQ & Tech Specs Release |  |  |  |  | resources none → Procurement Resource [9 h]; Weightage [250 h] |
| S06A-PR-3410 | LT Cable - Fasteners-TBER |  |  |  |  | resources none → Procurement Resource [9 h]; Weightage [500 h] |
| S06A-PR-3420 | LT Cable - Fasteners-Purchase Requisition |  |  |  |  | resources none → Procurement Resource [9 h]; Weightage [150 h] |
| S06A-PR-3430 | LT Cable - Fasteners-Note For Approval |  |  |  |  | resources none → Procurement Resource [90 h]; Weightage [100 h] |
| S06A-PR-3440 | LT Cable - Fasteners-LOI / PO Release |  |  |  |  | resources none → Procurement Resource [9 h]; Weightage [500 h] |
| S06A-PR-3450 | LT Cable - Fasteners-Manufacturing Clearance & Manufacturing |  |  |  |  | resources none → Procurement Resource [27 h]; Weightage [2000 h] |
| S06A-PR-3460 | LT Cable - Fasteners-Dispatch For Site-Lot-01 | 2026-08-23 → 2026-09-27 (+35d) | 2026-08-28 → 2026-10-03 (+36d) | 104d → 86d |  | resources none → Procurement Resource [9 h]; Weightage [150 h] |
| S06A-PR-3470 | LT Cable - Fasteners-Receipt At Site-Lot-01 | 2026-08-26 → 2026-09-30 (+35d) | 2026-08-31 → 2026-10-06 (+36d) | 119d → 101d |  | resources none → Procurement Resource [9 h]; Weightage [150 h]; LT Cable - Fasteners - Supply [4 Lot] |
| S06A-PR-3480 | LT Cable - Fasteners-Dispatch For Site-Lot-02 | 2026-08-28 → 2026-10-03 (+36d) | 2026-09-02 → 2026-10-08 (+36d) | 104d → 86d |  | resources none → Procurement Resource [9 h]; Weightage [150 h] |
| S06A-PR-3490 | LT Cable - Fasteners-Receipt At Site-Lot-02 | 2026-08-31 → 2026-10-06 (+36d) | 2026-09-05 → 2026-10-11 (+36d) | 114d → 96d |  | resources none → Procurement Resource [9 h]; Weightage [150 h]; LT Cable - Fasteners - Supply [4 Lot] |
| S06A-PR-3500 | LT Cable - Fasteners-Dispatch For Site-Lot-03 | 2026-09-02 → 2026-10-08 (+36d) | 2026-09-07 → 2026-10-13 (+36d) | 104d → 86d |  | resources none → Procurement Resource [9 h]; Weightage [150 h] |
| S06A-PR-3510 | LT Cable - Fasteners-Receipt At Site-Lot-03 | 2026-09-05 → 2026-10-11 (+36d) | 2026-09-10 → 2026-10-16 (+36d) | 110d → 92d |  | resources none → Procurement Resource [9 h]; Weightage [150 h]; LT Cable - Fasteners - Supply [4 Lot] |
| S06A-PR-3520 | LT Cable - Fasteners-Dispatch For Site-Lot-04 | 2026-09-07 → 2026-10-13 (+36d) | 2026-09-12 → 2026-10-18 (+36d) | 104d → 86d |  | resources none → Procurement Resource [9 h]; Weightage [150 h] |
| S06A-PR-3530 | LT Cable - Fasteners-Receipt At Site-Lot-04 | 2026-09-10 → 2026-10-16 (+36d) | 2026-09-15 → 2026-10-21 (+36d) | 105d → 88d |  | resources none → Procurement Resource [9 h]; Weightage [150 h]; LT Cable - Fasteners - Supply [4 Lot] |
| S06A-PR-3540 | LT Cable - Fasteners-Dispatch For Site-Lot-05 | 2026-09-12 → 2026-10-18 (+36d) | 2026-09-17 → 2026-10-23 (+36d) | 104d → 86d |  | resources none → Procurement Resource [9 h]; Weightage [150 h] |
| S06A-PR-3550 | LT Cable - Fasteners-Receipt At Site-Lot-05 | 2026-09-15 → 2026-10-21 (+36d) | 2026-09-20 → 2026-10-26 (+36d) | 104d → 86d |  | resources none → Procurement Resource [9 h]; Weightage [150 h]; LT Cable - Fasteners - Supply [3 Lot] |
| 17 | **LT CABLE - MESSENGER WIRE** |  | 2026-09-18 → 2026-10-24 (+36d) |  |  |  |
| S06A-PR-3560 | LT Cable - Messenger Wire-BOQ & Tech Specs Release |  |  |  |  | resources none → Procurement Resource [126 h]; Weightage [750 h] |
| S06A-PR-3570 | LT Cable - Messenger Wire-TBER |  |  |  |  | resources none → Procurement Resource [99 h]; Weightage [1500 h] |
| S06A-PR-3580 | LT Cable - Messenger Wire-Purchase Requisition |  |  |  |  | resources none → Procurement Resource [99 h]; Weightage [450 h] |
| S06A-PR-3590 | LT Cable - Messenger Wire-Note For Approval |  |  |  |  | resources none → Procurement Resource [54 h]; Weightage [300 h] |
| S06A-PR-3600 | LT Cable - Messenger Wire-LOI / PO Release |  |  |  |  | resources none → Procurement Resource [126 h]; Weightage [1500 h] |
| S06A-PR-3610 | LT Cable - Messenger Wire-Manufacturing Clearance & Manufacturing |  | 2026-09-09 → 2026-10-15 (+36d) | 106d → 88d |  | resources none → Procurement Resource [477 h]; Weightage [6000 h] |
| S06A-PR-3620 | LT Cable - Messenger Wire-Dispatch For Site-Lot-01 |  |  |  |  | resources none → Procurement Resource [117 h]; Weightage [450 h] |
| S06A-PR-3630 | LT Cable - Messenger Wire-Receipt At Site-Lot-01 |  |  |  |  | resources none → Procurement Resource [117 h]; Weightage [450 h]; LT Cable - Messenger wire - Supply [18 KM] |
| S06A-PR-3640 | LT Cable - Messenger Wire-Dispatch For Site-Lot-02 |  |  |  |  | resources none → Procurement Resource [117 h]; Weightage [450 h] |
| S06A-PR-3660 | LT Cable - Messenger Wire-Dispatch For Site-Lot-03 |  |  |  |  | resources none → Procurement Resource [117 h]; Weightage [450 h] |
| S06A-PR-3650 | LT Cable - Messenger Wire-Receipt At Site-Lot-02 |  |  |  |  | resources none → Procurement Resource [117 h]; Weightage [450 h]; LT Cable - Messenger wire - Supply [18 KM] |
| S06A-PR-3670 | LT Cable - Messenger Wire-Receipt At Site-Lot-03 |  |  |  |  | resources none → Procurement Resource [117 h]; Weightage [450 h]; LT Cable - Messenger wire - Supply [18 KM] |
| S06A-PR-3680 | LT Cable - Messenger Wire-Dispatch For Site-Lot-04 | 2026-08-23 → 2026-09-27 (+35d) | 2026-08-28 → 2026-10-03 (+36d) | 119d → 101d |  | resources none → Procurement Resource [117 h]; Weightage [450 h] |
| S06A-PR-3690 | LT Cable - Messenger Wire-Receipt At Site-Lot-04 | 2026-08-26 → 2026-09-30 (+35d) | 2026-08-31 → 2026-10-06 (+36d) | 120d → 103d |  | resources none → Procurement Resource [117 h]; Weightage [450 h]; LT Cable - Messenger wire - Supply [18 KM] |
| S06A-PR-3700 | LT Cable - Messenger Wire-Dispatch For Site-Lot-05 | 2026-09-10 → 2026-10-16 (+36d) | 2026-09-15 → 2026-10-21 (+36d) | 106d → 88d |  | resources none → Procurement Resource [117 h]; Weightage [450 h] |
| S06A-PR-3710 | LT Cable - Messenger Wire-Receipt At Site-Lot-05 | 2026-09-13 → 2026-10-19 (+36d) | 2026-09-18 → 2026-10-24 (+36d) | 106d → 88d |  | resources none → Procurement Resource [117 h]; Weightage [450 h]; LT Cable - Messenger wire - Supply [11.5 KM] |
| 18 | **LT CABLE - CLAMPS** |  | 2026-10-11 → 2026-11-15 (+35d) |  |  |  |
| S06A-PR-3720 | LT Cable - Clamps-BOQ & Tech Specs Release |  |  |  |  | resources none → Procurement Resource [9 h]; Weightage [250 h] |
| S06A-PR-3730 | LT Cable - Clamps-TBER |  |  |  |  | resources none → Procurement Resource [9 h]; Weightage [500 h] |
| S06A-PR-3740 | LT Cable - Clamps-Purchase Requisition |  |  |  |  | resources none → Procurement Resource [9 h]; Weightage [150 h] |
| S06A-PR-3750 | LT Cable - Clamps-Note For Approval |  |  |  |  | resources none → Procurement Resource [9 h]; Weightage [100 h] |
| S06A-PR-3760 | LT Cable - Clamps-LOI / PO Release |  |  |  |  | resources none → Procurement Resource [9 h]; Weightage [500 h] |
| S06A-PR-3770 | LT Cable - Clamps-Manufacturing Clearance & Manufacturing | 2026-08-23 → 2026-09-27 (+35d) | 2026-10-01 → 2026-11-06 (+36d) | 84d → 66d |  | resources none → Procurement Resource [45 h]; Weightage [2000 h] |
| S06A-PR-3780 | LT Cable - Clamps-Dispatch For Site-Lot-01 | 2026-09-06 → 2026-10-12 (+36d) | 2026-09-11 → 2026-10-17 (+36d) | 90d → 72d |  | resources none → Procurement Resource [9 h]; Weightage [150 h] |
| S06A-PR-3790 | LT Cable - Clamps-Receipt At Site-Lot-01 | 2026-09-09 → 2026-10-15 (+36d) | 2026-09-14 → 2026-10-20 (+36d) | 105d → 87d |  | resources none → Procurement Resource [9 h]; Weightage [150 h]; LT Cable - Clamps - Supply [4 Lot] |
| S06A-PR-3800 | LT Cable - Clamps-Dispatch For Site-Lot-02 | 2026-09-11 → 2026-10-17 (+36d) | 2026-09-16 → 2026-10-22 (+36d) | 90d → 72d |  | resources none → Procurement Resource [9 h]; Weightage [150 h] |
| S06A-PR-3810 | LT Cable - Clamps-Receipt At Site-Lot-02 | 2026-09-14 → 2026-10-20 (+36d) | 2026-09-19 → 2026-10-25 (+36d) | 100d → 82d |  | resources none → Procurement Resource [9 h]; Weightage [150 h]; LT Cable - Clamps - Supply [4 Lot] |

| ID | Task | Start | Finish | Duration | Complete | Total float | Predecessors | Other |
| --- | --- | --- | --- | --- | --- | --- | --- | --- |
| S06A-PR-3820 | LT Cable - Clamps-Dispatch For Site-Lot-03 | 2026-09-16 → 2026-10-22 (+36d) | 2026-09-21 → 2026-10-27 (+36d) |  |  | 90d → 72d |  | resources none → Procurement Resource [9 h]; Weightage [150 h] |
| S06A-PR-3830 | LT Cable - Clamps-Receipt At Site-Lot-03 | 2026-09-19 → 2026-10-25 (+36d) | 2026-09-24 → 2026-10-30 (+36d) |  |  | 96d → 78d |  | resources none → Procurement Resource [9 h]; Weightage [150 h]; LT Cable - Clamps - Supply [4 Lot] |
| S06A-PR-3840 | LT Cable - Clamps-Dispatch For Site-Lot-04 | 2026-09-21 → 2026-10-27 (+36d) | 2026-09-26 → 2026-11-01 (+36d) |  |  | 90d → 72d |  | resources none → Procurement Resource [9 h]; Weightage [150 h] |
| S06A-PR-3850 | LT Cable - Clamps-Receipt At Site-Lot-04 | 2026-09-24 → 2026-10-30 (+36d) | 2026-09-29 → 2026-11-04 (+36d) |  |  | 91d → 74d |  | resources none → Procurement Resource [9 h]; Weightage [150 h]; LT Cable - Clamps - Supply [4 Lot] |
| S06A-PR-3860 | LT Cable - Clamps-Dispatch For Site-Lot-05 | 2026-10-03 → 2026-11-07 (+35d) | 2026-10-08 → 2026-11-12 (+35d) |  |  | 84d → 66d |  | resources none → Procurement Resource [9 h]; Weightage [150 h] |
| S06A-PR-3870 | LT Cable - Clamps-Receipt At Site-Lot-05 | 2026-10-06 → 2026-11-10 (+35d) | 2026-10-11 → 2026-11-15 (+35d) |  |  | 84d → 66d |  | resources none → Procurement Resource [9 h]; Weightage [150 h]; LT Cable - Clamps - Supply [3 Lot] |
| 19 | **LT CABLE - HANGERS** |  | 2026-08-31 → 2026-10-06 (+36d) |  |  |  |  |  |
| S06A-PR-3880 | LT Cable - Hangers-BOQ & Tech Specs Release |  |  |  |  |  |  | resources none → Procurement Resource [126 h]; Weightage [250 h] |
| S06A-PR-3890 | LT Cable - Hangers-TBER |  |  |  |  |  |  | resources none → Procurement Resource [99 h]; Weightage [500 h] |
| S06A-PR-3900 | LT Cable - Hangers-Purchase Requisition |  |  |  |  |  |  | resources none → Procurement Resource [99 h]; Weightage [150 h] |
| S06A-PR-3910 | LT Cable - Hangers-Note For Approval |  |  |  |  |  |  | resources none → Procurement Resource [54 h]; Weightage [100 h] |
| S06A-PR-3920 | LT Cable - Hangers-LOI / PO Release |  |  |  |  |  |  | resources none → Procurement Resource [126 h]; Weightage [500 h] |
| S06A-PR-3930 | LT Cable - Hangers-Manufacturing Clearance & Manufacturing |  |  |  |  |  |  | resources none → Procurement Resource [477 h]; Weightage [2000 h] |
| S06A-PR-3940 | LT Cable - Hangers-Dispatch For Site-Lot-01 |  |  |  |  |  |  | resources none → Procurement Resource [117 h]; Weightage [150 h] |
| S06A-PR-3960 | LT Cable - Hangers-Dispatch For Site-Lot-02 |  |  |  |  |  |  | resources none → Procurement Resource [117 h]; Weightage [150 h] |
| S06A-PR-3980 | LT Cable - Hangers-Dispatch For Site-Lot-03 |  |  |  |  |  |  | resources none → Procurement Resource [117 h]; Weightage [150 h] |
| S06A-PR-3990 | LT Cable - Hangers-Receipt At Site-Lot-03 |  |  |  |  |  |  | resources none → Procurement Resource [117 h]; Weightage [150 h]; LT Cable - Hangers - Supply [4 Lot] |
| S06A-PR-4000 | LT Cable - Hangers-Dispatch For Site-Lot-04 |  | 2026-08-24 → 2026-09-28 (+35d) |  |  | 120d → 103d |  | resources none → Procurement Resource [117 h]; Weightage [150 h] |
| S06A-PR-4010 | LT Cable - Hangers-Receipt At Site-Lot-04 |  | 2026-08-27 → 2026-10-01 (+35d) |  |  | 120d → 103d |  | resources none → Procurement Resource [117 h]; Weightage [150 h]; LT Cable - Hangers - Supply [4 Lot] |
| S06A-PR-3950 | LT Cable - Hangers-Receipt At Site-Lot-01 |  |  |  |  |  |  | resources none → Procurement Resource [117 h]; Weightage [150 h]; LT Cable - Hangers - Supply [4 Lot] |
| S06A-PR-3970 | LT Cable - Hangers-Receipt At Site-Lot-02 |  |  |  |  |  |  | resources none → Procurement Resource [117 h]; Weightage [150 h]; LT Cable - Hangers - Supply [4 Lot] |
| S06A-PR-4020 | LT Cable - Hangers-Dispatch For Site-Lot-05 | 2026-08-23 → 2026-09-27 (+35d) | 2026-08-28 → 2026-10-03 (+36d) |  |  | 124d → 106d |  | resources none → Procurement Resource [117 h]; Weightage [150 h] |
| S06A-PR-4030 | LT Cable - Hangers-Receipt At Site-Lot-05 | 2026-08-26 → 2026-09-30 (+35d) | 2026-08-31 → 2026-10-06 (+36d) |  |  | 124d → 106d |  | resources none → Procurement Resource [117 h]; Weightage [150 h]; LT Cable - Hangers - Supply [3 Lot] |
| 20 | **LT CABLE** |  | 2026-10-14 → 2026-11-18 (+35d) |  |  |  |  |  |
| S06A-PR-4040 | LT Cable-BOQ & Tech Specs Release |  |  |  |  |  |  | resources none → Procurement Resource [145 h]; Weightage [3000 h] |
| S06A-PR-4050 | LT Cable-TBER |  |  |  |  |  |  | resources none → Procurement Resource [117 h]; Weightage [6000 h] |
| S06A-PR-4060 | LT Cable-Purchase Requisition |  |  |  |  |  |  | resources none → Procurement Resource [117 h]; Weightage [1800 h] |
| S06A-PR-4070 | LT Cable-Note For Approval |  |  |  |  |  |  | resources none → Procurement Resource [58 h]; Weightage [1200 h] |
| S06A-PR-4090 | LT Cable-Manufacturing Clearance & Manufacturing |  | 2026-08-23 → 2026-11-06 (+75d) |  | 50% → 70% | 86d → 68d |  | resources none → Procurement Resource [544 h]; Weightage [24000 h] |
| S06A-PR-4140 | LT Cable-Dispatch For Site-Lot-03 | 2026-09-02 → 2026-08-04 A (-29d) | 2026-09-07 → 2026-09-30 (+23d) |  | 0% → 44% | 86d → 91d |  | resources none → Procurement Resource [130 h]; Weightage [1800 h] |
| S06A-PR-4100 | LT Cable-Dispatch For Site-Lot-01 | 2026-08-23 → 2026-08-17 A (-6d) | 2026-08-28 → 2026-08-21 A (-7d) |  | 0% → 100% | 86d → none | S06A-PR-4090 SS → S06A-PR-4090 SS+4d |  |
| S06A-PR-4110 | LT Cable-Receipt At Site-Lot-01 | 2026-08-26 → 2026-08-20 A (-6d) | 2026-08-31 → 2026-09-25 A (+25d) |  | 0% → 100% | 123d → none |  |  |
| S06A-PR-4120 | LT Cable-Dispatch For Site-Lot-02 | 2026-08-28 → 2026-08-25 A (-3d) | 2026-09-02 → 2026-08-29 A (-4d) |  | 0% → 100% | 86d → none |  | resources none → Procurement Resource [130 h]; Weightage [1800 h] |
| S06A-PR-4130 | LT Cable-Receipt At Site-Lot-02 | 2026-08-31 → 2026-08-29 A (-2d) | 2026-09-05 → 2026-09-04 A (-1d) |  | 0% → 100% | 118d → none |  | resources none → Procurement Resource [130 h]; Weightage [1800 h]; LT Cable - Supply [43.33 KM] |
| S06A-PR-4150 | LT Cable-Receipt At Site-Lot-03 | 2026-09-05 → 2026-09-10 A (+5d) | 2026-09-10 → 2026-10-04 (+24d) |  | 0% → 44% | 112d → 104d |  | resources none → Procurement Resource [130 h]; Weightage [1800 h]; LT Cable - Supply [43.33 KM] |
| S06A-PR-4160 | LT Cable-Dispatch For Site-Lot-04 | 2026-09-17 → 2026-09-27 (+10d) | 2026-09-22 → 2026-10-03 (+11d) |  |  | 86d → 91d |  | resources none → Procurement Resource [130 h]; Weightage [1800 h] |
| S06A-PR-4170 | LT Cable-Receipt At Site-Lot-04 | 2026-09-20 → 2026-09-30 (+10d) | 2026-09-25 → 2026-10-06 (+11d) |  |  | 97d → 105d |  | resources none → Procurement Resource [130 h]; Weightage [1800 h]; LT Cable - Supply [43.33 KM] |
| S06A-PR-4180 | LT Cable-Dispatch For Site-Lot-05 | 2026-10-03 → 2026-11-07 (+35d) | 2026-10-08 → 2026-11-12 (+35d) |  |  | 86d → 68d | S06A-PR-4160 SS+15d, S06A-PR-4090 → S06A-PR-4160 SS+17d, S06A-PR-4090 | resources none → Procurement Resource [130 h]; Weightage [1800 h] |
| S06A-PR-4190 | LT Cable-Receipt At Site-Lot-05 | 2026-10-06 → 2026-11-10 (+35d) | 2026-10-14 → 2026-11-18 (+35d) |  |  | 86d → 68d |  | resources none → Procurement Resource [130 h]; Weightage [1800 h]; LT Cable - Supply [31.67 KM] |
| 21 | **CONTROL CABLES** |  | 2026-11-08 → 2026-11-20 (+12d) |  |  |  |  |  |
| S06A-PR-4210 | Control Cables-TBER |  |  |  |  |  |  | resources none → Procurement Resource [18 h]; Weightage [3000 h] |
| S06A-PR-4220 | Control Cables-Purchase Requisition |  |  |  |  |  |  | resources none → Procurement Resource [18 h]; Weightage [900 h] |
| S06A-PR-4230 | Control Cables-Note For Approval |  |  |  |  |  |  | resources none → Procurement Resource [9 h]; Weightage [600 h] |
| S06A-PR-4240 | Control Cables-LOI / PO Release |  |  |  |  |  |  | resources none → Procurement Resource [27 h]; Weightage [3000 h] |
| S06A-PR-4250 | Control Cables-Manufacturing Clearance & Manufacturing |  | 2026-10-30 → 2026-11-12 (+13d) |  |  | 67d → 71d |  | resources none → Procurement Resource [90 h]; Weightage [12000 h] |
| S06A-PR-4260 | Control Cables-Dispatch For Site-Lot-01 | 2026-08-23 → 2026-08-01 A (-22d) | 2026-08-28 → 2026-08-08 A (-20d) |  | 0% → 100% | 115d → none |  | resources none → Procurement Resource [27 h]; Weightage [900 h] |
| S06A-PR-4270 | Control Cables-Receipt At Site-Lot-01 | 2026-08-26 → 2026-08-05 A (-21d) | 2026-08-31 → 2026-08-12 A (-19d) |  | 0% → 100% | 132d → none |  | resources none → Procurement Resource [27 h]; Weightage [900 h]; Control Cable - Supply [3 KM] |
| S06A-PR-4280 | Control Cables-Dispatch For Site-Lot-02 | 2026-08-28 → 2026-09-01 A (+4d) | 2026-09-02 → 2026-09-07 A (+5d) |  | 0% → 100% | 115d → none |  | resources none → Procurement Resource [27 h]; Weightage [900 h] |
| S06A-PR-4290 | Control Cables-Receipt At Site-Lot-02 | 2026-08-31 → 2026-09-05 A (+5d) | 2026-09-05 → 2026-09-10 A (+5d) |  | 0% → 100% | 126d → none |  | resources none → Procurement Resource [27 h]; Control Cable - Supply [3 KM]; Weightage [900 h] |
| S06A-PR-4300 | Control Cables-Dispatch For Site-Lot-03 | 2026-09-02 → 2026-09-10 A (+8d) | 2026-09-07 → 2026-09-15 A (+8d) |  | 0% → 100% | 115d → none |  | resources none → Procurement Resource [27 h]; Weightage [900 h] |
| S06A-PR-4310 | Control Cables-Receipt At Site-Lot-03 | 2026-09-05 → 2026-09-13 A (+8d) | 2026-09-10 → 2026-09-16 A (+6d) |  | 0% → 100% | 121d → none |  | resources none → Procurement Resource [27 h]; Control Cable - Supply [3 KM]; Weightage [900 h] |
| S06A-PR-4320 | Control Cables-Dispatch For Site-Lot-04 | 2026-09-07 → 2026-09-27 (+20d) | 2026-09-12 → 2026-10-03 (+21d) |  |  | 115d → 112d | S06A-PR-4300 SS+5d → S06A-PR-4300 SS+3d | resources none → Procurement Resource [27 h]; Weightage [900 h] |
| S06A-PR-4330 | Control Cables-Receipt At Site-Lot-04 | 2026-09-10 → 2026-09-30 (+20d) | 2026-09-15 → 2026-10-06 (+21d) |  |  | 116d → 114d |  | resources none → Procurement Resource [27 h]; Control Cable - Supply [3 KM]; Weightage [900 h] |
| S06A-PR-4340 | Control Cables-Dispatch For Site-Lot-05 | 2026-10-31 → 2026-11-13 (+13d) | 2026-11-05 → 2026-11-18 (+13d) |  |  | 67d → 71d |  | resources none → Procurement Resource [27 h]; Weightage [900 h] |
| S06A-PR-4350 | Control Cables-Receipt At Site-Lot-05 | 2026-11-03 → 2026-11-16 (+13d) | 2026-11-08 → 2026-11-20 (+12d) | 6d → 5d |  | 67d → 71d | S06A-PR-4340 SS+3d, S06A-PR-4340 FF+3d → S06A-PR-4340 SS+3d, S06A-PR-4340 FF+2d | resources none → Procurement Resource [27 h]; Control Cable - Supply [2 KM]; Weightage [900 h] |
| 22 | **HT CABLE** |  | 2026-10-28 → 2026-11-20 (+23d) |  |  |  |  |  |
| S06A-PR-4360 | Ht Cable-BOQ & Tech Specs Release |  |  |  |  |  |  | resources none → Procurement Resource [198 h]; Weightage [3000 h] |
| S06A-PR-4370 | Ht Cable-TBER |  |  |  |  |  |  | resources none → Procurement Resource [158 h]; Weightage [6000 h] |
| S06A-PR-4380 | HT Cable-Purchase Requisition |  |  |  |  |  |  | resources none → Procurement Resource [158 h]; Weightage [1800 h] |
| S06A-PR-4390 | HT Cable-Note For Approval |  |  |  |  |  |  | resources none → Procurement Resource [79 h]; Weightage [1200 h] |
| S06A-PR-4400 | Ht Cable-LOI / PO Release |  |  |  |  |  |  | resources none → Procurement Resource [198 h]; Weightage [6000 h] |
| S06A-PR-4410 | HT Cable-Manufacturing Clearance & Manufacturing |  | 2026-10-19 → 2026-11-11 (+23d) |  | 12% → 40% | 82d → 68d |  | resources none → Procurement Resource [740 h]; Weightage [24000 h] |
| S06A-PR-4420 | HT Cable-Dispatch For Site-Lot-01 | 2026-08-23 → 2026-09-27 (+35d) | 2026-08-28 → 2026-10-03 (+36d) |  |  | 116d → 85d |  | resources none → Procurement Resource [184 h]; Weightage [1800 h] |
| S06A-PR-4430 | HT Cable-Receipt At Site-Lot-01 | 2026-08-26 → 2026-10-01 (+36d) | 2026-08-31 → 2026-10-07 (+37d) |  |  | 135d → 116d | S06A-PR-4420 FF+3d, S06A-PR-4420 SS+3d → S06A-PR-4420 FF+3d, S06A-PR-4420 SS+4d | resources none → Procurement Resource [184 h]; HT Cable - Supply [16.67 KM]; Weightage [1800 h] |
| S06A-PR-4440 | HT Cable-Dispatch For Site-Lot-02 | 2026-08-28 → 2026-10-03 (+36d) | 2026-09-02 → 2026-10-08 (+36d) |  |  | 116d → 85d |  | resources none → Procurement Resource [184 h]; Weightage [1800 h] |
| S06A-PR-4450 | HT Cable-Receipt At Site-Lot-02 | 2026-08-31 → 2026-10-06 (+36d) | 2026-09-05 → 2026-10-11 (+36d) |  |  | 130d → 112d |  | resources none → Procurement Resource [184 h]; HT Cable - Supply [16.67 KM]; Weightage [1800 h] |
| S06A-PR-4460 | HT Cable-Dispatch For Site-Lot-03 | 2026-09-02 → 2026-10-08 (+36d) | 2026-09-07 → 2026-10-13 (+36d) |  |  | 116d → 85d |  | resources none → Procurement Resource [184 h]; Weightage [1800 h] |
| S06A-PR-4470 | HT Cable-Receipt At Site-Lot-03 | 2026-09-05 → 2026-10-11 (+36d) | 2026-09-10 → 2026-10-16 (+36d) |  |  | 125d → 107d |  | resources none → Procurement Resource [184 h]; HT Cable - Supply [16.67 KM]; Weightage [1800 h] |
| S06A-PR-4480 | HT Cable-Dispatch For Site-Lot-04 | 2026-09-07 → 2026-10-13 (+36d) | 2026-09-12 → 2026-10-18 (+36d) |  |  | 116d → 85d |  | resources none → Procurement Resource [184 h]; Weightage [1800 h] |
| S06A-PR-4490 | HT Cable-Receipt At Site-Lot-04 | 2026-09-10 → 2026-10-16 (+36d) | 2026-09-15 → 2026-10-21 (+36d) |  |  | 116d → 85d |  | resources none → Procurement Resource [184 h]; HT Cable - Supply [16.67 KM]; Weightage [1800 h] |

| ID | Task | Start | Finish | Duration | Complete | Total float | Predecessors | Other |
| --- | --- | --- | --- | --- | --- | --- | --- | --- |
| S06A-PR-4500 | HT Cable-Dispatch For Site-Lot-05 | 2026-10-20 → 2026-11-12 (+23d) | 2026-10-25 → 2026-11-17 (+23d) |  |  | 82d → 68d |  | resources none → Procurement Resource [184 h]; Weightage [1800 h] |
| S06A-PR-4510 | HT Cable-Receipt At Site-Lot-05 | 2026-10-23 → 2026-11-15 (+23d) | 2026-10-28 → 2026-11-20 (+23d) |  |  | 82d → 68d |  | resources none → Procurement Resource [184 h]; HT Cable - Supply [15.33 KM]; Weightage [1800 h] |
| 23 | **FIBER OPTIC CABLE** |  | 2026-10-28 → 2026-10-26 (-2d) |  |  |  |  |  |
| S06A-PR-4520 | Fiber Optic Cable-BOQ & Tech Specs Release |  |  |  |  |  |  | resources none → Procurement Resource [18 h]; Weightage [1500 h] |
| S06A-PR-4530 | Fiber Optic Cable-TBER |  |  |  |  |  |  | resources none → Procurement Resource [18 h]; Weightage [3000 h] |
| S06A-PR-4540 | Fiber Optic Cable-Purchase Requisition |  |  |  |  |  |  | resources none → Procurement Resource [18 h]; Weightage [900 h] |
| S06A-PR-4550 | Fiber Optic Cable-Note For Approval |  |  |  |  |  |  | resources none → Procurement Resource [9 h]; Weightage [600 h] |
| S06A-PR-4560 | Fiber Optic Cable-LOI / PO Release |  |  |  |  |  |  | resources none → Procurement Resource [18 h]; Weightage [3000 h] |
| S06A-PR-4570 | Fiber Optic Cable-Manufacturing Clearance & Manufacturing | 2026-08-23 → 2026-09-07 A (+15d) | 2026-10-20 → 2026-09-19 A (-31d) | 58d → 45d | 0% → 100% | 76d → none |  | resources none → Procurement Resource [72 h]; Weightage [12000 h] |
| S06A-PR-4580 | Fiber Optic Cable-Dispatch For Site-Lot-01 | 2026-09-06 → 2026-09-27 (+21d) | 2026-09-11 → 2026-10-03 (+22d) |  |  | 100d → 95d | S06A-PR-4570 SS+14d → S06A-PR-4570 SS+10d | resources none → Procurement Resource [18 h]; Weightage [900 h] |
| S06A-PR-4590 | Fiber Optic Cable-Receipt At Site-Lot-01 | 2026-09-09 → 2026-09-30 (+21d) | 2026-09-14 → 2026-10-06 (+22d) |  |  | 111d → 107d |  | resources none → Procurement Resource [18 h]; FO Cable - Supply [8 KM]; Weightage [900 h] |
| S06A-PR-4600 | Fiber Optic Cable-Dispatch For Site-Lot-02 | 2026-09-11 → 2026-10-03 (+22d) | 2026-09-16 → 2026-10-08 (+22d) |  |  | 100d → 95d |  | resources none → Procurement Resource [18 h]; Weightage [900 h] |
| S06A-PR-4610 | Fiber Optic Cable-Receipt At Site-Lot-02 | 2026-09-14 → 2026-10-06 (+22d) | 2026-09-19 → 2026-10-11 (+22d) |  |  | 110d → 106d |  | resources none → Procurement Resource [18 h]; FO Cable - Supply [8 KM]; Weightage [900 h] |
| S06A-PR-4620 | Fiber Optic Cable-Dispatch For Site-Lot-03 | 2026-09-16 → 2026-10-08 (+22d) | 2026-09-21 → 2026-10-13 (+22d) |  |  | 100d → 95d |  | resources none → Procurement Resource [18 h]; Weightage [900 h] |
| S06A-PR-4630 | Fiber Optic Cable-Receipt At Site-Lot-03 | 2026-09-18 → 2026-10-10 (+22d) | 2026-09-23 → 2026-10-15 (+22d) |  |  | 106d → 102d |  | resources none → Procurement Resource [18 h]; FO Cable - Supply [8 KM]; Weightage [900 h] |
| S06A-PR-4640 | Fiber Optic Cable-Dispatch For Site-Lot-04 | 2026-09-21 → 2026-10-13 (+22d) | 2026-09-26 → 2026-10-18 (+22d) |  |  | 100d → 95d |  | resources none → Procurement Resource [18 h]; Weightage [900 h] |
| S06A-PR-4650 | Fiber Optic Cable-Receipt At Site-Lot-04 | 2026-09-23 → 2026-10-15 (+22d) | 2026-09-28 → 2026-10-20 (+22d) |  |  | 101d → 98d |  | resources none → Procurement Resource [18 h]; FO Cable - Supply [8 KM]; Weightage [900 h] |
| S06A-PR-4660 | Fiber Optic Cable-Dispatch For Site-Lot-05 | 2026-10-21 → 2026-10-18 (-3d) | 2026-10-26 → 2026-10-23 (-3d) |  |  | 76d → 95d |  | resources none → Procurement Resource [18 h]; Weightage [900 h] |
| S06A-PR-4670 | Fiber Optic Cable-Receipt At Site-Lot-05 | 2026-10-23 → 2026-10-21 (-2d) | 2026-10-28 → 2026-10-26 (-2d) |  |  | 76d → 95d | S06A-PR-4660 SS+2d, S06A-PR-4660 FF+2d → S06A-PR-4660 SS+3d, S06A-PR-4660 FF+2d | resources none → Procurement Resource [18 h]; FO Cable - Supply [5 KM]; Weightage [900 h] |
| 24 | **INVERTER STRUCTURE - SUPPORT BEAM & COLUMN** |  | 2026-09-20 → 2026-10-26 (+36d) |  |  |  |  |  |
| S06A-PR-4680 | Inverter Structure - Support Beam & Column-BOQ & Tech Specs Release |  |  |  |  |  |  | resources none → Procurement Resource [9 h]; Weightage [5250 h] |
| S06A-PR-4690 | Inverter Structure - Support Beam & Column-TBER |  |  |  |  |  |  | resources none → Procurement Resource [9 h]; Weightage [10500 h] |
| S06A-PR-4700 | Inverter Structure - Support Beam & Column-Purchase Requistion |  |  |  |  |  |  | resources none → Procurement Resource [9 h]; Weightage [3150 h] |
| S06A-PR-4710 | Inverter Structure - Support Beam & Column-Note For Approval |  |  |  |  |  |  | resources none → Procurement Resource [9 h]; Weightage [2100 h] |
| S06A-PR-4720 | Inverter Structure - Support Beam & Column-LOI / PO Release |  |  |  |  |  |  | resources none → Procurement Resource [9 h]; Weightage [10500 h] |
| S06A-PR-4730 | Inverter Structure - Support Beam & Column-Manufacturing Clearance & Manufacturing |  |  |  |  |  |  | resources none → Procurement Resource [45 h]; Weightage [42000 h] |
| S06A-PR-4740 | Inverter Structure - Support Beam & Column-Dispatch For Site-Lot-01 | 2026-08-23 → 2026-09-27 (+35d) | 2026-08-28 → 2026-10-03 (+36d) |  |  | 112d → 94d |  | resources none → Procurement Resource [9 h]; Weightage [3150 h] |
| S06A-PR-4750 | Inverter Structure - Support Beam & Column-Receipt At Site-Lot-01 | 2026-08-26 → 2026-09-30 (+35d) | 2026-08-31 → 2026-10-06 (+36d) |  |  | 132d → 114d |  | resources none → Procurement Resource [9 h]; Inverter Structure - Support beam & Column - Supply [4 NoS]; Weightage [3150 h] |
| S06A-PR-4760 | Inverter Structure - Support Beam & Column-Dispatch For Site-Lot-02 | 2026-08-28 → 2026-10-03 (+36d) | 2026-09-02 → 2026-10-08 (+36d) |  |  | 112d → 94d |  | resources none → Procurement Resource [9 h]; Weightage [3150 h] |
| S06A-PR-4770 | Inverter Structure - Support Beam & Column-Receipt At Site-Lot-02 | 2026-08-31 → 2026-10-06 (+36d) | 2026-09-05 → 2026-10-11 (+36d) |  |  | 127d → 109d |  | resources none → Procurement Resource [9 h]; Inverter Structure - Support beam & Column - Supply [4 NoS]; Weightage [3150 h] |
| S06A-PR-4780 | Inverter Structure - Support Beam & Column-Dispatch For Site-Lot-03 | 2026-09-02 → 2026-10-08 (+36d) | 2026-09-07 → 2026-10-13 (+36d) |  |  | 112d → 94d |  | resources none → Procurement Resource [9 h]; Weightage [3150 h] |
| S06A-PR-4790 | Inverter Structure - Support Beam & Column-Receipt At Site-Lot-03 | 2026-09-05 → 2026-10-11 (+36d) | 2026-09-10 → 2026-10-16 (+36d) |  |  | 122d → 104d |  | resources none → Procurement Resource [9 h]; Inverter Structure - Support beam & Column - Supply [4 NoS]; Weightage [3150 h] |
| S06A-PR-4800 | Inverter Structure - Support Beam & Column-Dispatch For Site-Lot-04 | 2026-09-07 → 2026-10-13 (+36d) | 2026-09-12 → 2026-10-18 (+36d) |  |  | 112d → 94d |  | resources none → Procurement Resource [9 h]; Weightage [3150 h] |
| S06A-PR-4810 | Inverter Structure - Support Beam & Column-Receipt At Site-Lot-04 | 2026-09-10 → 2026-10-16 (+36d) | 2026-09-15 → 2026-10-21 (+36d) |  |  | 117d → 100d |  | resources none → Procurement Resource [9 h]; Inverter Structure - Support beam & Column - Supply [4 NoS]; Weightage [3150 h] |
| S06A-PR-4820 | Inverter Structure - Support Beam & Column-Dispatch For Site-Lot-05 | 2026-09-12 → 2026-10-18 (+36d) | 2026-09-17 → 2026-10-23 (+36d) |  |  | 112d → 94d |  | resources none → Procurement Resource [9 h]; Weightage [3150 h] |
| S06A-PR-4830 | Inverter Structure - Support Beam & Column-Receipt At Site-Lot-05 | 2026-09-15 → 2026-10-21 (+36d) | 2026-09-20 → 2026-10-26 (+36d) |  |  | 112d → 94d |  | resources none → Procurement Resource [9 h]; Inverter Structure - Support beam & Column - Supply [3 NoS]; Weightage [3150 h] |
| 25 | **INVERTER STRUCTURE - FASTENERS** |  | 2026-10-11 → 2026-11-15 (+35d) |  |  |  |  |  |
| S06A-PR-4840 | Inverter Structure - Fasteners-BOQ & Tech Specs Release |  |  |  |  |  |  | resources none → Procurement Resource [9 h]; Weightage [750 h] |
| S06A-PR-4870 | Inverter Structure - Fasteners-Note For Approval |  |  |  |  |  |  | resources none → Procurement Resource [9 h]; Weightage [300 h] |
| S06A-PR-4880 | Inverter Structure - Fasteners-LOI / PO Release |  |  |  |  |  |  | resources none → Procurement Resource [9 h]; Weightage [1500 h] |
| S06A-PR-4890 | Inverter Structure - Fasteners-Manufacturing Clearance & Manufacturing | 2026-08-23 → 2026-09-27 (+35d) | 2026-10-01 → 2026-11-06 (+36d) |  |  | 86d → 68d |  | resources none → Procurement Resource [45 h]; Weightage [6000 h] |
| S06A-PR-4900 | Inverter Structure - Fasteners-Dispatch For Site-Lot-01 | 2026-09-06 → 2026-10-12 (+36d) | 2026-09-11 → 2026-10-17 (+36d) |  |  | 92d → 74d |  | resources none → Procurement Resource [9 h]; Weightage [450 h] |
| S06A-PR-4910 | Inverter Structure - Fasteners-Receipt At Site-Lot-01 | 2026-09-09 → 2026-10-15 (+36d) | 2026-09-14 → 2026-10-20 (+36d) |  |  | 118d → 100d |  | resources none → Procurement Resource [9 h]; Inverter Structure - Fasteners - Supply [4 NoS]; Weightage [450 h] |
| S06A-PR-4920 | Inverter Structure - Fasteners-Dispatch For Site-Lot-02 | 2026-09-11 → 2026-10-17 (+36d) | 2026-09-16 → 2026-10-22 (+36d) |  |  | 92d → 74d |  | resources none → Procurement Resource [9 h]; Weightage [450 h] |
| S06A-PR-4930 | Inverter Structure - Fasteners-Receipt At Site-Lot-02 | 2026-09-14 → 2026-10-20 (+36d) | 2026-09-19 → 2026-10-25 (+36d) |  |  | 107d → 89d |  | resources none → Procurement Resource [9 h]; Inverter Structure - Fasteners - Supply [4 NoS]; Weightage [450 h] |
| S06A-PR-4940 | Inverter Structure - Fasteners-Dispatch For Site-Lot-03 | 2026-09-16 → 2026-10-22 (+36d) | 2026-09-21 → 2026-10-27 (+36d) |  |  | 92d → 74d |  | resources none → Procurement Resource [9 h]; Weightage [450 h] |
| S06A-PR-4950 | Inverter Structure - Fasteners-Receipt At Site-Lot-03 | 2026-09-19 → 2026-10-25 (+36d) | 2026-09-24 → 2026-10-30 (+36d) |  |  | 102d → 84d |  | resources none → Procurement Resource [9 h]; Inverter Structure - Fasteners - Supply [4 NoS]; Weightage [450 h] |
| S06A-PR-4960 | Inverter Structure - Fasteners-Dispatch For Site-Lot-04 | 2026-09-21 → 2026-10-27 (+36d) | 2026-09-26 → 2026-11-01 (+36d) |  |  | 92d → 74d |  | resources none → Procurement Resource [9 h]; Weightage [450 h] |
| S06A-PR-4970 | Inverter Structure - Fasteners-Receipt At Site-Lot-04 | 2026-09-24 → 2026-10-30 (+36d) | 2026-09-29 → 2026-11-04 (+36d) |  |  | 103d → 86d |  | resources none → Procurement Resource [9 h]; Inverter Structure - Fasteners - Supply [4 NoS]; Weightage [450 h] |
| S06A-PR-4980 | Inverter Structure - Fasteners-Dispatch For Site-Lot-05 | 2026-10-03 → 2026-11-07 (+35d) | 2026-10-08 → 2026-11-12 (+35d) |  |  | 86d → 68d |  | resources none → Procurement Resource [9 h]; Weightage [450 h] |
| S06A-PR-4990 | Inverter Structure - Fasteners-Receipt At Site-Lot-05 | 2026-10-06 → 2026-11-10 (+35d) | 2026-10-11 → 2026-11-15 (+35d) |  |  | 86d → 68d |  | resources none → Procurement Resource [9 h]; Inverter Structure - Fasteners - Supply [3 NoS]; Weightage [450 h] |
| 26 | **INVERTER STRUCTURE - CANOPY** |  | 2026-10-11 → 2026-11-15 (+35d) |  |  |  |  |  |
| S06A-PR-5000 | Inverter Structure - Canopy-BOQ & Tech Specs Release |  |  |  |  |  |  | resources none → Procurement Resource [9 h]; Weightage [3750 h] |
| S06A-PR-5010 | Inverter Structure - Canopy-TBER |  |  |  |  |  |  | resources none → Procurement Resource [9 h]; Weightage [7500 h] |
| S06A-PR-5020 | Inverter Structure - Canopy-Purchase Requisition |  |  |  |  |  |  | resources none → Procurement Resource [9 h]; Weightage [2250 h] |
| S06A-PR-5030 | Inverter Structure - Canopy-Note For Approval |  |  |  |  |  |  | resources none → Procurement Resource [9 h]; Weightage [1500 h] |
| S06A-PR-5040 | Inverter Structure - Canopy-LOI / PO Release |  |  |  |  |  |  | resources none → Procurement Resource [9 h]; Weightage [7500 h] |
| S06A-PR-5050 | Inverter Structure - Canopy-Manufacturing Clearance & Manufacturing | 2026-08-23 → 2026-09-27 (+35d) | 2026-10-01 → 2026-11-06 (+36d) |  |  | 92d → 74d |  | resources none → Procurement Resource [45 h]; Weightage [30000 h] |
| S06A-PR-5060 | Inverter Structure - Canopy-Dispatch For Site-Lot-01 | 2026-09-06 → 2026-10-12 (+36d) | 2026-09-11 → 2026-10-17 (+36d) |  |  | 98d → 80d |  | resources none → Procurement Resource [9 h]; Weightage [2250 h] |
| S06A-PR-5070 | Inverter Structure - Canopy-Receipt At Site-Lot-01 | 2026-09-09 → 2026-10-15 (+36d) | 2026-09-14 → 2026-10-20 (+36d) |  |  | 118d → 100d |  | resources none → Procurement Resource [9 h]; Inverter Structure - Canopy - Supply [4 NoS]; Weightage [2250 h] |
| S06A-PR-5080 | Inverter Structure - Canopy-Dispatch For Site-Lot-02 | 2026-09-11 → 2026-10-17 (+36d) | 2026-09-16 → 2026-10-22 (+36d) |  |  | 98d → 80d |  | resources none → Procurement Resource [9 h]; Weightage [2250 h] |
| S06A-PR-5090 | Inverter Structure - Canopy-Receipt At Site-Lot-02 | 2026-09-14 → 2026-10-20 (+36d) | 2026-09-19 → 2026-10-25 (+36d) |  |  | 113d → 95d |  | resources none → Procurement Resource [9 h]; Inverter Structure - Canopy - Supply [4 NoS]; Weightage [2250 h] |
| S06A-PR-5100 | Inverter Structure - Canopy-Dispatch For Site-Lot-03 | 2026-09-16 → 2026-10-22 (+36d) | 2026-09-21 → 2026-10-27 (+36d) |  |  | 98d → 80d |  | resources none → Procurement Resource [9 h]; Weightage [2250 h] |
| S06A-PR-5110 | Inverter Structure - Canopy-Receipt At Site-Lot-03 | 2026-09-19 → 2026-10-25 (+36d) | 2026-09-24 → 2026-10-30 (+36d) |  |  | 108d → 90d |  | resources none → Procurement Resource [9 h]; Inverter Structure - Canopy - Supply [4 NoS]; Weightage [2250 h] |
| S06A-PR-5120 | Inverter Structure - Canopy-Dispatch For Site-Lot-04 | 2026-09-21 → 2026-10-27 (+36d) | 2026-09-26 → 2026-11-01 (+36d) |  |  | 98d → 80d |  | resources none → Procurement Resource [9 h]; Weightage [2250 h] |
| S06A-PR-5130 | Inverter Structure - Canopy-Receipt At Site-Lot-04 | 2026-09-24 → 2026-10-30 (+36d) | 2026-09-29 → 2026-11-04 (+36d) |  |  | 103d → 86d |  | resources none → Procurement Resource [9 h]; Inverter Structure - Canopy - Supply [4 NoS]; Weightage [2250 h] |
| S06A-PR-5140 | Inverter Structure - Canopy-Dispatch For Site-Lot-05 | 2026-10-03 → 2026-11-07 (+35d) | 2026-10-08 → 2026-11-12 (+35d) |  |  | 92d → 74d |  | resources none → Procurement Resource [9 h]; Weightage [2250 h] |
| S06A-PR-5150 | Inverter Structure - Canopy-Receipt At Site-Lot-05 | 2026-10-06 → 2026-11-10 (+35d) | 2026-10-11 → 2026-11-15 (+35d) |  |  | 92d → 74d |  | resources none → Procurement Resource [9 h]; Inverter Structure - Canopy - Supply [3 NoS]; Weightage [2250 h] |
| 27 | **INVERTER STRUCTURE - SELF TAPPING SCREW** |  | 2026-10-11 → 2026-11-15 (+35d) |  |  |  |  |  |
| S06A-PR-5160 | Inverter Structure - Self Tapping Screw-BOQ & Tech Specs Release |  |  |  |  |  |  | resources none → Procurement Resource [9 h]; Weightage [750 h] |

| ID | Task | Start | Finish | Duration | Complete | Total float | Predecessors | Other |
| --- | --- | --- | --- | --- | --- | --- | --- | --- |
| S06A-PR-5170 | Inverter Structure - Self Tapping Screw-TBER |  |  |  |  |  |  | resources none → Procurement Resource [9 h]; Weightage [1500 h] |
| S06A-PR-5180 | Inverter Structure - Self Tapping Screw-Purchase Requisition |  |  |  |  |  |  | resources none → Procurement Resource [9 h]; Weightage [450 h] |
| S06A-PR-5190 | Inverter Structure - Self Tapping Screw-Note For Approval |  |  |  |  |  |  | resources none → Procurement Resource [90 h]; Weightage [300 h] |
| S06A-PR-5200 | Inverter Structure - Self Tapping Screw-LOI / PO Release |  |  |  |  |  |  | resources none → Procurement Resource [9 h]; Weightage [1500 h] |
| S06A-PR-5210 | Inverter Structure - Self Tapping Screw-Manufacturing Clearance & Manufacturing | 2026-08-23 → 2026-09-27 (+35d) | 2026-10-01 → 2026-11-06 (+36d) |  |  | 92d → 74d |  | resources none → Procurement Resource [27 h]; Weightage [6000 h] |
| S06A-PR-5220 | Inverter Structure - Self Tapping Screw-Dispatch For Site-Lot-01 | 2026-09-06 → 2026-10-12 (+36d) | 2026-09-11 → 2026-10-17 (+36d) |  |  | 98d → 80d |  | resources none → Procurement Resource [9 h]; Weightage [450 h] |
| S06A-PR-5230 | Inverter Structure - Self Tapping Screw-Receipt At Site-Lot-01 | 2026-09-09 → 2026-10-15 (+36d) | 2026-09-14 → 2026-10-20 (+36d) |  |  | 118d → 100d |  | resources none → Procurement Resource [9 h]; Inverter Structure - Self Tapping Screw - Supply [4 NoS]; Weightage [450 h] |
| S06A-PR-5240 | Inverter Structure - Self Tapping Screw-Dispatch For Site-Lot-02 | 2026-09-11 → 2026-10-17 (+36d) | 2026-09-16 → 2026-10-22 (+36d) |  |  | 98d → 80d |  | resources none → Procurement Resource [9 h]; Weightage [450 h] |
| S06A-PR-5250 | Inverter Structure - Self Tapping Screw-Receipt At Site-Lot-02 | 2026-09-14 → 2026-10-20 (+36d) | 2026-09-19 → 2026-10-25 (+36d) |  |  | 113d → 95d |  | resources none → Procurement Resource [9 h]; Inverter Structure - Self Tapping Screw - Supply [4 NoS]; Weightage [450 h] |
| S06A-PR-5260 | Inverter Structure - Self Tapping Screw-Dispatch For Site-Lot-03 | 2026-09-16 → 2026-10-22 (+36d) | 2026-09-21 → 2026-10-27 (+36d) |  |  | 98d → 80d |  | resources none → Procurement Resource [9 h]; Weightage [450 h] |
| S06A-PR-5270 | Inverter Structure - Self Tapping Screw-Receipt At Site-Lot-03 | 2026-09-19 → 2026-10-25 (+36d) | 2026-09-24 → 2026-10-30 (+36d) |  |  | 108d → 90d |  | resources none → Procurement Resource [9 h]; Inverter Structure - Self Tapping Screw - Supply [4 NoS]; Weightage [450 h] |
| S06A-PR-5280 | Inverter Structure - Self Tapping Screw-Dispatch For Site-Lot-04 | 2026-09-21 → 2026-10-27 (+36d) | 2026-09-26 → 2026-11-01 (+36d) |  |  | 98d → 80d |  | resources none → Procurement Resource [9 h]; Weightage [450 h] |
| S06A-PR-5290 | Inverter Structure - Self Tapping Screw-Receipt At Site-Lot-04 | 2026-09-24 → 2026-10-30 (+36d) | 2026-09-29 → 2026-11-04 (+36d) |  |  | 103d → 86d |  | resources none → Procurement Resource [9 h]; Inverter Structure - Self Tapping Screw - Supply [4 NoS]; Weightage [450 h] |
| S06A-PR-5300 | Inverter Structure - Self Tapping Screw-Dispatch For Site-Lot-05 | 2026-10-03 → 2026-11-07 (+35d) | 2026-10-08 → 2026-11-12 (+35d) |  |  | 92d → 74d |  | resources none → Procurement Resource [9 h]; Weightage [450 h] |
| S06A-PR-5310 | Inverter Structure - Self Tapping Screw-Receipt At Site-Lot-05 | 2026-10-06 → 2026-11-10 (+35d) | 2026-10-11 → 2026-11-15 (+35d) |  |  | 92d → 74d |  | resources none → Procurement Resource [9 h]; Inverter Structure - Self Tapping Screw - Supply [3 NoS]; Weightage [450 h] |
| 28 | **ROBOTIC CLEANING SYSTEM - ROBOTS (INCL DOCKING & RETURN STATION) (IMPORTED FROM CHINA)** | 2026-09-16 → 2026-09-27 (+11d) | 2026-12-19 → 2026-11-17 (-32d) |  |  |  |  |  |
| S06A-PR-5320 | Robotic Cleaning System - Robots (Incl Docking & Return Station)-BOQ & Tech Specs Release | 2026-09-16 → 2026-09-27 (+11d) | 2026-09-22 → 2026-10-04 (+12d) |  |  | 22d → 71d |  | resources none → Procurement Resource [97 h]; Weightage [10500 h] |
| S06A-PR-5330 | Robotic Cleaning System - Robots (Incl Docking & Return Station)-TBER | 2026-09-18 → 2026-10-03 (+15d) | 2026-09-29 → 2026-10-04 (+5d) | 12d → 2d |  | 22d → 71d |  | resources none → Procurement Resource [77 h]; Weightage [21000 h] |
| S06A-PR-5340 | Robotic Cleaning System - Robots (Incl Docking & Return Station)-Purchase Requistion | 2026-09-30 → 2026-10-05 (+5d) | 2026-10-05 → 2026-10-06 (+1d) | 5d → 2d |  | 22d → 71d |  | resources none → Procurement Resource [77 h]; Weightage [6300 h] |
| S06A-PR-5350 | Robotic Cleaning System - Robots (Incl Docking & Return Station)-Note For Approval | 2026-10-06 → 2026-10-07 (+1d) | 2026-10-10 → 2026-10-08 (-2d) | 5d → 2d |  | 22d → 71d |  | resources none → Procurement Resource [38 h]; Weightage [4200 h] |
| S06A-PR-5360 | Robotic Cleaning System - Robots (Incl Docking & Return Station)-LOI / PO Release | 2026-10-11 → 2026-10-09 (-2d) | 2026-10-15 → 2026-10-10 (-5d) | 5d → 2d |  | 22d → 71d |  | resources none → Procurement Resource [97 h]; Weightage [21000 h] |
| S06A-PR-5370 | Robotic Cleaning System - Robots (Incl Docking & Return Station)-Manufacturing Clearance & Manufacturing | 2026-10-26 → 2026-10-16 (-10d) | 2026-11-19 → 2026-11-04 (-15d) | 25d → 20d |  | 22d → 71d | S06A-PR-5360 FS+10d → S06A-PR-5360 FS+5d | resources none → Procurement Resource [909 h]; Weightage [84000 h] |
| S06A-PR-5380 | Robotic Cleaning System - Robots (Incl Docking & Return Station)-Dispatch From China-Lot-01 | 2026-11-05 → 2026-10-21 (-15d) | 2026-11-06 → 2026-10-22 (-15d) |  |  | 25d → 74d | S06A-PR-5370 SS+10d → S06A-PR-5370 SS+5d | resources none → Procurement Resource [144 h]; Weightage [4200 h] |
| S06A-PR-5390 | Robotic Cleaning System - Robots (Incl Docking & Return Station)-Transportation & Custom Clearance-Lot-01 | 2026-11-07 → 2026-10-23 (-15d) | 2026-11-26 → 2026-11-01 (-25d) | 20d → 10d |  | 39d → 81d |  | resources none → Procurement Resource [300 h]; Weightage [4200 h] |
| S06A-PR-5410 | Robotic Cleaning System - Robots (Incl Docking & Return Station)-Dispatch From China-Lot-02 | 2026-11-08 → 2026-10-24 (-15d) | 2026-11-09 → 2026-10-25 (-15d) |  |  | 25d → 74d |  | resources none → Procurement Resource [144 h]; Weightage [4200 h] |
| S06A-PR-5420 | Robotic Cleaning System - Robots (Incl Docking & Return Station)-Transportation & Custom Clearance-Lot-02 | 2026-11-10 → 2026-10-26 (-15d) | 2026-11-29 → 2026-11-04 (-25d) | 20d → 10d |  | 36d → 80d |  | resources none → Procurement Resource [300 h]; Weightage [4200 h] |
| S06A-PR-5440 | Robotic Cleaning System - Robots (Incl Docking & Return Station)-Dispatch From China-Lot-03 | 2026-11-11 → 2026-10-27 (-15d) | 2026-11-12 → 2026-10-28 (-15d) |  |  | 25d → 74d |  | resources none → Procurement Resource [144 h]; Weightage [4200 h] |
| S06A-PR-5450 | Robotic Cleaning System - Robots (Incl Docking & Return Station)-Transportation & Custom Clearance-Lot-03 | 2026-11-13 → 2026-10-29 (-15d) | 2026-12-02 → 2026-11-07 (-25d) | 20d → 10d |  | 32d → 76d |  | resources none → Procurement Resource [300 h]; Weightage [4200 h] |
| S06A-PR-5470 | Robotic Cleaning System - Robots (Incl Docking & Return Station)-Dispatch From China-Lot-04 | 2026-11-14 → 2026-10-30 (-15d) | 2026-11-15 → 2026-10-31 (-15d) |  |  | 25d → 74d |  | resources none → Procurement Resource [144 h]; Weightage [4200 h] |
| S06A-PR-5480 | Robotic Cleaning System - Robots (Incl Docking & Return Station)-Transportation & Custom Clearance-Lot-04 | 2026-11-16 → 2026-11-01 (-15d) | 2026-12-05 → 2026-11-06 (-29d) | 20d → 6d |  | 26d → 79d |  | resources none → Procurement Resource [300 h]; Weightage [4200 h] |
| S06A-PR-5500 | Robotic Cleaning System - Robots (Incl Docking & Return Station)-Dispatch From China-Lot-05 | 2026-11-20 → 2026-11-05 (-15d) | 2026-11-21 → 2026-11-07 (-14d) | 2d → 3d |  | 22d → 71d |  | resources none → Procurement Resource [144 h]; Weightage [4200 h] |
| S06A-PR-5400 | Robotic Cleaning System - Robots (Incl Docking & Return Station)-Receipt At Site-Lot-01 | 2026-12-02 → 2026-11-07 (-25d) | 2026-12-05 → 2026-11-09 (-26d) | 4d → 3d |  | 39d → 81d |  | resources none → Procurement Resource [144 h]; Robots - Supply [160 NoS]; Weightage [4200 h] |
| S06A-PR-5430 | Robotic Cleaning System - Robots (Incl Docking & Return Station)-Receipt At Site-Lot-02 | 2026-12-05 → 2026-11-08 (-27d) | 2026-12-08 → 2026-11-10 (-28d) | 4d → 3d |  | 36d → 80d | S06A-PR-5420 FS+5d → S06A-PR-5420 FS+3d | resources none → Procurement Resource [144 h]; Robots - Supply [160 NoS]; Weightage [4200 h] |
| S06A-PR-5490 | Robotic Cleaning System - Robots (Incl Docking & Return Station)-Receipt At Site-Lot-04 | 2026-12-13 → 2026-11-08 (-35d) | 2026-12-16 → 2026-11-10 (-36d) | 4d → 3d |  | 26d → 79d | S06A-PR-5480 FS+7d → S06A-PR-5480 FS+1d | resources none → Procurement Resource [144 h]; Robots - Supply [160 NoS]; Weightage [4200 h] |
| S06A-PR-5510 | Robotic Cleaning System - Robots (Incl Docking & Return Station)-Transportation & Custom Clearance-Lot-05 | 2026-11-22 → 2026-11-08 (-14d) | 2026-12-09 → 2026-11-13 (-26d) | 18d → 6d |  | 22d → 71d |  | resources none → Procurement Resource [300 h]; Weightage [4200 h] |
| S06A-PR-5460 | Robotic Cleaning System - Robots (Incl Docking & Return Station)-Receipt At Site-Lot-03 | 2026-12-08 → 2026-11-11 (-27d) | 2026-12-11 → 2026-11-13 (-28d) | 4d → 3d |  | 32d → 76d | S06A-PR-5450 FS+5d → S06A-PR-5450 FS+3d | resources none → Procurement Resource [144 h]; Robots - Supply [160 NoS]; Weightage [4200 h] |
| S06A-PR-5520 | Robotic Cleaning System - Robots (Incl Docking & Return Station)-Receipt At Site-Lot-05 | 2026-12-17 → 2026-11-15 (-32d) | 2026-12-19 → 2026-11-17 (-32d) |  |  | 22d → 71d | S06A-PR-5510 FS+7d → S06A-PR-5510 FS+1d | resources none → Procurement Resource [144 h]; Robots - Supply [120 NoS]; Weightage [4200 h] |
| 29 | **ROBOTIC CLEANING SYSTEM - ROBOTIC STRUCTURE (EXTENDED MMS STRUCTURE)** | 2026-08-23 → 2026-09-27 (+35d) | 2026-12-18 → 2026-12-06 (-12d) |  |  |  |  |  |
| S06A-PR-5530 | Robotic Cleaning System - Robotic Structure-BOQ & Tech Specs Release | 2026-08-23 → 2026-09-27 (+35d) | 2026-08-29 → 2026-10-04 (+36d) |  |  | 18d → 27d |  | resources none → Procurement Resource [46 h]; Weightage [5250 h] |
| S06A-PR-5540 | Robotic Cleaning System - Robotic Structure-TBER | 2026-08-28 → 2026-10-03 (+36d) | 2026-09-08 → 2026-10-07 (+29d) | 12d → 5d |  | 18d → 27d |  | resources none → Procurement Resource [36 h]; Weightage [10500 h] |
| S06A-PR-5550 | Robotic Cleaning System - Robotic Structure-Purchase Requisition | 2026-09-09 → 2026-10-08 (+29d) | 2026-09-13 → 2026-10-12 (+29d) |  |  | 18d → 27d |  | resources none → Procurement Resource [36 h]; Weightage [3150 h] |
| S06A-PR-5560 | Robotic Cleaning System - Robotic Structure-Note For Approval | 2026-09-13 → 2026-10-12 (+29d) | 2026-09-17 → 2026-10-16 (+29d) |  |  | 18d → 27d |  | resources none → Procurement Resource [180 h]; Weightage [2100 h] |
| S06A-PR-5570 | Robotic Cleaning System - Robotic Structure-LOI / PO Release | 2026-09-18 → 2026-10-17 (+29d) | 2026-09-22 → 2026-10-21 (+29d) |  |  | 18d → 27d |  | resources none → Procurement Resource [45 h]; Weightage [10500 h] |
| S06A-PR-5580 | Robotic Cleaning System - Robotic Structure-Manufacturing Clearance & Manufacturing | 2026-11-23 → 2026-11-11 (-12d) | 2026-12-12 → 2026-11-30 (-12d) |  |  | 18d → 47d | S06A-PR-5570 FS+60d → S06A-PR-5570 FS+20d | resources none → Procurement Resource [1701 h]; Weightage [42000 h] |
| S06A-PR-5590 | Robotic Cleaning System - Robotic Structure-Dispatch For Site-Lot-01 | 2026-11-28 → 2026-11-16 (-12d) | 2026-12-03 → 2026-11-21 (-12d) |  |  | 18d → 47d |  | resources none → Procurement Resource [144 h]; Weightage [3150 h] |
| S06A-PR-5600 | Robotic Cleaning System - Robotic Structure-Receipt At Site-Lot-01 | 2026-12-01 → 2026-11-19 (-12d) | 2026-12-06 → 2026-11-24 (-12d) |  |  | 40d → 69d |  | resources none → Procurement Resource [144 h]; Robot Structure - Bridges - Supply [600 NoS]; Robot Structure - Reverse - Supply [160 NoS]; Robot Structure - Docking-Supply [160 NoS]; Weightage [3150 h] |
| S06A-PR-5610 | Robotic Cleaning System - Robotic Structure-Dispatch For Site-Lot-02 | 2026-12-03 → 2026-11-21 (-12d) | 2026-12-08 → 2026-11-26 (-12d) |  |  | 18d → 47d |  | resources none → Procurement Resource [144 h]; Weightage [3150 h] |
| S06A-PR-5620 | Robotic Cleaning System - Robotic Structure-Receipt At Site-Lot-02 | 2026-12-06 → 2026-11-24 (-12d) | 2026-12-11 → 2026-11-29 (-12d) |  |  | 31d → 60d |  | resources none → Procurement Resource [144 h]; Robot Structure - Bridges - Supply [600 NoS]; Robot Structure - Reverse - Supply [160 NoS]; Robot Structure - Docking-Supply [160 NoS]; Weightage [3150 h] |
| S06A-PR-5630 | Robotic Cleaning System - Robotic Structure-Dispatch For Site-Lot-03 | 2026-12-08 → 2026-11-26 (-12d) | 2026-12-11 → 2026-11-29 (-12d) |  |  | 18d → 47d |  | resources none → Procurement Resource [144 h]; Weightage [3150 h] |
| S06A-PR-5640 | Robotic Cleaning System - Robotic Structure-Receipt At Site-Lot-03 | 2026-12-11 → 2026-11-29 (-12d) | 2026-12-14 → 2026-12-02 (-12d) |  |  | 25d → 54d |  | resources none → Procurement Resource [144 h]; Robot Structure - Bridges - Supply [600 NoS]; Robot Structure - Reverse - Supply [160 NoS]; Robot Structure - Docking-Supply [160 NoS]; Weightage [3150 h] |
| S06A-PR-5650 | Robotic Cleaning System - Robotic Structure-Dispatch For Site-Lot-04 | 2026-12-13 → 2026-12-01 (-12d) | 2026-12-14 → 2026-12-02 (-12d) |  |  | 18d → 47d |  | resources none → Procurement Resource [144 h]; Weightage [3150 h] |
| S06A-PR-5670 | Robotic Cleaning System - Robotic Structure-Dispatch For Site-Lot-05 | 2026-12-15 → 2026-12-03 (-12d) | 2026-12-16 → 2026-12-04 (-12d) |  |  | 18d → 47d |  | resources none → Procurement Resource [144 h]; Weightage [3150 h] |
| S06A-PR-5660 | Robotic Cleaning System - Robotic Structure-Receipt At Site-Lot-04 | 2026-12-16 → 2026-12-04 (-12d) | 2026-12-17 → 2026-12-05 (-12d) |  |  | 19d → 49d |  | resources none → Procurement Resource [144 h]; Robot Structure - Bridges - Supply [600 NoS]; Robot Structure - Reverse - Supply [160 NoS]; Robot Structure - Docking-Supply [160 NoS]; Weightage [3150 h] |
| S06A-PR-5680 | Robotic Cleaning System - Robotic Structure-Receipt At Site-Lot-05 | 2026-12-17 → 2026-12-05 (-12d) | 2026-12-18 → 2026-12-06 (-12d) |  |  | 18d → 47d |  | resources none → Procurement Resource [144 h]; Robot Structure - Bridges - Supply [450 NoS]; Robot Structure - Reverse - Supply [120 NoS]; Robot Structure - Docking-Supply [120 NoS]; Weightage [3150 h] |
| 30 | **DC CABLE** |  | 2026-11-30 → 2026-11-03 (-27d) |  |  |  |  |  |
| S06A-PR-5690 | DC Cable-BOQ & Tech Specs Release |  |  |  |  |  |  | resources none → Procurement Resource [612 h]; Weightage [3000 h] |
| S06A-PR-5700 | DC Cable-TBER |  |  |  |  |  |  | resources none → Procurement Resource [486 h]; Weightage [6000 h] |
| S06A-PR-5710 | DC Cable-Purchase Requisition |  |  |  |  |  |  | resources none → Procurement Resource [486 h]; Weightage [1800 h] |
| S06A-PR-5720 | DC Cable-Note For Approval |  |  |  |  |  |  | resources none → Procurement Resource [243 h]; Weightage [1200 h] |
| S06A-PR-5730 | DC Cable-LOI / PO Release |  |  |  |  |  |  | resources none → Procurement Resource [612 h]; Weightage [6000 h] |
| S06A-PR-5740 | DC Cable-Manufacturing Clearance & Manufacturing | 2026-10-13 → 2026-09-15 A (-28d) | 2026-11-21 → 2026-10-26 (-26d) | 40d → 29d | 0% → 50% | 37d → 80d | S06A-PR-5730 FS+233d → S06A-PR-5730 FS+213d | resources none → Procurement Resource [2268 h]; Weightage [24000 h] |
| S06A-PR-5750 | DC Cable-Dispatch For Site-Lot-01 | 2026-10-27 → 2026-09-27 (-30d) | 2026-11-01 → 2026-10-03 (-29d) |  |  | 43d → 89d | S06A-PR-5740 SS+14d → S06A-PR-5740 SS+10d | resources none → Procurement Resource [567 h]; Weightage [1800 h] |
| S06A-PR-5760 | DC Cable-Receipt At Site-Lot-01 | 2026-10-30 → 2026-09-30 (-30d) | 2026-11-04 → 2026-10-06 (-29d) |  |  | 63d → 109d |  |  |
| S06A-PR-5770 | DC Cable-Dispatch For Site-Lot-02 | 2026-11-01 → 2026-10-03 (-29d) | 2026-11-06 → 2026-10-08 (-29d) |  |  | 43d → 89d |  | resources none → Procurement Resource [567 h]; Weightage [1800 h] |
| S06A-PR-5780 | DC Cable-Receipt At Site-Lot-02 | 2026-11-04 → 2026-10-06 (-29d) | 2026-11-09 → 2026-10-11 (-29d) |  |  | 58d → 104d |  | resources none → Procurement Resource [567 h]; DC Cable - Supply [397.33 KM]; Weightage [1800 h] |
| S06A-PR-5790 | DC Cable-Dispatch For Site-Lot-03 | 2026-11-06 → 2026-10-08 (-29d) | 2026-11-11 → 2026-10-13 (-29d) |  |  | 43d → 89d |  | resources none → Procurement Resource [567 h]; Weightage [1800 h] |
| S06A-PR-5800 | DC Cable-Receipt At Site-Lot-03 | 2026-11-09 → 2026-10-11 (-29d) | 2026-11-14 → 2026-10-16 (-29d) |  |  | 53d → 99d |  | resources none → Procurement Resource [567 h]; DC Cable - Supply [397.33 KM]; Weightage [1800 h] |
| S06A-PR-5810 | DC Cable-Dispatch For Site-Lot-04 | 2026-11-11 → 2026-10-13 (-29d) | 2026-11-16 → 2026-10-18 (-29d) |  |  | 43d → 89d |  | resources none → Procurement Resource [567 h]; Weightage [1800 h] |
| S06A-PR-5820 | DC Cable-Receipt At Site-Lot-04 | 2026-11-14 → 2026-10-16 (-29d) | 2026-11-19 → 2026-10-21 (-29d) |  |  | 48d → 95d |  | resources none → Procurement Resource [567 h]; DC Cable - Supply [397.33 KM]; Weightage [1800 h] |
| S06A-PR-5830 | DC Cable-Dispatch For Site-Lot-05 | 2026-11-22 → 2026-10-27 (-26d) | 2026-11-27 → 2026-10-31 (-27d) | 6d → 5d |  | 37d → 80d |  | resources none → Procurement Resource [567 h]; Weightage [1800 h] |

| ID | Task | Start | Finish | Duration | Complete | Total float | Predecessors | Other |
| --- | --- | --- | --- | --- | --- | --- | --- | --- |
| S06A-PR-5840 | DC Cable-Receipt At Site-Lot-05 | 2026-11-25 → 2026-10-30 (-26d) | 2026-11-30 → 2026-11-03 (-27d) | 6d → 5d |  | 37d → 80d |  | resources none → Procurement Resource [567 h]; DC Cable - Supply [298.67 KM]; Weightage [1800 h] |
| 31 | **MC4 CONNECTOR** |  | 2026-10-11 → 2026-11-20 (+40d) |  |  |  |  |  |
| S06A-PR-5860 | Mc4 Connector-TBER |  |  |  |  |  |  | resources none → Procurement Resource [9 h]; Weightage [3000 h] |
| S06A-PR-5870 | Mc4 Connector-Purchase Requisition |  |  |  |  |  |  | resources none → Procurement Resource [9 h]; Weightage [900 h] |
| S06A-PR-5900 | Mc4 Connector-Manufacturing Clearance & Manufacturing |  | 2026-10-01 → 2026-11-11 (+41d) |  | 0% → 50% | 94d → 71d |  |  |
| S06A-PR-5910 | Mc4 Connector-Dispatch For Site-Lot-01 | 2026-08-23 → 2026-09-27 (+35d) | 2026-08-28 → 2026-10-03 (+36d) |  |  | 114d → 96d |  | resources none → Procurement Resource [9 h]; Weightage [900 h] |
| S06A-PR-5920 | Mc4 Connector-Receipt At Site-Lot-01 | 2026-08-26 → 2026-09-30 (+35d) | 2026-08-31 → 2026-10-06 (+36d) |  |  | 134d → 116d |  | resources none → Procurement Resource [9 h]; MC4 Connector - Supply [8000 NoS]; Weightage [900 h] |
| S06A-PR-5930 | Mc4 Connector-Dispatch For Site-Lot-02 | 2026-08-28 → 2026-10-03 (+36d) | 2026-09-02 → 2026-10-08 (+36d) |  |  | 114d → 96d |  | resources none → Procurement Resource [9 h]; Weightage [900 h] |
| S06A-PR-5940 | Mc4 Connector-Receipt For Site-Lot-02 | 2026-08-31 → 2026-10-06 (+36d) | 2026-09-05 → 2026-10-11 (+36d) |  |  | 129d → 111d |  | resources none → Procurement Resource [9 h]; MC4 Connector - Supply [8000 NoS]; Weightage [900 h] |
| S06A-PR-5950 | Mc4 Connector-Dispatch For Site-Lot-03 | 2026-09-02 → 2026-10-08 (+36d) | 2026-09-07 → 2026-10-13 (+36d) |  |  | 114d → 96d |  | resources none → Procurement Resource [9 h]; Weightage [900 h] |
| S06A-PR-5960 | Mc4 Connector-Receipt For Site-Lot-03 | 2026-09-05 → 2026-10-11 (+36d) | 2026-09-10 → 2026-10-16 (+36d) |  |  | 124d → 106d |  | resources none → Procurement Resource [9 h]; MC4 Connector - Supply [8000 NoS]; Weightage [900 h] |
| S06A-PR-5970 | Mc4 Connector-Dispatch For Site-Lot-04 | 2026-09-07 → 2026-10-13 (+36d) | 2026-09-12 → 2026-10-18 (+36d) |  |  | 114d → 96d |  | resources none → Procurement Resource [9 h]; Weightage [900 h] |
| S06A-PR-5980 | Mc4 Connector-Receipt For Site-Lot-04 | 2026-09-10 → 2026-10-16 (+36d) | 2026-09-15 → 2026-10-21 (+36d) |  |  | 119d → 102d |  | resources none → Procurement Resource [9 h]; MC4 Connector - Supply [8000 NoS]; Weightage [900 h] |
| S06A-PR-5990 | Mc4 Connector-Dispatch For Site-Lot-05 | 2026-10-03 → 2026-11-12 (+40d) | 2026-10-08 → 2026-11-17 (+40d) |  |  | 94d → 71d |  | resources none → Procurement Resource [9 h]; Weightage [900 h] |
| S06A-PR-6000 | Mc4 Connector-Receipt For Site-Lot-05 | 2026-10-06 → 2026-11-15 (+40d) | 2026-10-11 → 2026-11-20 (+40d) |  |  | 94d → 71d |  | resources none → Procurement Resource [9 h]; MC4 Connector - Supply [6000 NoS]; Weightage [900 h] |
| 32 | **MODULE (IMPORTED FROM CHINA)** |  | 2027-01-07 → 2027-01-05 (-2d) |  |  |  |  |  |
| S06A-PR-6010 | Module-BOQ & Tech Specs Release |  |  |  |  |  |  | resources none → Procurement Resource [194 h]; Weightage [15000 h] |
| S06A-PR-6020 | Module-TBER |  |  |  |  |  |  | resources none → Procurement Resource [155 h]; Weightage [30000 h] |
| S06A-PR-6030 | Module-Purchase Requisition | 2026-08-23 → 2026-09-27 (+35d) | 2026-08-27 → 2026-10-01 (+35d) |  |  | -17d → 0d |  | resources none → Procurement Resource [155 h]; Weightage [9000 h] |
| S06A-PR-6040 | Module-Note For Approval | 2026-08-27 → 2026-10-01 (+35d) | 2026-08-31 → 2026-10-06 (+36d) |  |  | -17d → 0d |  | resources none → Procurement Resource [77 h]; Weightage [6000 h] |
| S06A-PR-6050 | Module-LOI / PO Release | 2026-09-01 → 2026-10-07 (+36d) | 2026-09-05 → 2026-10-11 (+36d) |  |  | -17d → 0d |  | resources none → Procurement Resource [19 h]; Weightage [30000 h] |
| S06A-PR-6060 | Module-Manufacturing Clearance & Manufacturing | 2026-10-25 → 2026-10-17 (-8d) | 2026-12-18 → 2026-12-13 (-5d) | 55d → 58d |  | -17d → 0d | S06A-PR-6050 FS+48d → S06A-PR-6050 FS+5d | resources none → Procurement Resource [1814 h]; Weightage [120000 h] |
| S06A-PR-6070 | Module-Dispatch From China-Lot-01 | 2026-10-30 → 2026-10-22 (-8d) | 2026-10-31 → 2026-10-23 (-8d) |  |  | -15d → 0d |  | resources none → Procurement Resource [144 h]; Weightage [6000 h] |
| S06A-PR-6080 | Module-Transportation & Custom Clearance-Lot-01 | 2026-11-01 → 2026-10-24 (-8d) | 2026-11-15 → 2026-11-07 (-8d) |  |  | 26d → 51d |  | resources none → Procurement Resource [300 h]; Weightage [6000 h] |
| S06A-PR-6100 | Module-Dispatch From China-Lot-02 | 2026-11-04 → 2026-10-27 (-8d) | 2026-11-05 → 2026-10-28 (-8d) |  |  | -15d → 0d |  | resources none → Procurement Resource [144 h]; Weightage [6000 h] |
| S06A-PR-6130 | Module-Dispatch From China-Lot-03 | 2026-11-09 → 2026-11-01 (-8d) | 2026-11-10 → 2026-11-02 (-8d) |  |  | -15d → 0d |  | resources none → Procurement Resource [144 h]; Weightage [6000 h] |
| S06A-PR-6110 | Module-Transportation & Custom Clearance-Lot-02 | 2026-11-13 → 2026-11-05 (-8d) | 2026-11-27 → 2026-11-19 (-8d) |  |  | 17d → 42d |  | resources none → Procurement Resource [300 h]; Weightage [6000 h] |
| S06A-PR-6090 | Module-Receipt At Site-Lot-01 | 2026-11-18 → 2026-11-10 (-8d) | 2026-11-20 → 2026-11-12 (-8d) |  |  | 26d → 51d |  | resources none → Procurement Resource [144 h]; Module - Supply [69 MWdc]; Weightage [6000 h] |
| S06A-PR-6140 | Module-Transportation & Custom Clearance-Lot-03 | 2026-11-18 → 2026-11-10 (-8d) | 2026-12-01 → 2026-11-23 (-8d) |  |  | 12d → 37d |  | resources none → Procurement Resource [300 h]; Weightage [6000 h] |
| S06A-PR-6120 | Module-Receipt Site At-Lot-02 | 2026-11-29 → 2026-11-21 (-8d) | 2026-12-01 → 2026-11-23 (-8d) |  |  | 17d → 42d |  | resources none → Procurement Resource [144 h]; Module - Supply [69 MWdc]; Weightage [6000 h] |
| S06A-PR-6150 | Module-Receipt Site At-Lot-03 | 2026-12-03 → 2026-11-25 (-8d) | 2026-12-05 → 2026-11-27 (-8d) |  |  | 12d → 37d |  | resources none → Procurement Resource [144 h]; Module - Supply [69 MWdc]; Weightage [6000 h] |
| S06A-PR-6160 | Module-Dispatch From China-Lot-04 | 2026-12-06 → 2026-12-01 (-5d) | 2026-12-07 → 2026-12-02 (-5d) |  |  | -15d → 0d | S06A-PR-6130 SS+27d → S06A-PR-6130 SS+30d | resources none → Procurement Resource [144 h]; Weightage [6000 h] |
| S06A-PR-6170 | Module-Transportation & Custom Clearance-Lot-04 | 2026-12-08 → 2026-12-03 (-5d) | 2026-12-22 → 2026-12-17 (-5d) |  |  | -15d → 0d |  | resources none → Procurement Resource [300 h]; Weightage [6000 h] |
| S06A-PR-6190 | Module-Dispatch From China-Lot-05 | 2026-12-19 → 2026-12-14 (-5d) | 2026-12-20 → 2026-12-15 (-5d) |  |  | -17d → 0d |  | resources none → Procurement Resource [144 h]; Weightage [6000 h] |
| S06A-PR-6200 | Module-Transportation & Custom Clearance-Lot-05 | 2026-12-21 → 2026-12-16 (-5d) | 2027-01-04 → 2027-01-02 (-2d) | 15d → 18d |  | -17d → 0d |  | resources none → Procurement Resource [300 h]; Weightage [6000 h] |
| S06A-PR-6180 | Module-Receipt Site At-Lot-04 | 2026-12-30 → 2026-12-25 (-5d) | 2027-01-01 → 2026-12-27 (-5d) |  |  | -15d → 0d |  | resources none → Procurement Resource [144 h]; Module - Supply [69 MWdc]; Weightage [6000 h] |
| S06A-PR-6210 | Module-Receipt Site At-Lot-05 | 2027-01-06 → 2027-01-04 (-2d) | 2027-01-07 → 2027-01-05 (-2d) |  |  | -17d → 0d |  | resources none → Procurement Resource [144 h]; Module - Supply [52 MWdc]; Weightage [6000 h] |
| 33 | **SCADA** |  | 2026-11-20 → 2026-10-25 (-26d) |  |  |  |  |  |
| S06A-PR-6220 | SCADA-BOQ & Tech Specs Release |  |  |  |  |  |  | resources none → Procurement Resource [72 h]; Weightage [1500 h] |
| S06A-PR-6230 | SCADA-TBER |  |  |  |  |  |  | resources none → Procurement Resource [54 h]; Weightage [3000 h] |
| S06A-PR-6240 | SCADA-Purchase Requisition |  |  |  |  |  |  | resources none → Procurement Resource [54 h]; Weightage [900 h] |
| S06A-PR-6250 | SCADA-Note For Approval |  |  |  |  |  |  | resources none → Procurement Resource [27 h]; Weightage [600 h] |
| S06A-PR-6260 | SCADA-LOI / PO Release |  |  |  |  |  |  | resources none → Procurement Resource [72 h]; Weightage [3000 h] |
| S06A-PR-6270 | SCADA-Manufacturing Clearance & Manufacturing | 2026-10-08 → 2026-09-01 A (-37d) | 2026-11-11 → 2026-09-27 (-45d) |  | 0% → 50% | 49d → 92d | S06A-PR-6260 FS+230d → S06A-PR-6260 FS+210d | resources none → Procurement Resource [270 h]; Weightage [12000 h] |
| S06A-PR-6280 | SCADA-Dispatch For Site-Lot-01 | 2026-10-22 → 2026-09-27 (-25d) | 2026-10-27 → 2026-10-03 (-24d) |  |  | 50d → 92d |  | resources none → Procurement Resource [72 h]; Weightage [900 h] |
| S06A-PR-6290 | SCADA-Receipt At Site-Lot-01 | 2026-10-25 → 2026-09-30 (-25d) | 2026-10-30 → 2026-10-06 (-24d) |  |  | 67d → 108d |  | resources none → Procurement Resource [72 h]; SCADA - Supply [4 NoS]; Weightage [900 h] |
| S06A-PR-6300 | SCADA-Dispatch For Site-Lot-02 | 2026-10-27 → 2026-10-03 (-24d) | 2026-11-01 → 2026-10-08 (-24d) |  |  | 50d → 92d |  | resources none → Procurement Resource [72 h]; Weightage [900 h] |
| S06A-PR-6310 | SCADA-Receipt At Site-Lot-02 | 2026-10-30 → 2026-10-06 (-24d) | 2026-11-04 → 2026-10-11 (-24d) |  |  | 61d → 102d |  | resources none → Procurement Resource [72 h]; SCADA - Supply [4 NoS]; Weightage [900 h] |
| S06A-PR-6320 | SCADA-Dispatch For Site-Lot-03 | 2026-11-01 → 2026-10-08 (-24d) | 2026-11-06 → 2026-10-13 (-24d) |  |  | 50d → 92d |  | resources none → Procurement Resource [72 h]; Weightage [900 h] |
| S06A-PR-6330 | SCADA-Receipt At Site-Lot-03 | 2026-11-04 → 2026-10-11 (-24d) | 2026-11-09 → 2026-10-16 (-24d) |  |  | 56d → 97d |  | resources none → Procurement Resource [72 h]; SCADA - Supply [4 NoS]; Weightage [900 h] |
| S06A-PR-6340 | SCADA-Dispatch For Site-Lot-04 | 2026-11-06 → 2026-10-13 (-24d) | 2026-11-11 → 2026-10-18 (-24d) |  |  | 50d → 92d |  | resources none → Procurement Resource [72 h]; Weightage [900 h] |
| S06A-PR-6350 | SCADA-Receipt At Site-Lot-04 | 2026-11-09 → 2026-10-16 (-24d) | 2026-11-14 → 2026-10-21 (-24d) |  |  | 51d → 93d |  | resources none → Procurement Resource [72 h]; SCADA - Supply [4 NoS]; Weightage [900 h] |
| S06A-PR-6360 | SCADA-Dispatch For Site-Lot-05 | 2026-11-12 → 2026-10-18 (-25d) | 2026-11-17 → 2026-10-22 (-26d) | 6d → 5d |  | 49d → 92d |  | resources none → Procurement Resource [72 h]; Weightage [900 h] |
| S06A-PR-6370 | SCADA-Receipt At Site-Lot-05 | 2026-11-15 → 2026-10-21 (-25d) | 2026-11-20 → 2026-10-25 (-26d) | 6d → 5d |  | 49d → 92d |  | resources none → Procurement Resource [72 h]; SCADA - Supply [3 NoS]; Weightage [900 h] |
| 34 | **IDT FENCING & GATE** |  | 2026-12-16 → 2026-11-15 (-31d) |  |  |  |  |  |
| S06A-PR-6380 | IDT Fencing & Gate-BOQ & Tech Specs Release |  |  |  |  |  |  | resources none → Procurement Resource [9 h]; Weightage [1500 h] |
| S06A-PR-6390 | IDT Fencing & Gate-TBER |  |  |  |  |  |  | resources none → Procurement Resource [9 h]; Weightage [3000 h] |
| S06A-PR-6400 | IDT Fencing & Gate-Purchase Requistion |  |  |  |  |  |  | resources none → Procurement Resource [9 h]; Weightage [900 h] |
| S06A-PR-6410 | IDT Fencing & Gate-Note For Approval |  |  |  |  |  |  | resources none → Procurement Resource [90 h]; Weightage [600 h] |
| S06A-PR-6420 | IDT Fencing & Gate-LOI / PO Release |  |  |  |  |  |  | resources none → Procurement Resource [9 h]; Weightage [3000 h] |
| S06A-PR-6430 | IDT Fencing & Gate-Manufacturing Clearance & Manufacturing | 2026-10-29 → 2026-09-02 A (-57d) | 2026-12-07 → 2026-11-06 (-31d) |  | 0% → 25% | 35d → 83d |  | resources none → Procurement Resource [270 h]; Weightage [12000 h] |
| S06A-PR-6440 | IDT Fencing & Gate-Dispatch For Site-Lot-01 | 2026-11-12 → 2026-09-27 (-46d) | 2026-11-17 → 2026-10-03 (-45d) |  |  | 41d → 103d |  | resources none → Procurement Resource [72 h]; Weightage [900 h] |
| S06A-PR-6450 | IDT Fencing & Gate-Receipt At Site-Lot-01 | 2026-11-15 → 2026-09-30 (-46d) | 2026-11-20 → 2026-10-06 (-45d) |  |  | 58d → 120d |  | resources none → Procurement Resource [72 h]; IDT - Gate - Supply [4 NoS]; IDT - Fencing - Supply [4 NoS]; Weightage [900 h] |
| S06A-PR-6460 | IDT Fencing & Gate-Dispatch For Site-Lot-02 | 2026-11-17 → 2026-10-03 (-45d) | 2026-11-22 → 2026-10-08 (-45d) |  |  | 41d → 103d |  | resources none → Procurement Resource [72 h]; Weightage [900 h] |
| S06A-PR-6470 | IDT Fencing & Gate-Receipt At Site-Lot-02 | 2026-11-20 → 2026-10-06 (-45d) | 2026-11-25 → 2026-10-11 (-45d) |  |  | 52d → 114d |  | resources none → Procurement Resource [72 h]; IDT - Gate - Supply [4 NoS]; IDT - Fencing - Supply [4 NoS]; Weightage [900 h] |
| S06A-PR-6480 | IDT Fencing & Gate-Dispatch For Site-Lot-03 | 2026-11-22 → 2026-10-08 (-45d) | 2026-11-27 → 2026-10-13 (-45d) |  |  | 41d → 103d |  | resources none → Procurement Resource [72 h]; Weightage [900 h] |
| S06A-PR-6490 | IDT Fencing & Gate-Receipt At Site-Lot-03 | 2026-11-25 → 2026-10-11 (-45d) | 2026-11-30 → 2026-10-16 (-45d) |  |  | 47d → 109d |  | resources none → Procurement Resource [72 h]; IDT - Gate - Supply [4 NoS]; IDT - Fencing - Supply [4 NoS]; Weightage [900 h] |
| S06A-PR-6500 | IDT Fencing & Gate-Dispatch For Site-Lot-04 | 2026-11-27 → 2026-10-13 (-45d) | 2026-12-02 → 2026-10-18 (-45d) |  |  | 41d → 103d |  | resources none → Procurement Resource [72 h]; Weightage [900 h] |
| S06A-PR-6510 | IDT Fencing & Gate-Receipt At Site-Lot-04 | 2026-11-30 → 2026-10-16 (-45d) | 2026-12-05 → 2026-10-21 (-45d) |  |  | 42d → 105d |  | resources none → Procurement Resource [72 h]; IDT - Gate - Supply [4 NoS]; IDT - Fencing - Supply [4 NoS]; Weightage [900 h] |
| S06A-PR-6520 | IDT Fencing & Gate-Dispatch For Site-Lot-05 | 2026-12-08 → 2026-11-07 (-31d) | 2026-12-13 → 2026-11-12 (-31d) |  |  | 35d → 83d |  | resources none → Procurement Resource [72 h]; Weightage [900 h] |

| ID | Task | Start | Finish | Complete | Total float | Other |
| --- | --- | --- | --- | --- | --- | --- |
| S06A-PR-6530 | IDT Fencing & Gate-Receipt At Site-Lot-05 | 2026-12-11 → 2026-11-10 (-31d) | 2026-12-16 → 2026-11-15 (-31d) |  | 35d → 83d | resources none → Procurement Resource [72 h]; IDT - Gate - Supply [3 NoS]; IDT - Fencing - Supply [3 NoS]; Weightage [900 h] |
| 35 | **ELECTRICAL AC/DC WORKS** |  | 2027-01-06 → 2026-11-15 (-52d) |  |  |  |
| S06A-PR-6540 | Electrical AC/DC Works-BOQ & Tech Specs Release |  |  |  |  | resources none → Procurement Resource [567 h]; Weightage [1500 h] |
| S06A-PR-6570 | Electrical AC/DC Works-Note For Approval |  |  |  |  | resources none → Procurement Resource [225 h]; Weightage [600 h] |
| S06A-PR-6550 | Electrical AC/DC Works-TBER |  |  |  |  | resources none → Procurement Resource [450 h]; Weightage [3000 h] |
| S06A-PR-6560 | Electrical AC/DC Works-Purchase Requisition |  |  |  |  | resources none → Procurement Resource [450 h]; Weightage [900 h] |
| S06A-PR-6580 | Electrical AC/DC Works-LOI / PO Release |  |  |  |  | resources none → Procurement Resource [567 h]; Weightage [3000 h] |
| S06A-PR-6590 | Electrical AC/DC Works-Manufacturing Clearance & Manufacturing | 2026-11-19 → 2026-09-10 A (-70d) | 2026-12-28 → 2026-11-06 (-52d) | 0% → 20% | 10d → 79d | resources none → Procurement Resource [500 h]; Weightage [12000 h] |
| S06A-PR-6600 | Electrical AC/DC Works-Dispatch For Site-Lot-01 | 2026-12-03 → 2026-09-27 (-67d) | 2026-12-08 → 2026-10-03 (-66d) |  | 15d → 95d | resources none → Procurement Resource [531 h]; Weightage [900 h] |
| S06A-PR-6610 | Electrical AC/DC Works-Receipt At Site-Lot-01 | 2026-12-05 → 2026-09-29 (-67d) | 2026-12-10 → 2026-10-05 (-66d) |  | 32d → 109d | resources none → Procurement Resource [120 h]; Electrical AC DC Material - Supply [4 Lot]; Weightage [900 h] |
| S06A-PR-6620 | Electrical AC/DC Works-Dispatch For Site-Lot-02 | 2026-12-08 → 2026-10-03 (-66d) | 2026-12-13 → 2026-10-08 (-66d) |  | 15d → 95d | resources none → Procurement Resource [120 h]; Weightage [900 h] |
| S06A-PR-6630 | Electrical AC/DC Works-Receipt At Site-Lot-02 | 2026-12-11 → 2026-10-06 (-66d) | 2026-12-16 → 2026-10-11 (-66d) |  | 27d → 100d | resources none → Procurement Resource [120 h]; Electrical AC DC Material - Supply [4 Lot]; Weightage [900 h] |
| S06A-PR-6640 | Electrical AC/DC Works-Dispatch For Site-Lot-03 | 2026-12-13 → 2026-10-08 (-66d) | 2026-12-18 → 2026-10-13 (-66d) |  | 15d → 95d | resources none → Procurement Resource [120 h]; Weightage [900 h] |
| S06A-PR-6650 | Electrical AC/DC Works-Receipt At Site-Lot-03 | 2026-12-16 → 2026-10-11 (-66d) | 2026-12-21 → 2026-10-16 (-66d) |  | 22d → 95d | resources none → Procurement Resource [120 h]; Electrical AC DC Material - Supply [4 Lot]; Weightage [900 h] |
| S06A-PR-6660 | Electrical AC/DC Works-Dispatch For Site-Lot-04 | 2026-12-18 → 2026-10-13 (-66d) | 2026-12-23 → 2026-10-18 (-66d) |  | 15d → 99d | resources none → Procurement Resource [120 h]; Weightage [900 h] |
| S06A-PR-6670 | Electrical AC/DC Works-Receipt At Site-Lot-04 | 2026-12-21 → 2026-10-16 (-66d) | 2026-12-26 → 2026-10-21 (-66d) |  | 15d → 99d | resources none → Procurement Resource [120 h]; Electrical AC DC Material - Supply [4 Lot]; Weightage [900 h] |
| S06A-PR-6680 | Electrical AC/DC Works-Dispatch For Site-Lot-05 | 2026-12-29 → 2026-11-07 (-52d) | 2027-01-03 → 2026-11-12 (-52d) |  | 10d → 79d | resources none → Procurement Resource [120 h]; Weightage [900 h] |
| S06A-PR-6690 | Electrical AC/DC Works-Receipt At Site-Lot-05 | 2027-01-01 → 2026-11-10 (-52d) | 2027-01-06 → 2026-11-15 (-52d) |  | 10d → 79d | resources none → Procurement Resource [120 h]; Electrical AC DC Material - Supply [3 Lot]; Weightage [900 h] |
| S06A-PR-6700 | Civil, MMS & Module Installation Works-Boq & Tech Specs Release |  |  |  |  | resources none → Procurement Resource [162 h]; Weightage [12000 h] |
| S06A-PR-6710 | Civil, MMS & Module Installation Works-TBER |  |  |  |  | resources none → Procurement Resource [162 h]; Weightage [12000 h] |
| S06A-PR-6720 | Civil, MMS & Module Installation Works-Purchase Requistion |  |  |  |  | resources none → Procurement Resource [162 h]; Weightage [12000 h] |
| S06A-PR-6730 | Civil, MMS & Module Installation Works-Note For Approval |  |  |  |  | resources none → Procurement Resource [162 h]; Weightage [12000 h] |
| S06A-PR-6740 | Civil, MMS & Module Installation Works-LOI / PO Release |  |  |  |  | resources none → Procurement Resource [162 h]; Weightage [12000 h] |
| S06A-PR-6750 | Electrical AC DC Works-BOQ & Tech Specs Release |  |  |  |  | resources none → Procurement Resource [162 h]; Weightage [12000 h] |
| S06A-PR-6770 | Electrical AC DC Works-Purchase Requisition |  |  |  |  | resources none → Procurement Resource [162 h]; Weightage [12000 h] |
| S06A-PR-6760 | Electrical AC DC Works-TBER |  |  |  |  | resources none → Procurement Resource [162 h]; Weightage [12000 h] |
| S06A-PR-6780 | Electrical AC DC Works-Note For Approval |  |  |  |  | resources none → Procurement Resource [162 h]; Weightage [12000 h] |
| S06A-PR-6790 | Electrical AC DC Works-LOI / PO Release |  |  |  |  | resources none → Procurement Resource [162 h]; Weightage [12000 h] |
| 1 | **PHASE-1 (50MW)** |  | 2027-01-15 → 2027-01-07 (-8d) |  |  |  |
| 1 | **BLOCK-01** |  | 2027-01-14 → 2027-01-06 (-8d) |  |  |  |
| 1 | **CONSTRUCTION-PV AREA-DC SIDE** |  | 2026-12-31 → 2026-12-29 (-2d) |  |  |  |
| S06A-CC-1000 | Block-01 -Piling - MMS (Marking, Auguring & Concreting) |  |  |  | 47.7d → 64.8d | resources none → Weightage [17288.2 h]; Piling Stub - MMS - Construction [5832 NoS]; Piling Manpower [2651 h] |
| S06A-CC-1010 | Block-01 -Pile Capping |  |  |  | 60.7d → 77.8d | resources none → Weightage [8644.08 h]; Piling Manpower [1268 h] |
| S06A-CC-1050 | Block-01 -Array Earthing |  |  |  | 60.7d → 77.8d | resources none → Earthing - Construction [5.07 KM]; Weightage [4939.47 h]; ACDC Manpower [108 h] |
| S06A-CC-1020 | Block-01 -Piling - LT Cable Hanger System |  |  |  | 53.7d → 70.8d | resources none → Weightage [2058.11 h]; Piling Stub - LT Cable Hanger - Construction [660 NoS]; Piling Manpower [600 h] |
| S06A-CC-1030 | Block-01 -Piling - Inverters |  |  |  | 63.7d → 80.8d | resources none → Weightage [2469.74 h]; Piling Stub - Invertor - Construction [94 NoS]; Piling Manpower [470 h] |
| S06A-CC-1060 | Block-01 -MMS Erection - Torque Tube/Raftar |  |  |  | 47.7d → 64.8d | resources none → Weightage [59067.9 h]; MMS - Rafter - Construction [486 TBL]; FT Manpower [4860 h] |
| S06A-CC-1070 | Block-01 -MMS Erection - Transmission Shaft/Bracing |  |  |  | 49.7d → 66.8d | resources none → Weightage [14406.8 h]; MMS - Bracing - Construction [486 TBL]; FT Manpower [2430 h] |
| S06A-CC-1080 | Block-01 -MMS Erection - Purlin |  |  |  | 47.7d → 64.8d | resources none → Weightage [14406.8 h]; MMS - FT Purlin - Construction [486 TBL]; FT Manpower [2430 h] |
| S06A-CC-1090 | Block-01 -MMS - RFI Completion |  |  |  | 47.7d → 64.8d | resources none → Weightage [7203.4 h]; FT Manpower [1215 h] |
| S06A-CC-1100 | Block-01 -Module Installation | 2026-11-18 → 2026-11-10 (-8d) | 2026-12-27 → 2026-12-19 (-8d) |  | 26.7d → 51.8d | resources none → Weightage [56598.1 h]; Module - Construction [17 MWdc]; Module Manpower [8114 h] |
| S06A-CC-1110 | Block-01 -Module - RFI Completion | 2026-11-22 → 2026-11-14 (-8d) | 2026-12-31 → 2026-12-23 (-8d) |  | 32.7d → 57.8d | resources none → Weightage [4116.23 h]; Module Manpower [844 h] |
| S06A-CC-1040 | Block-01 -Piling - Robotic Docking System | 2026-10-23 → 2026-11-20 (+28d) | 2026-11-01 → 2026-11-29 (+28d) |  | 68.7d → 57.8d | resources none → Piling Stub - Robot Docking - Construction [25 NoS]; Weightage [1543.59 h]; Piling Manpower [210 h] |
| S06A-CC-1120 | Block-01 -DC Cable Laying | 2026-11-28 → 2026-11-20 (-8d) | 2026-12-27 → 2026-12-19 (-8d) |  | 33.7d → 58.8d | resources none → Weightage [12348.7 h]; DC Cable - Construction [99 KM]; ACDC Manpower [2200 h] |
| S06A-CC-1130 | Block-01 -Module Interconnection & MC4 Termination | 2026-12-05 → 2026-11-27 (-8d) | 2026-12-29 → 2026-12-21 (-8d) |  | 33.7d → 58.8d | resources none → Weightage [7203.4 h]; MC4 Connector - Construction [3888 NoS]; ACDC Manpower [2592 h] |
| S06A-CC-1150 | Block-01 -Robotic Structure - Docking Station Installation | 2026-12-01 → 2026-11-30 (-1d) | 2026-12-10 → 2026-12-09 (-1d) |  | 39.7d → 57.8d | resources none → Weightage [1543.59 h]; Robot Structure - Docking - Construction [40 NoS]; Robot Installation Manpower [274 h] |
| S06A-CC-1160 | Block-01 -Robotic Structure - Reverse Station Installation | 2026-12-01 → 2026-11-30 (-1d) | 2026-12-10 → 2026-12-09 (-1d) |  | 47.7d → 65.8d | resources none → Weightage [1543.59 h]; Robot Structure - Reverse - Construction [40 NoS]; Robot Installation Manpower [274 h] |
| S06A-CC-1180 | Block-01 -Robot Installation | 2026-12-02 → 2026-11-30 (-2d) | 2026-12-31 → 2026-12-29 (-2d) |  | 38.7d → 57.8d | resources none → Weightage [3087.17 h]; Robots - Construction [40 NoS]; Robot Installation Manpower [548 h] |
| S06A-CC-1140 | Block-01 -VOC Testing | 2026-12-10 → 2026-12-02 (-8d) | 2026-12-31 → 2026-12-23 (-8d) |  | 33.7d → 58.8d | resources none → Weightage [617.43 h]; ACDC Manpower [220 h] |
| S06A-CC-1170 | Block-01 -Robotic Structure - Bridges Installation | 2026-12-10 → 2026-12-02 (-8d) | 2026-12-29 → 2026-12-21 (-8d) |  | 46.7d → 71.8d | resources none → Weightage [5145.28 h]; Robot Structure - Bridges - Construction [300 NoS]; Robot Installation Manpower [2055 h] |
| 2 | **CONSTRUCTION-PV AREA-AC SIDE** |  | 2026-12-14 → 2026-11-24 (-20d) |  |  |  |
| S06A-CC-1190 | Block-01 -IDT Foundation Up To Rail |  |  |  | 47.7d → 64.8d | resources none → Weightage [7717.93 h]; IDT Station - Rail - Construction [1 NoS]; IDT Station - Foundation Bolt & Inserts - Construction [1 NoS]; IDT Station - Rebar - Construction [1 NoS]; IDT Civil Manpower [1374 h] |
| S06A-CC-1200 | Block-01 -HT & LT Station - Slab |  |  |  | 64.7d → 81.8d | resources none → Weightage [5402.55 h]; IDT Station - Foundation Bolt & Inserts - Construction [1 NoS]; IDT Station - Rebar - Construction [1 NoS]; IDT Civil Manpower [1082 h] |
| S06A-CC-1300 | Block-01 -HT Cable Laying |  |  |  | 98.7d → 115.8d | resources none → Weightage [2881.36 h]; HT Cable - Construction [7.08 KM]; ACDC Manpower [1073 h] |
| S06A-CC-1310 | Block-01 -FO Cable Laying | 2026-10-01 → 2026-10-10 (+9d) | 2026-10-08 → 2026-10-17 (+9d) |  | 98.7d → 107.1d | resources none → Weightage [3601.7 h]; FO Cable - Construction [4 KM]; ACDC Manpower [700 h] |
| S06A-CC-1210 | Block-01 -HT LT Station - Staircase |  |  |  | 87.7d → 104.8d | resources none → Weightage [205.81 h]; IDT Civil Manpower [40 h] |
| S06A-CC-1220 | Block-01 -HT & LT Station - Shed Installation |  |  |  | 64.7d → 81.8d | resources none → Weightage [1080.51 h]; IDT Shed - Construction [1 NoS]; IDT Civil Manpower [250 h] |
| S06A-CC-1240 | Block-01 -IDT Foundation - Grade Slab Casting & Dyke Wall |  |  |  | 70.7d → 87.8d | resources none → Weightage [4630.76 h]; IDT Station - Rebar - Construction [1 NoS]; IDT Civil Manpower [990 h] |
| S06A-CC-1250 | Block-01 -NIFPS Foundation |  |  |  | 47.7d → 64.8d | resources none → Weightage [1029.06 h]; IDT Station - Rebar - Construction [1 NoS]; IDT Civil Manpower [300 h] |
| S06A-CC-1260 | Block-01 -BOT Foundation |  |  |  | 69.7d → 86.8d | resources none → Weightage [3858.96 h]; IDT Station - Rebar - Construction [1 NoS]; IDT Civil Manpower [800 h] |
| S06A-CC-1270 | Block-01 -Aux Transformer Foundation |  |  |  | 68.7d → 85.8d | resources none → Weightage [1029.06 h]; IDT Station - Rebar - Construction [1 NoS]; IDT Civil Manpower [250 h] |
| S06A-CC-1350 | Block-01 -IDT Erection |  |  |  | 57.7d → 74.8d | resources none → Weightage [1543.59 h]; IDT - Construction [1 NoS]; ACDC Manpower [350 h] |
| S06A-CC-1230 | Block-01 -HT & LT Station - Sheeting Installation |  |  |  | 64.7d → 81.8d | resources none → Weightage [1080.51 h]; IDT Sheeting - Construction [1 NoS]; IDT Civil Manpower [240 h] |
| S06A-CC-1320 | Block-01 -Control Cable Laying | 2026-10-30 → 2026-10-27 (-3d) | 2026-11-04 → 2026-10-31 (-4d) |  | 67d → 87.8d | resources none → Weightage [308.72 h]; Control Cable - Construction [1 KM]; ACDC Manpower [100 h] |
| S06A-CC-1330 | Block-01 -HT Panel Erection |  |  |  | 71.7d → 88.8d | resources none → Weightage [308.72 h]; HT Panel - Construction [1 NoS]; ACDC Manpower [60 h] |
| S06A-CC-1370 | Block-01 -SCADA & SACU Installation | 2026-10-30 → 2026-10-27 (-3d) | 2026-11-04 → 2026-10-31 (-4d) |  | 67d → 87.8d | resources none → Weightage [205.81 h]; SCADA & SACU - Construction [1 NoS]; ACDC Manpower [50 h] |
| S06A-CC-1380 | Block-01 -ACDB Installation | 2026-12-05 → 2026-10-27 (-39d) | 2026-12-06 → 2026-10-28 (-39d) |  | 34.7d → 90.8d | resources none → Weightage [205.81 h]; ACDB - Construction [1 NoS]; ACDC Manpower [40 h] |
| S06A-CC-1440 | Block-01 -HT Cable Terminations - IDT Side | 2026-12-05 → 2026-10-28 (-38d) | 2026-12-06 → 2026-10-29 (-38d) |  | 41.7d → 96.8d | resources none → Weightage [205.81 h]; ACDC Manpower [70 h] |
| S06A-CC-1340 | Block-01 -LT Panel Erection |  |  |  | 64.7d → 81.8d | resources none → Weightage [823.25 h]; LT Panel - Construction [16 NoS]; ACDC Manpower [180 h] |
| S06A-CC-1280 | Block-01 -Cable Hanger - Structure & Messenger Wire Erection |  |  |  | 53.7d → 70.8d | resources none → Weightage [1543.59 h]; LT Cable - Hangers - Construction [1 Lot]; LT Cable - Support Structure - Construction [1 Lot]; LT Cable - Clamps - Construction [1 Lot]; LT Cable - Messenger wire - Construction [3.68 KM]; LT Cable - Fasteners - Construction [1 Lot]; ACDC Manpower [216 h] |

| ID | Task | Start | Finish | Complete | Total float | Predecessors | Other |
| --- | --- | --- | --- | --- | --- | --- | --- |
| S06A-CC-1390 | Block-01 -Aux Transformer - Installation | 2026-12-05 → 2026-10-31 (-35d) | 2026-12-08 → 2026-11-03 (-35d) |  | 33.7d → 85.8d | S06A-PR-6610 SS, S06A-CC-1270 FS+3d → S06A-PR-6610 SS+8d, S06A-CC-1270 FS+3d | resources none → Weightage [411.62 h]; Aux Transformer - Construction [1 NoS]; ACDC Manpower [80 h] |
| S06A-CC-1360 | Block-01 -Inverter Installation |  |  |  | 63.7d → 80.8d |  | resources none → Weightage [1440.68 h]; Invertor - Construction [47 NoS]; ACDC Manpower [280 h] |
| S06A-CC-1290 | Block-01 -LT Cable Laying |  |  |  | 53.7d → 70.8d |  | resources none → Weightage [11113.8 h]; LT Cable - Construction [9.24 KM]; ACDC Manpower [1540 h] |
| S06A-CC-1400 | Block-01 -NIFPS - Installation |  |  |  | 47.7d → 64.8d |  | resources none → Weightage [1080.51 h]; NIFPS - Construction [1 NoS]; ACDC Manpower [200 h] |
| S06A-CC-1410 | Block-01 -IDT Area - Gravel Filling | 2026-12-07 → 2026-11-17 (-20d) | 2026-12-11 → 2026-11-21 (-20d) |  | 34.7d → 71.8d |  | resources none → Weightage [308.72 h]; IDT Civil Manpower [100 h] |
| S06A-CC-1420 | Block-01 -IDT Area - Fencing | 2026-12-09 → 2026-11-18 (-21d) | 2026-12-13 → 2026-11-22 (-21d) |  | 33.7d → 71.8d |  | resources none → Weightage [617.43 h]; IDT - Fencing - Construction - Construction [1 NoS]; IDT Civil Manpower [150 h] |
| S06A-CC-1450 | Block-01 -LT Cable Terminations - LT Panel To IDT | 2026-12-05 → 2026-11-19 (-16d) | 2026-12-10 → 2026-11-24 (-16d) |  | 37.7d → 70.8d |  | resources none → Weightage [1440.68 h]; ACDC Manpower [300 h] |
| S06A-CC-1460 | Block-01 -LT Cable Terminations - Inverter To LT Panel | 2026-12-05 → 2026-11-19 (-16d) | 2026-12-10 → 2026-11-24 (-16d) |  | 37.7d → 70.8d |  | resources none → Weightage [720.34 h]; ACDC Manpower [210 h] |
| S06A-CC-1430 | Block-01 -IDT Area - Gate Installation | 2026-12-14 → 2026-11-23 (-21d) | 2026-12-14 → 2026-11-23 (-21d) |  | 33.7d → 71.8d |  | resources none → Weightage [308.72 h]; IDT - Gate - Construction [1 NoS]; IDT Civil Manpower [50 h] |
| 3 | **CONSTRUCTION-PV AREA-PRE COMMISSIONING** |  | 2026-12-19 → 2026-12-03 (-16d) |  |  |  |  |
| S06A-CC-1490 | Block-01 -HT Panel Testing |  |  |  | 71.7d → 88.8d |  | resources none → Weightage [102.91 h]; HT Panel Testing [20 h] |
| S06A-CC-1500 | Block-01 -LT Panel Testing |  |  |  | 64.7d → 81.8d |  | resources none → Weightage [205.81 h]; LT Panel Testing [40 h] |
| S06A-CC-1470 | Block-01 -IDT Filtration |  |  |  | 47.7d → 64.8d |  | resources none → Weightage [154.36 h]; IDT Filtration & Testing [30 h] |
| S06A-CC-1480 | Block-01 -IDT Testing |  |  |  | 47.7d → 64.8d |  | resources none → Weightage [102.91 h]; IDT Filtration & Testing [20 h] |
| S06A-CC-1510 | Block-01 -Inspection Offer To Asset Commissioning Team | 2026-12-11 → 2026-11-25 (-16d) | 2026-12-11 → 2026-11-25 (-16d) |  | 37.7d → 70.8d |  | resources none → Weightage [51.45 h] |
| S06A-CC-1520 | Block-01 -Punch Point Identification By Asset Commissioning Team | 2026-12-12 → 2026-11-26 (-16d) | 2026-12-14 → 2026-11-28 (-16d) |  | 37.7d → 70.8d |  | resources none → Weightage [308.72 h] |
| S06A-CC-1530 | Block-01 -Punch Point Rectification And Pre Charging Sign Off | 2026-12-15 → 2026-11-29 (-16d) | 2026-12-19 → 2026-12-03 (-16d) |  | 37.7d → 70.8d |  | resources none → Weightage [463.08 h] |
| 4 | **CONSTRUCTION-COMMISSIONING** |  | 2027-01-14 → 2027-01-06 (-8d) |  |  |  |  |
| S06A-CC-1540 | Block-01 -CEA Application |  |  |  | 47.7d → 64.8d |  | resources none → Weightage [51.45 h] |
| S06A-CC-1550 | Block-01 -CEA Inspection | 2026-12-15 → 2026-12-01 (-14d) | 2026-12-15 → 2026-12-01 (-14d) |  | 33.7d → 64.8d |  | resources none → Weightage [51.45 h] |
| S06A-CC-1560 | Block-01 -CEA Compliance & Approval | 2026-12-16 → 2026-12-02 (-14d) | 2026-12-20 → 2026-12-06 (-14d) |  | 33.7d → 64.8d |  | resources none → Weightage [411.62 h] |
| S06A-CC-1570 | Block-01 -First Time Charging - Application | 2026-12-28 → 2026-12-20 (-8d) | 2026-12-28 → 2026-12-20 (-8d) |  | 26.7d → 51.8d |  | resources none → Weightage [51.45 h] |
| S06A-CC-1580 | Block-01 -First Time Charging - Approval | 2026-12-29 → 2026-12-21 (-8d) | 2026-12-30 → 2026-12-22 (-8d) |  | 26.7d → 51.8d |  | resources none → Weightage [308.72 h] |
| S06A-CC-1590 | Block-01 -First Time Charging | 2026-12-31 → 2026-12-23 (-8d) | 2026-12-31 → 2026-12-23 (-8d) |  | 26.7d → 51.8d |  | resources none → Weightage [102.91 h] |
| S06A-CC-1600 | Block-01 -Tracker Commissioning - SCADA | 2026-12-31 → 2026-12-23 (-8d) | 2027-01-07 → 2026-12-30 (-8d) |  | 31.7d → 56.8d |  | resources none → Weightage [1080.51 h] |
| S06A-CC-1610 | Block-01 -Robot Commissioning - SCADA | 2026-12-31 → 2026-12-23 (-8d) | 2027-01-11 → 2027-01-03 (-8d) |  | 27.7d → 52.8d |  | resources none → Weightage [6174.34 h] |
| S06A-CC-1620 | Block-01 -Trial Operation | 2027-01-07 → 2026-12-30 (-8d) | 2027-01-07 → 2026-12-30 (-8d) |  | 26.7d → 51.8d |  | resources none → Weightage [102.91 h] |
| S06A-CC-1630 | Block-01 -Trial Run Certificate | 2027-01-10 → 2027-01-02 (-8d) | 2027-01-10 → 2027-01-02 (-8d) |  | 26.7d → 51.8d |  | resources none → Weightage [51.45 h] |
| S06A-CC-1640 | Block-01 -COD | 2027-01-13 → 2027-01-05 (-8d) | 2027-01-14 → 2027-01-06 (-8d) |  | 26.7d → 51.8d |  | resources none → Weightage [360.17 h] |
| 2 | **BLOCK-02** |  | 2027-01-15 → 2027-01-07 (-8d) |  |  |  |  |
| 1 | **CONSTRUCTION-PV AREA-DC SIDE** |  | 2027-01-01 → 2026-12-29 (-3d) |  |  |  |  |
| S06A-CC-1650 | Block-02 -Piling - MMS (Marking, Auguring & Concreting) |  |  |  | 45.7d → 62.8d |  | resources none → Weightage [17288.2 h]; Piling Stub - MMS - Construction [5832 NoS]; Piling Manpower [2651 h] |
| S06A-CC-1660 | Block-02 -Pile Capping |  |  |  | 56.7d → 73.8d |  | resources none → Weightage [8644.08 h]; Piling Manpower [1268 h] |
| S06A-CC-1700 | Block-02 -Array Earthing |  |  |  | 57.7d → 74.8d |  | resources none → Earthing - Construction [5 KM]; Weightage [4939.47 h]; ACDC Manpower [108 h] |
| S06A-CC-1670 | Block-02 -Piling - LT Cable Hanger System |  |  |  | 53.7d → 70.8d |  | resources none → Weightage [2058.11 h]; Piling Stub - LT Cable Hanger - Construction [596 NoS]; Piling Manpower [542 h] |
| S06A-CC-1680 | Block-02 -Piling - Inverters |  |  |  | 63.7d → 80.8d |  | resources none → Weightage [2469.74 h]; Piling Stub - Invertor - Construction [94 NoS]; Piling Manpower [470 h] |
| S06A-CC-1710 | Block-02 -MMS Erection - Torque Tube/Raftar |  |  |  | 45.7d → 62.8d |  | resources none → Weightage [59067.9 h]; MMS - Rafter - Construction [486 TBL]; FT Manpower [4860 h] |
| S06A-CC-1720 | Block-02 -MMS Erection - Transmission Shaft/Bracing |  |  |  | 49.7d → 66.8d |  | resources none → Weightage [14406.8 h]; MMS - Bracing - Construction [486 TBL]; FT Manpower [2430 h] |
| S06A-CC-1730 | Block-02 -MMS Erection - Purlin |  |  |  | 45.7d → 62.8d |  | resources none → Weightage [14406.8 h]; MMS - FT Purlin - Construction [486 TBL]; FT Manpower [2430 h] |
| S06A-CC-1740 | Block-02 -MMS - RFI Completion |  |  |  | 45.7d → 62.8d |  | resources none → Weightage [7203.4 h]; FT Manpower [1400 h] |
| S06A-CC-1750 | Block-02 -Module Installation | 2026-11-18 → 2026-11-10 (-8d) | 2026-12-28 → 2026-12-20 (-8d) |  | 26d → 51.1d |  | resources none → Weightage [56598.1 h]; Module - Construction [17 MWdc]; Module Manpower [8400 h] |
| S06A-CC-1770 | Block-02 -DC Cable Laying | 2026-11-19 → 2026-11-11 (-8d) | 2026-12-19 → 2026-12-11 (-8d) |  | 42d → 67.1d |  | resources none → Weightage [12348.7 h]; DC Cable - Construction [99 KM]; ACDC Manpower [2200 h] |
| S06A-CC-1760 | Block-02 -Module - RFI Completion | 2026-11-22 → 2026-11-14 (-8d) | 2027-01-01 → 2026-12-24 (-8d) |  | 32d → 57.1d |  | resources none → Weightage [4116.23 h]; Module Manpower [1200 h] |
| S06A-CC-1690 | Block-02 -Piling - Robotic Docking System | 2026-10-23 → 2026-11-20 (+28d) | 2026-11-01 → 2026-11-29 (+28d) |  | 68.7d → 57.8d |  | resources none → Piling Stub - Robot Docking - Construction [25 NoS]; Weightage [1543.59 h]; Piling Manpower [300 h] |
| S06A-CC-1780 | Block-02 -Module Interconnection & MC4 Termination | 2026-12-04 → 2026-11-26 (-8d) | 2026-12-29 → 2026-12-21 (-8d) |  | 34d → 59.1d |  | resources none → Weightage [7203.4 h]; MC4 Connector - Construction [3888 NoS]; ACDC Manpower [2592 h] |
| S06A-CC-1800 | Block-02 -Robotic Structure - Docking Station Installation | 2026-12-01 → 2026-11-30 (-1d) | 2026-12-10 → 2026-12-09 (-1d) |  | 39.7d → 57.8d |  | resources none → Weightage [1543.59 h]; Robot Structure - Docking - Construction [40 NoS]; Robot Installation Manpower [300 h] |
| S06A-CC-1810 | Block-02 -Robotic Structure - Reverse Station Installation | 2026-12-01 → 2026-11-30 (-1d) | 2026-12-10 → 2026-12-09 (-1d) |  | 47.7d → 65.8d |  | resources none → Weightage [1543.59 h]; Robot Structure - Reverse - Construction [40 NoS]; Robot Installation Manpower [300 h] |
| S06A-CC-1830 | Block-02 -Robot Installation | 2026-12-02 → 2026-11-30 (-2d) | 2026-12-31 → 2026-12-29 (-2d) |  | 38.7d → 57.8d |  | resources none → Weightage [3087.17 h]; Robots - Construction [40 NoS]; Robot Installation Manpower [600 h] |
| S06A-CC-1790 | Block-02 -VOC Testing | 2026-12-09 → 2026-12-01 (-8d) | 2026-12-31 → 2026-12-23 (-8d) |  | 34d → 59.1d |  | resources none → Weightage [617.43 h]; ACDC Manpower [220 h] |
| S06A-CC-1820 | Block-02 -Robotic Structure - Bridges Installation | 2026-12-10 → 2026-12-02 (-8d) | 2026-12-30 → 2026-12-22 (-8d) |  | 46d → 71.1d |  | resources none → Weightage [5145.28 h]; Robot Structure - Bridges - Construction [300 NoS]; Robot Installation Manpower [2200 h] |
| 2 | **CONSTRUCTION-PV AREA-AC SIDE** |  | 2026-12-16 → 2026-11-24 (-22d) |  |  |  |  |
| S06A-CC-1840 | Block-02 -IDT Foundation Up To Rail |  | 2026-10-22 → 2026-10-06 (-16d) | 38% → 75% | 47.7d → 80.8d |  | resources none → Weightage [7717.93 h]; IDT Station - Rail - Construction [1 NoS]; IDT Station - Foundation Bolt & Inserts - Construction [1 NoS]; IDT Station - Rebar - Construction [1 NoS]; IDT Civil Manpower [1470 h] |
| S06A-CC-1880 | Block-02 -IDT Foundation - Grade Slab Casting & Dyke Wall | 2026-10-23 → 2026-08-29 A (-55d) | 2026-10-31 → 2026-10-03 (-28d) | 0% → 80% | 70.7d → 115.8d |  | resources none → Weightage [4630.76 h]; IDT Station - Rebar - Construction [1 NoS]; IDT Civil Manpower [990 h] |
| S06A-CC-1850 | Block-02 -HT & LT Station - Slab | 2026-10-01 → 2026-09-01 A (-30d) | 2026-10-16 → 2026-10-07 (-9d) | 0% → 62% | 64.7d → 90.8d |  | resources none → Weightage [5402.55 h]; IDT Station - Foundation Bolt & Inserts - Construction [1 NoS]; IDT Station - Rebar - Construction [1 NoS]; IDT Civil Manpower [1200 h] |
| S06A-CC-1980 | Block-02 -HT Cable Laying |  |  |  | 98.7d → 115.8d |  | resources none → Weightage [2881.36 h]; HT Cable - Construction [6.77 KM]; ACDC Manpower [1025 h] |
| S06A-CC-1890 | Block-02 -NIFPS Foundation | 2026-10-23 → 2026-10-07 (-16d) | 2026-11-01 → 2026-10-16 (-16d) |  | 47.7d → 80.8d |  | resources none → Weightage [1029.06 h]; IDT Station - Rebar - Construction [1 NoS]; IDT Civil Manpower [300 h] |
| S06A-CC-1900 | Block-02 -BOT Foundation | 2026-10-23 → 2026-10-07 (-16d) | 2026-11-01 → 2026-10-16 (-16d) |  | 69.7d → 102.8d |  | resources none → Weightage [3858.96 h]; IDT Station - Rebar - Construction [1 NoS]; IDT Civil Manpower [800 h] |
| S06A-CC-1910 | Block-02 -Aux Transformer Foundation | 2026-10-23 → 2026-10-07 (-16d) | 2026-10-27 → 2026-10-11 (-16d) |  | 68.7d → 101.8d |  | resources none → Weightage [1029.06 h]; IDT Station - Rebar - Construction [1 NoS]; IDT Civil Manpower [250 h] |
| S06A-CC-2030 | Block-02 -IDT Erection | 2026-10-23 → 2026-10-07 (-16d) | 2026-10-27 → 2026-10-11 (-16d) |  | 57.7d → 90.8d |  | resources none → Weightage [1543.59 h]; IDT - Construction [1 NoS]; ACDC Manpower [350 h] |
| S06A-CC-1990 | Block-02 -FO Cable Laying | 2026-10-01 → 2026-10-10 (+9d) | 2026-10-08 → 2026-10-17 (+9d) |  | 98.7d → 107.1d |  | resources none → Weightage [3601.7 h]; FO Cable - Construction [4 KM]; ACDC Manpower [700 h] |
| S06A-CC-1860 | Block-02 -HT & LT Station - Shed Installation | 2026-10-20 → 2026-10-11 (-9d) | 2026-10-24 → 2026-10-15 (-9d) |  | 64.7d → 90.8d |  | resources none → Weightage [1080.51 h]; IDT Shed - Construction [1 NoS]; IDT Civil Manpower [250 h] |
| S06A-CC-1950 | Block-02 -HT LT Station - Staircase | 2026-10-20 → 2026-10-11 (-9d) | 2026-10-21 → 2026-10-12 (-9d) |  | 87.7d → 113.8d |  | resources none → Weightage [205.81 h]; IDT Civil Manpower [40 h] |
| S06A-CC-2070 | Block-02 -Aux Transformer - Installation | 2026-12-06 → 2026-10-15 (-52d) | 2026-12-10 → 2026-10-18 (-53d) |  | 32d → 101.8d | S06A-CC-1910 FS+3d, S06A-PR-6610 SS+2d → S06A-CC-1910 FS+3d, S06A-PR-6610 SS+8d | resources none → Weightage [411.62 h]; Aux Transformer - Construction [1 NoS]; ACDC Manpower [80 h] |
| S06A-CC-1870 | Block-02 -HT & LT Station - Sheeting Installation | 2026-10-25 → 2026-10-16 (-9d) | 2026-10-26 → 2026-10-17 (-9d) |  | 64.7d → 90.8d |  | resources none → Weightage [1080.51 h]; IDT Sheeting - Construction [1 NoS]; IDT Civil Manpower [240 h] |
| S06A-CC-2000 | Block-02 -Control Cable Laying | 2026-10-30 → 2026-10-18 (-12d) | 2026-11-04 → 2026-10-22 (-13d) |  | 67d → 96.8d |  | resources none → Weightage [308.72 h]; Control Cable - Construction [1 KM]; ACDC Manpower [100 h] |
| S06A-CC-2010 | Block-02 -HT Panel Erection | 2026-10-27 → 2026-10-18 (-9d) | 2026-10-27 → 2026-10-18 (-9d) |  | 71.7d → 97.8d |  | resources none → Weightage [308.72 h]; HT Panel - Construction [1 NoS]; ACDC Manpower [60 h] |
| S06A-CC-2050 | Block-02 -SCADA & SACU Installation | 2026-10-30 → 2026-10-18 (-12d) | 2026-11-04 → 2026-10-22 (-13d) |  | 67d → 96.8d |  | resources none → Weightage [205.81 h]; SCADA & SACU - Construction [1 NoS]; ACDC Manpower [50 h] |
| S06A-CC-2060 | Block-02 -ACDB Installation | 2026-12-05 → 2026-10-18 (-48d) | 2026-12-06 → 2026-10-19 (-48d) |  | 34.7d → 99.8d |  | resources none → Weightage [205.81 h]; ACDB - Construction [1 NoS]; ACDC Manpower [40 h] |
| S06A-CC-2090 | Block-02 -HT Cable Terminations - IDT Side | 2026-12-05 → 2026-10-19 (-47d) | 2026-12-06 → 2026-10-20 (-47d) |  | 41.7d → 105.8d |  | resources none → Weightage [205.81 h]; ACDC Manpower [70 h] |
| S06A-CC-2020 | Block-02 -LT Panel Erection | 2026-10-29 → 2026-10-20 (-9d) | 2026-11-03 → 2026-10-25 (-9d) |  | 64.7d → 90.8d |  | resources none → Weightage [823.25 h]; LT Panel - Construction [16 NoS]; ACDC Manpower [180 h] |

| ID | Task | Start | Finish | Total float | Predecessors | Other |
| --- | --- | --- | --- | --- | --- | --- |
| S06A-CC-2080 | Block-02 -NIFPS - Installation | 2026-11-07 → 2026-10-22 (-16d) | 2026-11-16 → 2026-10-31 (-16d) | 47.7d → 80.8d |  | resources none → Weightage [1080.51 h]; NIFPS - Construction [1 NoS]; ACDC Manpower [200 h] |
| S06A-CC-1960 | Block-02 -Cable Hanger - Structure & Messenger Wire Erection |  |  | 53.7d → 70.8d |  | resources none → Weightage [1543.59 h]; LT Cable - Hangers - Construction [1 Lot]; LT Cable - Support Structure - Construction [1 Lot]; LT Cable - Clamps - Construction [1 Lot]; LT Cable - Messenger wire - Construction [3.44 KM]; LT Cable - Fasteners - Construction [1 Lot]; ACDC Manpower [202 h] |
| S06A-CC-1940 | Block-02 -IDT Area - Gravel Filling | 2026-12-07 → 2026-11-01 (-36d) | 2026-12-12 → 2026-11-05 (-37d) | 34d → 87.8d |  | resources none → Weightage [308.72 h]; IDT Civil Manpower [100 h] |
| S06A-CC-1920 | Block-02 -IDT Area - Fencing | 2026-12-10 → 2026-11-02 (-38d) | 2026-12-15 → 2026-11-06 (-39d) | 32d → 87.8d |  | resources none → Weightage [617.43 h]; IDT - Fencing - Construction - Construction [1 NoS]; IDT Civil Manpower [150 h] |
| S06A-CC-2040 | Block-02 -Inverter Installation |  |  | 63.7d → 80.8d |  | resources none → Weightage [1440.68 h]; Invertor - Construction [47 NoS]; ACDC Manpower [280 h] |
| S06A-CC-1970 | Block-02 -LT Cable Laying |  |  | 53.7d → 70.8d |  | resources none → Weightage [11113.8 h]; LT Cable - Construction [9.09 KM]; ACDC Manpower [1515 h] |
| S06A-CC-1930 | Block-02 -IDT Area - Gate Installation | 2026-12-15 → 2026-11-07 (-38d) | 2026-12-16 → 2026-11-07 (-39d) | 32d → 87.8d |  | resources none → Weightage [308.72 h]; IDT - Gate - Construction [1 NoS]; IDT Civil Manpower [50 h] |
| S06A-CC-2100 | Block-02 -LT Cable Terminations - LT Panel To IDT | 2026-12-05 → 2026-11-18 (-17d) | 2026-12-11 → 2026-11-24 (-17d) | 36.7d → 70.8d |  | resources none → Weightage [1440.68 h]; ACDC Manpower [300 h] |
| S06A-CC-2110 | Block-02 -LT Cable Terminations - Inverter To LT Panel | 2026-12-05 → 2026-11-18 (-17d) | 2026-12-11 → 2026-11-24 (-17d) | 36.7d → 70.8d |  | resources none → Weightage [720.34 h]; ACDC Manpower [210 h] |
| 3 | **CONSTRUCTION-PV AREA-PRE COMMISSIONING** | 2026-10-28 → 2026-10-19 (-9d) | 2026-12-20 → 2026-12-03 (-17d) |  |  |  |
| S06A-CC-2140 | Block-02 -HT Panel Testing | 2026-10-28 → 2026-10-19 (-9d) | 2026-10-28 → 2026-10-19 (-9d) | 71.7d → 97.8d |  | resources none → Weightage [102.91 h]; HT Panel Testing [20 h] |
| S06A-CC-2150 | Block-02 -LT Panel Testing | 2026-11-04 → 2026-10-26 (-9d) | 2026-11-04 → 2026-10-26 (-9d) | 64.7d → 90.8d |  | resources none → Weightage [205.81 h]; LT Panel Testing [40 h] |
| S06A-CC-2120 | Block-02 -IDT Filtration | 2026-11-17 → 2026-11-01 (-16d) | 2026-11-19 → 2026-11-03 (-16d) | 47.7d → 80.8d |  | resources none → Weightage [154.36 h]; IDT Filtration & Testing [30 h] |
| S06A-CC-2130 | Block-02 -IDT Testing | 2026-11-20 → 2026-11-04 (-16d) | 2026-11-21 → 2026-11-05 (-16d) | 47.7d → 80.8d |  | resources none → Weightage [102.91 h]; IDT Filtration & Testing [20 h] |
| S06A-CC-2160 | Block-02 -Inspection Offer To Asset Commissioning Team | 2026-12-12 → 2026-11-25 (-17d) | 2026-12-12 → 2026-11-25 (-17d) | 36.7d → 70.8d |  | resources none → Weightage [51.45 h] |
| S06A-CC-2170 | Block-02 -Punch Point Identification By Asset Commissioning Team | 2026-12-13 → 2026-11-26 (-17d) | 2026-12-15 → 2026-11-28 (-17d) | 36.7d → 70.8d |  | resources none → Weightage [308.72 h] |
| S06A-CC-2180 | Block-02 -Punch Point Rectification And Pre Charging Sign Off | 2026-12-16 → 2026-11-29 (-17d) | 2026-12-20 → 2026-12-03 (-17d) | 36.7d → 70.8d |  | resources none → Weightage [463.08 h] |
| 4 | **CONSTRUCTION-COMMISSIONING** | 2026-11-22 → 2026-11-12 (-10d) | 2027-01-15 → 2027-01-07 (-8d) |  |  |  |
| S06A-CC-2190 | Block-02 -CEA Application | 2026-11-22 → 2026-11-12 (-10d) | 2026-11-22 → 2026-11-13 (-9d) | 47.7d → 74.1d |  | resources none → Weightage [51.45 h] |
| S06A-CC-2200 | Block-02 -CEA Inspection | 2026-12-16 → 2026-11-21 (-25d) | 2026-12-17 → 2026-11-22 (-25d) | 32d → 74.1d |  | resources none → Weightage [51.45 h] |
| S06A-CC-2210 | Block-02 -CEA Compliance & Approval | 2026-12-17 → 2026-11-22 (-25d) | 2026-12-22 → 2026-11-27 (-25d) | 32d → 74.1d |  | resources none → Weightage [411.62 h] |
| S06A-CC-2220 | Block-02 -First Time Charging - Application | 2026-12-28 → 2026-12-20 (-8d) | 2026-12-29 → 2026-12-21 (-8d) | 26d → 51.1d |  | resources none → Weightage [51.45 h] |
| S06A-CC-2230 | Block-02 -First Time Charging - Approval | 2026-12-29 → 2026-12-21 (-8d) | 2026-12-31 → 2026-12-23 (-8d) | 26d → 51.1d |  | resources none → Weightage [308.72 h] |
| S06A-CC-2240 | Block-02 -First Time Charging | 2026-12-31 → 2026-12-23 (-8d) | 2027-01-01 → 2026-12-24 (-8d) | 26d → 51.1d |  | resources none → Weightage [102.91 h] |
| S06A-CC-2250 | Block-02 -Tracker Commissioning - SCADA | 2026-12-31 → 2026-12-23 (-8d) | 2027-01-08 → 2026-12-31 (-8d) | 31d → 56.1d |  | resources none → Weightage [1080.51 h] |
| S06A-CC-2260 | Block-02 -Robot Commissioning - SCADA | 2026-12-31 → 2026-12-23 (-8d) | 2027-01-12 → 2027-01-04 (-8d) | 27d → 52.1d |  | resources none → Weightage [6174.34 h] |
| S06A-CC-2270 | Block-02 -Trial Operation | 2027-01-07 → 2026-12-30 (-8d) | 2027-01-08 → 2026-12-31 (-8d) | 26d → 51.1d |  | resources none → Weightage [102.91 h] |
| S06A-CC-2280 | Block-02 -Trial Run Certificate | 2027-01-10 → 2027-01-02 (-8d) | 2027-01-11 → 2027-01-03 (-8d) | 26d → 51.1d |  | resources none → Weightage [51.45 h] |
| S06A-CC-2290 | Block-02 -COD | 2027-01-13 → 2027-01-05 (-8d) | 2027-01-15 → 2027-01-07 (-8d) | 26d → 51.1d |  | resources none → Weightage [360.17 h] |
| 3 | **BLOCK-03** |  | 2027-01-15 → 2027-01-07 (-8d) |  |  |  |
| 1 | **CONSTRUCTION-PV AREA-DC SIDE** |  | 2027-01-01 → 2026-12-29 (-3d) |  |  |  |
| S06A-CC-2300 | Block-03 -Piling - MMS (Marking, Auguring & Concreting) |  |  | 45.7d → 62.8d |  | resources none → Weightage [17288.2 h]; Piling Stub - MMS - Construction [5832 NoS]; Piling Manpower [2651 h] |
| S06A-CC-2310 | Block-03 -Pile Capping |  |  | 56.7d → 73.8d |  | resources none → Weightage [8644.08 h]; Piling Manpower [1268 h] |
| S06A-CC-2350 | Block-03 -Array Earthing |  |  | 57.7d → 74.8d |  | resources none → Earthing - Construction [5.11 KM]; Weightage [4939.47 h]; ACDC Manpower [108 h] |
| S06A-CC-2320 | Block-03 -Piling - LT Cable Hanger System |  |  | 53.7d → 70.8d |  | resources none → Weightage [2058.11 h]; Piling Stub - LT Cable Hanger - Construction [571 NoS]; Piling Manpower [519 h] |
| S06A-CC-2330 | Block-03 -Piling - Inverters |  |  | 63.7d → 80.8d |  | resources none → Weightage [2469.74 h]; Piling Stub - Invertor - Construction [94 NoS]; Piling Manpower [470 h] |
| S06A-CC-2360 | Block-03 -MMS Erection - Torque Tube/Raftar |  |  | 45.7d → 62.8d |  | resources none → Weightage [59067.9 h]; MMS - Rafter - Construction [486 TBL]; FT Manpower [4860 h] |
| S06A-CC-2370 | Block-03 -MMS Erection - Transmission Shaft/Bracing |  |  | 49.7d → 66.8d |  | resources none → Weightage [14406.8 h]; MMS - Bracing - Construction [486 TBL]; FT Manpower [2430 h] |
| S06A-CC-2380 | Block-03 -MMS Erection - Purlin |  |  | 45.7d → 62.8d |  | resources none → Weightage [14406.8 h]; MMS - FT Purlin - Construction [486 TBL]; FT Manpower [2430 h] |
| S06A-CC-2390 | Block-03 -MMS - RFI Completion |  |  | 45.7d → 62.8d |  | resources none → Weightage [7203.4 h]; FT Manpower [1400 h] |
| S06A-CC-2400 | Block-03 -Module Installation | 2026-11-18 → 2026-11-10 (-8d) | 2026-12-28 → 2026-12-20 (-8d) | 26d → 51.1d |  | resources none → Weightage [56598.1 h]; Module - Construction [17 MWdc]; Module Manpower [8400 h] |
| S06A-CC-2420 | Block-03 -DC Cable Laying | 2026-11-19 → 2026-11-11 (-8d) | 2026-12-19 → 2026-12-11 (-8d) | 42d → 67.1d |  | resources none → Weightage [12348.7 h]; DC Cable - Construction [101 KM]; ACDC Manpower [2244 h] |
| S06A-CC-2410 | Block-03 -Module - RFI Completion | 2026-11-22 → 2026-11-14 (-8d) | 2027-01-01 → 2026-12-24 (-8d) | 32d → 57.1d |  | resources none → Weightage [4116.23 h]; Module Manpower [1200 h] |
| S06A-CC-2340 | Block-03 -Piling - Robotic Docking System | 2026-10-23 → 2026-11-20 (+28d) | 2026-11-01 → 2026-11-29 (+28d) | 68.7d → 57.8d |  | resources none → Piling Stub - Robot Docking - Construction [25 NoS]; Weightage [1543.59 h]; Piling Manpower [300 h] |
| S06A-CC-2430 | Block-03 -Module Interconnection & MC4 Termination | 2026-12-04 → 2026-11-26 (-8d) | 2026-12-29 → 2026-12-21 (-8d) | 34d → 59.1d |  | resources none → Weightage [7203.4 h]; MC4 Connector - Construction [3888 NoS]; ACDC Manpower [2592 h] |
| S06A-CC-2450 | Block-03 -Robotic Structure - Docking Station Installation | 2026-12-01 → 2026-11-30 (-1d) | 2026-12-10 → 2026-12-09 (-1d) | 39.7d → 57.8d |  | resources none → Weightage [1543.59 h]; Robot Structure - Docking - Construction [40 NoS]; Robot Installation Manpower [300 h] |
| S06A-CC-2460 | Block-03 -Robotic Structure - Reverse Station Installation | 2026-12-01 → 2026-11-30 (-1d) | 2026-12-10 → 2026-12-09 (-1d) | 47.7d → 65.8d |  | resources none → Weightage [1543.59 h]; Robot Structure - Reverse - Construction [40 NoS]; Robot Installation Manpower [300 h] |
| S06A-CC-2480 | Block-03 -Robot Installation | 2026-12-02 → 2026-11-30 (-2d) | 2026-12-31 → 2026-12-29 (-2d) | 38.7d → 57.8d |  | resources none → Weightage [3087.17 h]; Robots - Construction [40 NoS]; Robot Installation Manpower [600 h] |
| S06A-CC-2440 | Block-03 -VOC Testing | 2026-12-09 → 2026-12-01 (-8d) | 2026-12-31 → 2026-12-23 (-8d) | 34d → 59.1d |  | resources none → Weightage [617.43 h]; ACDC Manpower [220 h] |
| S06A-CC-2470 | Block-03 -Robotic Structure - Bridges Installation | 2026-12-10 → 2026-12-02 (-8d) | 2026-12-30 → 2026-12-22 (-8d) | 46d → 71.1d |  | resources none → Weightage [5145.28 h]; Robot Structure - Bridges - Construction [300 NoS]; Robot Installation Manpower [2200 h] |
| 2 | **CONSTRUCTION-PV AREA-AC SIDE** |  | 2026-12-16 → 2026-11-24 (-22d) |  |  |  |
| S06A-CC-2490 | Block-03 -IDT Foundation Up To Rail |  |  | 63.5d → 80.6d |  | resources none → Weightage [7717.93 h]; IDT Station - Rail - Construction [1 NoS]; IDT Station - Foundation Bolt & Inserts - Construction [1 NoS]; IDT Station - Rebar - Construction [1 NoS]; IDT Civil Manpower [1470 h] |
| S06A-CC-2500 | Block-03 -HT & LT Station - Slab |  |  | 73.7d → 90.8d |  | resources none → Weightage [5402.55 h]; IDT Station - Foundation Bolt & Inserts - Construction [1 NoS]; IDT Station - Rebar - Construction [1 NoS]; IDT Civil Manpower [1200 h] |
| S06A-CC-2630 | Block-03 -HT Cable Laying |  |  | 98.7d → 115.8d |  | resources none → Weightage [2881.36 h]; HT Cable - Construction [6.72 KM]; ACDC Manpower [1018 h] |
| S06A-CC-2530 | Block-03 -IDT Foundation - Grade Slab Casting & Dyke Wall |  |  | 86.5d → 103.6d |  | resources none → Weightage [4630.76 h]; IDT Station - Rebar - Construction [1 NoS]; IDT Civil Manpower [990 h] |
| S06A-CC-2540 | Block-03 -NIFPS Foundation |  |  | 63.5d → 80.6d |  | resources none → Weightage [1029.06 h]; IDT Station - Rebar - Construction [1 NoS]; IDT Civil Manpower [300 h] |
| S06A-CC-2550 | Block-03 -BOT Foundation |  |  | 85.5d → 102.6d |  | resources none → Weightage [3858.96 h]; IDT Station - Rebar - Construction [1 NoS]; IDT Civil Manpower [800 h] |
| S06A-CC-2560 | Block-03 -Aux Transformer Foundation |  |  | 84.5d → 101.6d |  | resources none → Weightage [1029.06 h]; IDT Station - Rebar - Construction [1 NoS]; IDT Civil Manpower [250 h] |
| S06A-CC-2680 | Block-03 -IDT Erection |  |  | 73.5d → 90.6d |  | resources none → Weightage [1543.59 h]; IDT - Construction [1 NoS]; ACDC Manpower [350 h] |
| S06A-CC-2640 | Block-03 -FO Cable Laying | 2026-10-01 → 2026-10-10 (+9d) | 2026-10-08 → 2026-10-17 (+9d) | 98.7d → 107.1d |  | resources none → Weightage [3601.7 h]; FO Cable - Construction [4 KM]; ACDC Manpower [700 h] |
| S06A-CC-2510 | Block-03 -HT & LT Station - Shed Installation |  |  | 73.7d → 90.8d |  | resources none → Weightage [1080.51 h]; IDT Shed - Construction [1 NoS]; IDT Civil Manpower [250 h] |
| S06A-CC-2600 | Block-03 -HT LT Station - Staircase |  |  | 96.7d → 113.8d |  | resources none → Weightage [205.81 h]; IDT Civil Manpower [40 h] |
| S06A-CC-2720 | Block-03 -Aux Transformer - Installation | 2026-12-06 → 2026-10-15 (-52d) | 2026-12-10 → 2026-10-19 (-52d) | 32d → 101.6d | S06A-PR-6610 SS+2d, S06A-CC-2560 FS+3d → S06A-PR-6610 SS+8d, S06A-CC-2560 FS+3d | resources none → Weightage [411.62 h]; Aux Transformer - Construction [1 NoS]; ACDC Manpower [80 h] |
| S06A-CC-2520 | Block-03 -HT & LT Station - Sheeting Installation |  |  | 73.7d → 90.8d |  | resources none → Weightage [1080.51 h]; IDT Sheeting - Construction [1 NoS]; IDT Civil Manpower [240 h] |
| S06A-CC-2650 | Block-03 -Control Cable Laying | 2026-10-30 → 2026-10-18 (-12d) | 2026-11-04 → 2026-10-22 (-13d) | 67d → 96.8d |  | resources none → Weightage [308.72 h]; Control Cable - Construction [1 KM]; ACDC Manpower [100 h] |
| S06A-CC-2660 | Block-03 -HT Panel Erection |  |  | 80.7d → 97.8d |  | resources none → Weightage [308.72 h]; HT Panel - Construction [1 NoS]; ACDC Manpower [60 h] |
| S06A-CC-2700 | Block-03 -SCADA & SACU Installation | 2026-10-30 → 2026-10-18 (-12d) | 2026-11-04 → 2026-10-22 (-13d) | 67d → 96.8d |  | resources none → Weightage [205.81 h]; SCADA & SACU - Construction [1 NoS]; ACDC Manpower [50 h] |
| S06A-CC-2710 | Block-03 -ACDB Installation | 2026-12-05 → 2026-10-18 (-48d) | 2026-12-06 → 2026-10-19 (-48d) | 34.7d → 99.8d |  | resources none → Weightage [205.81 h]; ACDB - Construction [1 NoS]; ACDC Manpower [40 h] |
| S06A-CC-2740 | Block-03 -HT Cable Terminations - IDT Side | 2026-12-05 → 2026-10-19 (-47d) | 2026-12-06 → 2026-10-20 (-47d) | 41.7d → 105.8d |  | resources none → Weightage [205.81 h]; ACDC Manpower [70 h] |
| S06A-CC-2670 | Block-03 -LT Panel Erection |  |  | 73.7d → 90.8d |  | resources none → Weightage [823.25 h]; LT Panel - Construction [16 NoS]; ACDC Manpower [180 h] |

| ID | Task | Start | Finish | Complete | Total float | Predecessors | Other |
| --- | --- | --- | --- | --- | --- | --- | --- |
| S06A-CC-2730 | Block-03 -NIFPS - Installation |  |  |  | 63.5d → 80.6d |  | resources none → Weightage [1080.51 h]; NIFPS - Construction [1 NoS]; ACDC Manpower [200 h] |
| S06A-CC-2610 | Block-03 -Cable Hanger - Structure & Messenger Wire Erection |  |  |  | 53.7d → 70.8d |  | resources none → Weightage [1543.59 h]; LT Cable - Hangers - Construction [1 Lot]; LT Cable - Support Structure - Construction [1 Lot]; LT Cable - Clamps - Construction [1 Lot]; LT Cable - Messenger wire - Construction [3.42 KM]; LT Cable - Fasteners - Construction [1 Lot]; ACDC Manpower [201 h] |
| S06A-CC-2590 | Block-03 -IDT Area - Gravel Filling | 2026-12-07 → 2026-11-01 (-36d) | 2026-12-12 → 2026-11-06 (-36d) |  | 34d → 87.6d |  | resources none → Weightage [308.72 h]; IDT Civil Manpower [100 h] |
| S06A-CC-2570 | Block-03 -IDT Area - Fencing | 2026-12-10 → 2026-11-02 (-38d) | 2026-12-15 → 2026-11-07 (-38d) |  | 32d → 87.6d |  | resources none → Weightage [617.43 h]; IDT - Fencing - Construction - Construction [1 NoS]; IDT Civil Manpower [150 h] |
| S06A-CC-2690 | Block-03 -Inverter Installation |  |  |  | 63.7d → 80.8d |  | resources none → Weightage [1440.68 h]; Invertor - Construction [47 NoS]; ACDC Manpower [280 h] |
| S06A-CC-2620 | Block-03 -LT Cable Laying |  |  |  | 53.7d → 70.8d |  | resources none → Weightage [11113.8 h]; LT Cable - Construction [9.33 KM]; ACDC Manpower [1554 h] |
| S06A-CC-2580 | Block-03 -IDT Area - Gate Installation | 2026-12-15 → 2026-11-07 (-38d) | 2026-12-16 → 2026-11-08 (-38d) |  | 32d → 87.6d |  | resources none → Weightage [308.72 h]; IDT - Gate - Construction [1 NoS]; IDT Civil Manpower [50 h] |
| S06A-CC-2750 | Block-03 -LT Cable Terminations - LT Panel To IDT | 2026-12-05 → 2026-11-18 (-17d) | 2026-12-11 → 2026-11-24 (-17d) |  | 36.7d → 70.8d |  | resources none → Weightage [1440.68 h]; ACDC Manpower [300 h] |
| S06A-CC-2760 | Block-03 -LT Cable Terminations - Inverter To LT Panel | 2026-12-05 → 2026-11-18 (-17d) | 2026-12-11 → 2026-11-24 (-17d) |  | 36.7d → 70.8d |  | resources none → Weightage [720.34 h]; ACDC Manpower [210 h] |
| 3 | **CONSTRUCTION-PV AREA-PRE COMMISSIONING** |  | 2026-12-20 → 2026-12-03 (-17d) |  |  |  |  |
| S06A-CC-2790 | Block-03 -HT Panel Testing |  |  |  | 80.7d → 97.8d |  | resources none → Weightage [102.91 h]; HT Panel Testing [20 h] |
| S06A-CC-2800 | Block-03 -LT Panel Testing |  |  |  | 73.7d → 90.8d |  | resources none → Weightage [205.81 h]; LT Panel Testing [40 h] |
| S06A-CC-2770 | Block-03 -IDT Filtration |  |  |  | 63.5d → 80.6d |  | resources none → Weightage [154.36 h]; IDT Filtration & Testing [30 h] |
| S06A-CC-2780 | Block-03 -IDT Testing |  |  |  | 63.5d → 80.6d |  | resources none → Weightage [102.91 h]; IDT Filtration & Testing [20 h] |
| S06A-CC-2810 | Block-03 -Inspection Offer To Asset Commissioning Team | 2026-12-12 → 2026-11-25 (-17d) | 2026-12-12 → 2026-11-25 (-17d) |  | 36.7d → 70.8d |  | resources none → Weightage [51.45 h] |
| S06A-CC-2820 | Block-03 -Punch Point Identification By Asset Commissioning Team | 2026-12-13 → 2026-11-26 (-17d) | 2026-12-15 → 2026-11-28 (-17d) |  | 36.7d → 70.8d |  | resources none → Weightage [308.72 h] |
| S06A-CC-2830 | Block-03 -Punch Point Rectification And Pre Charging Sign Off | 2026-12-16 → 2026-11-29 (-17d) | 2026-12-20 → 2026-12-03 (-17d) |  | 36.7d → 70.8d |  | resources none → Weightage [463.08 h] |
| 4 | **CONSTRUCTION-COMMISSIONING** | 2026-11-20 → 2026-11-12 (-8d) | 2027-01-15 → 2027-01-07 (-8d) |  |  |  |  |
| S06A-CC-2840 | Block-03 -CEA Application | 2026-11-20 → 2026-11-12 (-8d) | 2026-11-21 → 2026-11-13 (-8d) |  | 49d → 74.1d |  | resources none → Weightage [51.45 h] |
| S06A-CC-2850 | Block-03 -CEA Inspection | 2026-12-16 → 2026-11-21 (-25d) | 2026-12-17 → 2026-11-22 (-25d) |  | 32d → 74.1d |  | resources none → Weightage [51.45 h] |
| S06A-CC-2860 | Block-03 -CEA Compliance & Approval | 2026-12-17 → 2026-11-22 (-25d) | 2026-12-22 → 2026-11-27 (-25d) |  | 32d → 74.1d |  | resources none → Weightage [411.62 h] |
| S06A-CC-2870 | Block-03 -First Time Charging - Application | 2026-12-28 → 2026-12-20 (-8d) | 2026-12-29 → 2026-12-21 (-8d) |  | 26d → 51.1d |  | resources none → Weightage [51.45 h] |
| S06A-CC-2880 | Block-03 -First Time Charging - Approval | 2026-12-29 → 2026-12-21 (-8d) | 2026-12-31 → 2026-12-23 (-8d) |  | 26d → 51.1d |  | resources none → Weightage [308.72 h] |
| S06A-CC-2890 | Block-03 -First Time Charging | 2026-12-31 → 2026-12-23 (-8d) | 2027-01-01 → 2026-12-24 (-8d) |  | 26d → 51.1d |  | resources none → Weightage [102.91 h] |
| S06A-CC-2900 | Block-03 -Tracker Commissioning - SCADA | 2026-12-31 → 2026-12-23 (-8d) | 2027-01-08 → 2026-12-31 (-8d) |  | 31d → 56.1d |  | resources none → Weightage [1080.51 h] |
| S06A-CC-2910 | Block-03 -Robot Commissioning - SCADA | 2026-12-31 → 2026-12-23 (-8d) | 2027-01-12 → 2027-01-04 (-8d) |  | 27d → 52.1d |  | resources none → Weightage [6174.34 h] |
| S06A-CC-2920 | Block-03 -Trial Operation | 2027-01-07 → 2026-12-30 (-8d) | 2027-01-08 → 2026-12-31 (-8d) |  | 26d → 51.1d |  | resources none → Weightage [102.91 h] |
| S06A-CC-2930 | Block-03 -Trial Run Certificate | 2027-01-10 → 2027-01-02 (-8d) | 2027-01-11 → 2027-01-03 (-8d) |  | 26d → 51.1d |  | resources none → Weightage [51.45 h] |
| S06A-CC-2940 | Block-03 -COD | 2027-01-13 → 2027-01-05 (-8d) | 2027-01-15 → 2027-01-07 (-8d) |  | 26d → 51.1d |  | resources none → Weightage [360.17 h] |
| 4 | **BLOCK-04** |  | 2027-01-15 → 2027-01-07 (-8d) |  |  |  |  |
| 1 | **CONSTRUCTION-PV AREA-DC SIDE** | 2026-10-01 → 2026-09-18 (-13d) | 2027-01-01 → 2026-12-29 (-3d) |  |  |  |  |
| S06A-CC-2950 | Block-04 -Piling - MMS (Marking, Auguring & Concreting) | 2026-10-01 → 2026-09-18 A (-13d) | 2026-10-31 → 2026-10-25 (-6d) | 0% → 18% | 45.7d → 64.8d |  | resources none → Weightage [17288.2 h]; Piling Stub - MMS - Construction [5832 NoS]; Piling Manpower [2651 h] |
| S06A-CC-2960 | Block-04 -Pile Capping | 2026-10-09 → 2026-09-23 A (-16d) | 2026-11-07 → 2026-11-01 (-6d) | 0% → 8% | 56.7d → 79.8d |  | resources none → Weightage [8644.08 h]; Piling Manpower [1268 h] |
| S06A-CC-2970 | Block-04 -Piling - LT Cable Hanger System | 2026-10-12 → 2026-10-06 (-6d) | 2026-10-31 → 2026-10-25 (-6d) |  | 53.7d → 76.8d |  | resources none → Weightage [2058.11 h]; Piling Stub - LT Cable Hanger - Construction [572 NoS]; Piling Manpower [520 h] |
| S06A-CC-3000 | Block-04 -Array Earthing |  |  |  | 57.7d → 74.8d |  | resources none → Earthing - Construction [5.22 KM]; Weightage [4939.47 h]; ACDC Manpower [108 h] |
| S06A-CC-2980 | Block-04 -Piling - Inverters | 2026-10-16 → 2026-10-10 (-6d) | 2026-10-31 → 2026-10-25 (-6d) |  | 63.7d → 86.8d |  | resources none → Weightage [2469.74 h]; Piling Stub - Invertor - Construction [94 NoS]; Piling Manpower [470 h] |
| S06A-CC-3010 | Block-04 -MMS Erection - Torque Tube/Raftar | 2026-10-18 → 2026-10-16 (-2d) | 2026-11-14 → 2026-11-12 (-2d) |  | 45.7d → 64.8d |  | resources none → Weightage [59067.9 h]; MMS - Rafter - Construction [486 TBL]; FT Manpower [4860 h] |
| S06A-CC-3020 | Block-04 -MMS Erection - Transmission Shaft/Bracing | 2026-10-22 → 2026-10-20 (-2d) | 2026-11-18 → 2026-11-16 (-2d) |  | 49.7d → 68.8d |  | resources none → Weightage [14406.8 h]; MMS - Bracing - Construction [486 TBL]; FT Manpower [2430 h] |
| S06A-CC-3030 | Block-04 -MMS Erection - Purlin | 2026-10-22 → 2026-10-20 (-2d) | 2026-11-18 → 2026-11-16 (-2d) |  | 45.7d → 64.8d |  | resources none → Weightage [14406.8 h]; MMS - FT Purlin - Construction [486 TBL]; FT Manpower [2430 h] |
| S06A-CC-3040 | Block-04 -MMS - RFI Completion | 2026-10-26 → 2026-10-24 (-2d) | 2026-11-22 → 2026-11-20 (-2d) |  | 45.7d → 64.8d |  | resources none → Weightage [7203.4 h]; FT Manpower [1400 h] |
| S06A-CC-3050 | Block-04 -Module Installation | 2026-11-18 → 2026-11-10 (-8d) | 2026-12-28 → 2026-12-20 (-8d) |  | 26d → 51.1d |  | resources none → Weightage [56598.1 h]; Module - Construction [17 MWdc]; Module Manpower [8400 h] |
| S06A-CC-3070 | Block-04 -DC Cable Laying | 2026-11-19 → 2026-11-11 (-8d) | 2026-12-19 → 2026-12-11 (-8d) |  | 42d → 67.1d |  | resources none → Weightage [12348.7 h]; DC Cable - Construction [99 KM]; ACDC Manpower [2200 h] |
| S06A-CC-3060 | Block-04 -Module - RFI Completion | 2026-11-22 → 2026-11-14 (-8d) | 2027-01-01 → 2026-12-24 (-8d) |  | 32d → 57.1d |  | resources none → Weightage [4116.23 h]; Module Manpower [1200 h] |
| S06A-CC-2990 | Block-04 -Piling - Robotic Docking System | 2026-10-23 → 2026-11-20 (+28d) | 2026-11-01 → 2026-11-29 (+28d) |  | 68.7d → 57.8d |  | resources none → Piling Stub - Robot Docking - Construction [25 NoS]; Weightage [1543.59 h]; Piling Manpower [300 h] |
| S06A-CC-3080 | Block-04 -Module Interconnection & MC4 Termination | 2026-12-04 → 2026-11-26 (-8d) | 2026-12-29 → 2026-12-21 (-8d) |  | 34d → 59.1d |  | resources none → Weightage [7203.4 h]; MC4 Connector - Construction [3888 NoS]; ACDC Manpower [2592 h] |
| S06A-CC-3100 | Block-04 -Robotic Structure - Docking Station Installation | 2026-12-01 → 2026-11-30 (-1d) | 2026-12-10 → 2026-12-09 (-1d) |  | 39.7d → 57.8d |  | resources none → Weightage [1543.59 h]; Robot Structure - Docking - Construction [40 NoS]; Robot Installation Manpower [300 h] |
| S06A-CC-3110 | Block-04 -Robotic Structure - Reverse Station Installation | 2026-12-01 → 2026-11-30 (-1d) | 2026-12-10 → 2026-12-09 (-1d) |  | 47.7d → 65.8d |  | resources none → Weightage [1543.59 h]; Robot Structure - Reverse - Construction [40 NoS]; Robot Installation Manpower [300 h] |
| S06A-CC-3130 | Block-04 -Robot Installation | 2026-12-02 → 2026-11-30 (-2d) | 2026-12-31 → 2026-12-29 (-2d) |  | 38.7d → 57.8d |  | resources none → Weightage [3087.17 h]; Robots - Construction [40 NoS]; Robot Installation Manpower [600 h] |
| S06A-CC-3090 | Block-04 -VOC Testing | 2026-12-09 → 2026-12-01 (-8d) | 2026-12-31 → 2026-12-23 (-8d) |  | 34d → 59.1d |  | resources none → Weightage [617.43 h]; ACDC Manpower [220 h] |
| S06A-CC-3120 | Block-04 -Robotic Structure - Bridges Installation | 2026-12-10 → 2026-12-02 (-8d) | 2026-12-30 → 2026-12-22 (-8d) |  | 46d → 71.1d |  | resources none → Weightage [5145.28 h]; Robot Structure - Bridges - Construction [300 NoS]; Robot Installation Manpower [2200 h] |
| 2 | **CONSTRUCTION-PV AREA-AC SIDE** |  | 2026-12-16 → 2026-11-18 (-28d) |  |  |  |  |
| S06A-CC-3160 | Block-04 -IDT Foundation Up To Rail |  |  |  | 62.7d → 79.8d |  | resources none → Weightage [7717.93 h]; IDT Station - Rail - Construction [1 NoS]; IDT Station - Foundation Bolt & Inserts - Construction [1 NoS]; IDT Station - Rebar - Construction [1 NoS]; IDT Civil Manpower [1470 h] |
| S06A-CC-3170 | Block-04 -HT & LT Station - Slab |  | 2026-10-07 → 2026-09-25 A (-12d) | 62% → 100% | 73.7d → none |  | resources none → Weightage [5402.55 h]; IDT Station - Foundation Bolt & Inserts - Construction [1 NoS]; IDT Station - Rebar - Construction [1 NoS]; IDT Civil Manpower [1200 h] |
| S06A-CC-3300 | Block-04 -HT Cable Laying |  |  |  | 98.7d → 115.8d |  | resources none → Weightage [2881.36 h]; HT Cable - Construction [6.38 KM]; ACDC Manpower [967 h] |
| S06A-CC-3180 | Block-04 -HT & LT Station - Shed Installation | 2026-10-11 → 2026-10-05 (-6d) | 2026-10-15 → 2026-10-09 (-6d) |  | 73.7d → 96.8d |  | resources none → Weightage [1080.51 h]; IDT Shed - Construction [1 NoS]; IDT Civil Manpower [250 h] |
| S06A-CC-3270 | Block-04 -HT LT Station - Staircase | 2026-10-11 → 2026-10-05 (-6d) | 2026-10-12 → 2026-10-06 (-6d) |  | 96.7d → 119.8d |  | resources none → Weightage [205.81 h]; IDT Civil Manpower [40 h] |
| S06A-CC-3200 | Block-04 -IDT Foundation - Grade Slab Casting & Dyke Wall |  |  |  | 85.7d → 102.8d |  | resources none → Weightage [4630.76 h]; IDT Station - Rebar - Construction [1 NoS]; IDT Civil Manpower [990 h] |
| S06A-CC-3210 | Block-04 -NIFPS Foundation |  |  |  | 62.7d → 79.8d |  | resources none → Weightage [1029.06 h]; IDT Station - Rebar - Construction [1 NoS]; IDT Civil Manpower [300 h] |
| S06A-CC-3220 | Block-04 -BOT Foundation |  |  |  | 84.7d → 101.8d |  | resources none → Weightage [3858.96 h]; IDT Station - Rebar - Construction [1 NoS]; IDT Civil Manpower [800 h] |
| S06A-CC-3230 | Block-04 -Aux Transformer Foundation |  |  |  | 83.7d → 100.8d |  | resources none → Weightage [1029.06 h]; IDT Station - Rebar - Construction [1 NoS]; IDT Civil Manpower [250 h] |
| S06A-CC-3350 | Block-04 -IDT Erection |  |  |  | 72.7d → 89.8d |  | resources none → Weightage [1543.59 h]; IDT - Construction [1 NoS]; ACDC Manpower [350 h] |
| S06A-CC-3190 | Block-04 -HT & LT Station - Sheeting Installation | 2026-10-16 → 2026-10-10 (-6d) | 2026-10-17 → 2026-10-11 (-6d) |  | 73.7d → 96.8d |  | resources none → Weightage [1080.51 h]; IDT Sheeting - Construction [1 NoS]; IDT Civil Manpower [240 h] |
| S06A-CC-3310 | Block-04 -FO Cable Laying | 2026-10-01 → 2026-10-10 (+9d) | 2026-10-08 → 2026-10-17 (+9d) |  | 98.7d → 107.1d |  | resources none → Weightage [3601.7 h]; FO Cable - Construction [4 KM]; ACDC Manpower [700 h] |
| S06A-CC-3320 | Block-04 -Control Cable Laying | 2026-10-30 → 2026-10-12 (-18d) | 2026-11-04 → 2026-10-16 (-19d) |  | 67d → 102.8d |  | resources none → Weightage [308.72 h]; Control Cable - Construction [1 KM]; ACDC Manpower [100 h] |
| S06A-CC-3330 | Block-04 -HT Panel Erection | 2026-10-18 → 2026-10-12 (-6d) | 2026-10-18 → 2026-10-12 (-6d) |  | 80.7d → 103.8d |  | resources none → Weightage [308.72 h]; HT Panel - Construction [1 NoS]; ACDC Manpower [60 h] |
| S06A-CC-3370 | Block-04 -SCADA & SACU Installation | 2026-10-30 → 2026-10-12 (-18d) | 2026-11-04 → 2026-10-16 (-19d) |  | 67d → 102.8d |  | resources none → Weightage [205.81 h]; SCADA & SACU - Construction [1 NoS]; ACDC Manpower [50 h] |
| S06A-CC-3380 | Block-04 -ACDB Installation | 2026-12-05 → 2026-10-12 (-54d) | 2026-12-06 → 2026-10-13 (-54d) |  | 34.7d → 105.8d |  | resources none → Weightage [205.81 h]; ACDB - Construction [1 NoS]; ACDC Manpower [40 h] |
| S06A-CC-3340 | Block-04 -LT Panel Erection | 2026-10-20 → 2026-10-14 (-6d) | 2026-10-25 → 2026-10-19 (-6d) |  | 73.7d → 96.8d |  | resources none → Weightage [823.25 h]; LT Panel - Construction [16 NoS]; ACDC Manpower [180 h] |
| S06A-CC-3390 | Block-04 -Aux Transformer - Installation | 2026-12-06 → 2026-10-16 (-51d) | 2026-12-10 → 2026-10-19 (-52d) |  | 32d → 100.8d | S06A-PR-6610 SS+2d, S06A-CC-3230 FS+3d → S06A-PR-6610 SS+8d, S06A-CC-3230 FS+3d | resources none → Weightage [411.62 h]; Aux Transformer - Construction [1 NoS]; ACDC Manpower [80 h] |
| S06A-CC-3410 | Block-04 -HT Cable Terminations - IDT Side | 2026-12-05 → 2026-10-17 (-49d) | 2026-12-06 → 2026-10-19 (-48d) |  | 41.7d → 107.1d |  | resources none → Weightage [205.81 h]; ACDC Manpower [70 h] |

| ID | Task | Start | Finish | Complete | Total float | Predecessors | Other |
| --- | --- | --- | --- | --- | --- | --- | --- |
| S06A-CC-3400 | Block-04 -NIFPS - Installation |  |  |  | 62.7d → 79.8d |  | resources none → Weightage [1080.51 h]; NIFPS - Construction [1 NoS]; ACDC Manpower [200 h] |
| S06A-CC-3280 | Block-04 -Cable Hanger - Structure & Messenger Wire Erection | 2026-10-31 → 2026-10-25 (-6d) | 2026-11-04 → 2026-10-29 (-6d) |  | 53.7d → 76.8d |  | resources none → Weightage [1543.59 h]; LT Cable - Hangers - Construction [1 Lot]; LT Cable - Support Structure - Construction [1 Lot]; LT Cable - Clamps - Construction [1 Lot]; LT Cable - Messenger wire - Construction [3.42 KM]; LT Cable - Fasteners - Construction [1 Lot]; ACDC Manpower [201 h] |
| S06A-CC-3360 | Block-04 -Inverter Installation | 2026-11-03 → 2026-10-28 (-6d) | 2026-11-09 → 2026-11-03 (-6d) |  | 63.7d → 86.8d |  | resources none → Weightage [1440.68 h]; Invertor - Construction [47 NoS]; ACDC Manpower [280 h] |
| S06A-CC-3290 | Block-04 -LT Cable Laying | 2026-11-04 → 2026-10-29 (-6d) | 2026-11-23 → 2026-11-17 (-6d) |  | 53.7d → 76.8d |  | resources none → Weightage [11113.8 h]; LT Cable - Construction [9.74 KM]; ACDC Manpower [1623 h] |
| S06A-CC-3260 | Block-04 -IDT Area - Gravel Filling | 2026-12-07 → 2026-11-02 (-35d) | 2026-12-12 → 2026-11-06 (-36d) |  | 34d → 86.8d |  | resources none → Weightage [308.72 h]; IDT Civil Manpower [100 h] |
| S06A-CC-3240 | Block-04 -IDT Area - Fencing | 2026-12-10 → 2026-11-03 (-37d) | 2026-12-15 → 2026-11-07 (-38d) |  | 32d → 86.8d |  | resources none → Weightage [617.43 h]; IDT - Fencing - Construction - Construction [1 NoS]; IDT Civil Manpower [150 h] |
| S06A-CC-3250 | Block-04 -IDT Area - Gate Installation | 2026-12-15 → 2026-11-08 (-37d) | 2026-12-16 → 2026-11-08 (-38d) |  | 32d → 86.8d |  | resources none → Weightage [308.72 h]; IDT - Gate - Construction [1 NoS]; IDT Civil Manpower [50 h] |
| S06A-CC-3140 | Block-04 -LT Cable Terminations - LT Panel To IDT | 2026-12-05 → 2026-11-12 (-23d) | 2026-12-11 → 2026-11-18 (-23d) |  | 36.7d → 76.8d |  | resources none → Weightage [1440.68 h]; ACDC Manpower [300 h] |
| S06A-CC-3150 | Block-04 -LT Cable Terminations - Inverter To LT Panel | 2026-12-05 → 2026-11-12 (-23d) | 2026-12-11 → 2026-11-18 (-23d) |  | 36.7d → 76.8d |  | resources none → Weightage [720.34 h]; ACDC Manpower [210 h] |
| 3 | **CONSTRUCTION-PV AREA-PRE COMMISSIONING** | 2026-10-19 → 2026-10-13 (-6d) | 2026-12-20 → 2026-11-27 (-23d) |  |  |  |  |
| S06A-CC-3440 | Block-04 -HT Panel Testing | 2026-10-19 → 2026-10-13 (-6d) | 2026-10-19 → 2026-10-13 (-6d) |  | 80.7d → 103.8d |  | resources none → Weightage [102.91 h]; HT Panel Testing [20 h] |
| S06A-CC-3450 | Block-04 -LT Panel Testing | 2026-10-26 → 2026-10-20 (-6d) | 2026-10-26 → 2026-10-20 (-6d) |  | 73.7d → 96.8d |  | resources none → Weightage [205.81 h]; LT Panel Testing [40 h] |
| S06A-CC-3420 | Block-04 -IDT Filtration |  |  |  | 62.7d → 79.8d |  | resources none → Weightage [154.36 h]; IDT Filtration & Testing [30 h] |
| S06A-CC-3430 | Block-04 -IDT Testing |  |  |  | 62.7d → 79.8d |  | resources none → Weightage [102.91 h]; IDT Filtration & Testing [20 h] |
| S06A-CC-3460 | Block-04 -Inspection Offer To Asset Commissioning Team | 2026-12-12 → 2026-11-19 (-23d) | 2026-12-12 → 2026-11-19 (-23d) |  | 36.7d → 76.8d |  | resources none → Weightage [51.45 h] |
| S06A-CC-3470 | Block-04 -Punch Point Identification By Asset Commissioning Team | 2026-12-13 → 2026-11-20 (-23d) | 2026-12-15 → 2026-11-22 (-23d) |  | 36.7d → 76.8d |  | resources none → Weightage [308.72 h] |
| S06A-CC-3480 | Block-04 -Punch Point Rectification And Pre Charging Sign Off | 2026-12-16 → 2026-11-23 (-23d) | 2026-12-20 → 2026-11-27 (-23d) |  | 36.7d → 76.8d |  | resources none → Weightage [463.08 h] |
| 4 | **CONSTRUCTION-COMMISSIONING** | 2026-11-20 → 2026-11-12 (-8d) | 2027-01-15 → 2027-01-07 (-8d) |  |  |  |  |
| S06A-CC-3490 | Block-04 -CEA Application | 2026-11-20 → 2026-11-12 (-8d) | 2026-11-21 → 2026-11-13 (-8d) |  | 49d → 74.1d |  | resources none → Weightage [51.45 h] |
| S06A-CC-3500 | Block-04 -CEA Inspection | 2026-12-16 → 2026-11-21 (-25d) | 2026-12-17 → 2026-11-22 (-25d) |  | 32d → 74.1d |  | resources none → Weightage [51.45 h] |
| S06A-CC-3510 | Block-04 -CEA Compliance & Approval | 2026-12-17 → 2026-11-22 (-25d) | 2026-12-22 → 2026-11-27 (-25d) |  | 32d → 74.1d |  | resources none → Weightage [411.62 h] |
| S06A-CC-3520 | Block-04 -First Time Charging - Application | 2026-12-28 → 2026-12-20 (-8d) | 2026-12-29 → 2026-12-21 (-8d) |  | 26d → 51.1d |  | resources none → Weightage [51.45 h] |
| S06A-CC-3530 | Block-04 -First Time Charging - Approval | 2026-12-29 → 2026-12-21 (-8d) | 2026-12-31 → 2026-12-23 (-8d) |  | 26d → 51.1d |  | resources none → Weightage [308.72 h] |
| S06A-CC-3540 | Block-04 -First Time Charging | 2026-12-31 → 2026-12-23 (-8d) | 2027-01-01 → 2026-12-24 (-8d) |  | 26d → 51.1d |  | resources none → Weightage [102.91 h] |
| S06A-CC-3550 | Block-04 -Tracker Commissioning - SCADA | 2026-12-31 → 2026-12-23 (-8d) | 2027-01-08 → 2026-12-31 (-8d) |  | 31d → 56.1d |  | resources none → Weightage [1080.51 h] |
| S06A-CC-3560 | Block-04 -Robot Commissioning - SCADA | 2026-12-31 → 2026-12-23 (-8d) | 2027-01-12 → 2027-01-04 (-8d) |  | 27d → 52.1d |  | resources none → Weightage [6174.34 h] |
| S06A-CC-3570 | Block-04 -Trial Operation | 2027-01-07 → 2026-12-30 (-8d) | 2027-01-08 → 2026-12-31 (-8d) |  | 26d → 51.1d |  | resources none → Weightage [102.91 h] |
| S06A-CC-3580 | Block-04 -Trial Run Certificate | 2027-01-10 → 2027-01-02 (-8d) | 2027-01-11 → 2027-01-03 (-8d) |  | 26d → 51.1d |  | resources none → Weightage [51.45 h] |
| S06A-CC-3590 | Block-04 -COD | 2027-01-13 → 2027-01-05 (-8d) | 2027-01-15 → 2027-01-07 (-8d) |  | 26d → 51.1d |  | resources none → Weightage [360.17 h] |
| 2 | **PHASE-2 (50MW)** |  | 2027-01-24 → 2027-01-16 (-8d) |  |  |  |  |
| 1 | **BLOCK-05** |  | 2027-01-24 → 2027-01-16 (-8d) |  |  |  |  |
| 1 | **CONSTRUCTION-PV AREA-DC SIDE** | 2026-10-01 → 2026-09-12 (-19d) | 2027-01-10 → 2027-01-07 (-3d) |  |  |  |  |
| S06A-CC-3600 | Block-05 -Piling - MMS (Marking, Auguring & Concreting) | 2026-10-01 → 2026-09-12 A (-19d) | 2026-10-30 → 2026-10-27 (-3d) | 0% → 13% | 47.7d → 65.8d |  | resources none → Weightage [17288.2 h]; Piling Stub - MMS - Construction [5832 NoS]; Piling Manpower [2651 h] |
| S06A-CC-3610 | Block-05 -Pile Capping | 2026-10-08 → 2026-09-24 A (-14d) | 2026-11-06 → 2026-11-02 (-4d) | 0% → 7% | 58.7d → 79.8d |  | resources none → Weightage [8644.08 h]; Piling Manpower [1268 h] |
| S06A-CC-3620 | Block-05 -Piling - LT Cable Hanger System | 2026-10-11 → 2026-10-08 (-3d) | 2026-10-30 → 2026-10-27 (-3d) |  | 54.7d → 74.8d |  | resources none → Weightage [2058.11 h]; Piling Stub - LT Cable Hanger - Construction [663 NoS]; Piling Manpower [603 h] |
| S06A-CC-3650 | Block-05 -Array Earthing |  |  |  | 59.7d → 76.8d |  | resources none → Earthing - Construction [5.19 KM]; Weightage [4939.47 h]; ACDC Manpower [108 h] |
| S06A-CC-3630 | Block-05 -Piling - Inverters | 2026-10-16 → 2026-10-13 (-3d) | 2026-10-30 → 2026-10-27 (-3d) |  | 64.7d → 84.8d |  | resources none → Weightage [2469.74 h]; Piling Stub - Invertor - Construction [94 NoS]; Piling Manpower [470 h] |
| S06A-CC-3660 | Block-05 -MMS Erection - Torque Tube/Raftar | 2026-10-17 → 2026-10-16 (-1d) | 2026-11-13 → 2026-11-12 (-1d) |  | 47.7d → 65.8d |  | resources none → Weightage [59067.9 h]; MMS - Rafter - Construction [486 TBL]; FT Manpower [4860 h] |
| S06A-CC-3670 | Block-05 -MMS Erection - Transmission Shaft/Bracing | 2026-10-21 → 2026-10-20 (-1d) | 2026-11-17 → 2026-11-16 (-1d) |  | 51.7d → 69.8d |  | resources none → Weightage [14406.8 h]; MMS - Bracing - Construction [486 TBL]; FT Manpower [2430 h] |
| S06A-CC-3680 | Block-05 -MMS Erection - Purlin | 2026-10-21 → 2026-10-20 (-1d) | 2026-11-17 → 2026-11-16 (-1d) |  | 47.7d → 65.8d |  | resources none → Weightage [14406.8 h]; MMS - FT Purlin - Construction [486 TBL]; FT Manpower [2430 h] |
| S06A-CC-3690 | Block-05 -MMS - RFI Completion | 2026-10-25 → 2026-10-24 (-1d) | 2026-11-21 → 2026-11-20 (-1d) |  | 47.7d → 65.8d |  | resources none → Weightage [7203.4 h]; FT Manpower [1400 h] |
| S06A-CC-3700 | Block-05 -Module Installation | 2026-11-29 → 2026-11-21 (-8d) | 2027-01-06 → 2026-12-29 (-8d) |  | 16.7d → 41.8d |  | resources none → Weightage [56598.1 h]; Module - Construction [17 MWdc]; Module Manpower [8400 h] |
| S06A-CC-3720 | Block-05 -DC Cable Laying | 2026-11-30 → 2026-11-22 (-8d) | 2026-12-29 → 2026-12-21 (-8d) |  | 31.7d → 56.8d |  | resources none → Weightage [12348.7 h]; DC Cable - Construction [103 KM]; ACDC Manpower [2289 h] |
| S06A-CC-3710 | Block-05 -Module - RFI Completion | 2026-12-02 → 2026-11-24 (-8d) | 2027-01-10 → 2027-01-02 (-8d) |  | 22.7d → 47.8d |  | resources none → Weightage [4116.23 h]; Module Manpower [1200 h] |
| S06A-CC-3640 | Block-05 -Piling - Robotic Docking System | 2026-10-28 → 2026-11-25 (+28d) | 2026-11-06 → 2026-12-04 (+28d) |  | 59.7d → 48.8d |  | resources none → Piling Stub - Robot Docking - Construction [25 NoS]; Weightage [1543.59 h]; Piling Manpower [300 h] |
| S06A-CC-3750 | Block-05 -Robotic Structure - Docking Station Installation | 2026-12-06 → 2026-12-05 (-1d) | 2026-12-15 → 2026-12-14 (-1d) |  | 30.7d → 48.8d |  | resources none → Weightage [1543.59 h]; Robot Structure - Docking - Construction [40 NoS]; Robot Installation Manpower [300 h] |
| S06A-CC-3760 | Block-05 -Robotic Structure - Reverse Station Installation | 2026-12-06 → 2026-12-05 (-1d) | 2026-12-15 → 2026-12-14 (-1d) |  | 42.7d → 60.8d |  | resources none → Weightage [1543.59 h]; Robot Structure - Reverse - Construction [40 NoS]; Robot Installation Manpower [300 h] |
| S06A-CC-3730 | Block-05 -Module Interconnection & MC4 Termination | 2026-12-14 → 2026-12-06 (-8d) | 2027-01-07 → 2026-12-30 (-8d) |  | 24.7d → 49.8d |  | resources none → Weightage [7203.4 h]; MC4 Connector - Construction [3888 NoS]; ACDC Manpower [2592 h] |
| S06A-CC-3780 | Block-05 -Robot Installation | 2026-12-10 → 2026-12-09 (-1d) | 2027-01-08 → 2027-01-07 (-1d) |  | 30.7d → 48.8d |  | resources none → Weightage [3087.17 h]; Robots - Construction [40 NoS]; Robot Installation Manpower [600 h] |
| S06A-CC-3740 | Block-05 -VOC Testing | 2026-12-19 → 2026-12-11 (-8d) | 2027-01-09 → 2027-01-01 (-8d) |  | 24.7d → 49.8d |  | resources none → Weightage [617.43 h]; ACDC Manpower [220 h] |
| S06A-CC-3770 | Block-05 -Robotic Structure - Bridges Installation | 2026-12-20 → 2026-12-12 (-8d) | 2027-01-08 → 2026-12-31 (-8d) |  | 36.7d → 61.8d |  | resources none → Weightage [5145.28 h]; Robot Structure - Bridges - Construction [300 NoS]; Robot Installation Manpower [2200 h] |
| 2 | **CONSTRUCTION-PV AREA-AC SIDE** |  | 2026-12-20 → 2026-11-20 (-30d) |  |  |  |  |
| S06A-CC-3790 | Block-05 -IDT Foundation Up To Rail |  |  |  |  |  | resources none → Weightage [7717.93 h]; IDT Station - Rail - Construction [1 NoS]; IDT Station - Foundation Bolt & Inserts - Construction [1 NoS]; IDT Station - Rebar - Construction [1 NoS]; IDT Civil Manpower [1470 h] |
| S06A-CC-3800 | Block-05 -HT & LT Station - Slab |  |  |  |  |  | resources none → Weightage [5402.55 h]; IDT Station - Foundation Bolt & Inserts - Construction [1 NoS]; IDT Station - Rebar - Construction [1 NoS]; IDT Civil Manpower [1200 h] |
| S06A-CC-3830 | Block-05 -IDT Foundation - Grade Slab Casting & Dyke Wall |  | 2026-10-03 → 2026-08-26 A (-38d) | 80% → 100% | 97.7d → none |  | resources none → Weightage [4630.76 h]; IDT Station - Rebar - Construction [1 NoS]; IDT Civil Manpower [990 h] |
| S06A-CC-3850 | Block-05 -BOT Foundation |  |  |  | 89.7d → 106.8d |  | resources none → Weightage [3858.96 h]; IDT Station - Rebar - Construction [1 NoS]; IDT Civil Manpower [800 h] |
| S06A-CC-3840 | Block-05 -NIFPS Foundation |  |  |  | 66.7d → 83.8d |  | resources none → Weightage [1029.06 h]; IDT Station - Rebar - Construction [1 NoS]; IDT Civil Manpower [300 h] |
| S06A-CC-3860 | Block-05 -Aux Transformer Foundation |  |  |  | 87.7d → 104.8d |  | resources none → Weightage [1029.06 h]; IDT Station - Rebar - Construction [1 NoS]; IDT Civil Manpower [250 h] |
| S06A-CC-3900 | Block-05 -HT LT Station - Staircase |  |  |  | 102.7d → 119.8d |  | resources none → Weightage [205.81 h]; IDT Civil Manpower [40 h] |
| S06A-CC-3810 | Block-05 -HT & LT Station - Shed Installation |  |  |  | 78.7d → 95.8d |  | resources none → Weightage [1080.51 h]; IDT Shed - Construction [1 NoS]; IDT Civil Manpower [250 h] |
| S06A-CC-3930 | Block-05 -HT Cable Laying | 2026-10-01 → 2026-10-06 (+5d) | 2026-10-08 → 2026-10-12 (+4d) |  | 98.7d → 111.8d |  | resources none → Weightage [2881.36 h]; HT Cable - Construction [6.79 KM]; ACDC Manpower [1029 h] |
| S06A-CC-3940 | Block-05 -FO Cable Laying | 2026-10-01 → 2026-10-06 (+5d) | 2026-10-08 → 2026-10-12 (+4d) |  | 98.7d → 111.8d |  | resources none → Weightage [3601.7 h]; FO Cable - Construction [4 KM]; ACDC Manpower [700 h] |
| S06A-CC-3820 | Block-05 -HT & LT Station - Sheeting Installation |  |  |  | 78.7d → 95.8d |  | resources none → Weightage [1080.51 h]; IDT Sheeting - Construction [1 NoS]; IDT Civil Manpower [240 h] |
| S06A-CC-3950 | Block-05 -Control Cable Laying | 2026-11-04 → 2026-10-12 (-23d) | 2026-11-09 → 2026-10-16 (-24d) |  | 61d → 101.8d |  | resources none → Weightage [308.72 h]; Control Cable - Construction [1 KM]; ACDC Manpower [100 h] |
| S06A-CC-3960 | Block-05 -HT Panel Erection | 2026-10-23 → 2026-10-12 (-11d) | 2026-10-23 → 2026-10-12 (-11d) |  | 74.7d → 102.8d |  | resources none → Weightage [308.72 h]; HT Panel - Construction [1 NoS]; ACDC Manpower [60 h] |
| S06A-CC-4000 | Block-05 -SCADA & SACU Installation | 2026-11-04 → 2026-10-12 (-23d) | 2026-11-09 → 2026-10-16 (-24d) |  | 61d → 101.8d |  | resources none → Weightage [205.81 h]; SCADA & SACU - Construction [1 NoS]; ACDC Manpower [50 h] |
| S06A-CC-4010 | Block-05 -ACDB Installation | 2026-12-11 → 2026-10-12 (-60d) | 2026-12-12 → 2026-10-13 (-60d) |  | 28.7d → 105.8d |  | resources none → Weightage [205.81 h]; ACDB - Construction [1 NoS]; ACDC Manpower [40 h] |
| S06A-CC-3970 | Block-05 -LT Panel Erection | 2026-10-21 → 2026-10-14 (-7d) | 2026-10-26 → 2026-10-19 (-7d) |  | 71.7d → 95.8d |  | resources none → Weightage [823.25 h]; LT Panel - Construction [16 NoS]; ACDC Manpower [180 h] |
| S06A-CC-4020 | Block-05 -Aux Transformer - Installation | 2026-12-11 → 2026-10-15 (-57d) | 2026-12-14 → 2026-10-19 (-56d) |  | 26.7d → 100.1d | S06A-CC-3860 FS+3d, S06A-PR-6630 SS → S06A-CC-3860 FS+3d, S06A-PR-6630 SS+10d | resources none → Weightage [411.62 h]; Aux Transformer - Construction [1 NoS]; ACDC Manpower [80 h] |
| S06A-CC-3980 | Block-05 -IDT Erection | 2026-10-01 → 2026-10-26 (+25d) | 2026-10-06 → 2026-10-30 (+24d) |  | 77.7d → 70.8d |  | resources none → Weightage [1543.59 h]; IDT - Construction [1 NoS]; ACDC Manpower [350 h] |

| ID | Task | Start | Finish | Complete | Total float | Predecessors | Other |
| --- | --- | --- | --- | --- | --- | --- | --- |
| S06A-CC-3910 | Block-05 -Cable Hanger - Structure & Messenger Wire Erection | 2026-10-30 → 2026-10-27 (-3d) | 2026-11-03 → 2026-10-31 (-3d) |  | 54.7d → 74.8d |  | resources none → Weightage [1543.59 h]; LT Cable - Hangers - Construction [1 Lot]; LT Cable - Support Structure - Construction [1 Lot]; LT Cable - Clamps - Construction [1 Lot]; LT Cable - Messenger wire - Construction [3.5 KM]; LT Cable - Fasteners - Construction [1 Lot]; ACDC Manpower [206 h] |
| S06A-CC-3990 | Block-05 -Inverter Installation | 2026-11-02 → 2026-10-30 (-3d) | 2026-11-08 → 2026-11-05 (-3d) |  | 64.7d → 84.8d |  | resources none → Weightage [1440.68 h]; Invertor - Construction [47 NoS]; ACDC Manpower [280 h] |
| S06A-CC-3920 | Block-05 -LT Cable Laying | 2026-11-03 → 2026-10-31 (-3d) | 2026-11-22 → 2026-11-19 (-3d) |  | 54.7d → 74.8d |  | resources none → Weightage [11113.8 h]; LT Cable - Construction [9.47 KM]; ACDC Manpower [1578 h] |
| S06A-CC-4030 | Block-05 -NIFPS - Installation | 2026-10-18 → 2026-10-31 (+13d) | 2026-10-27 → 2026-11-09 (+13d) |  | 66.7d → 70.8d |  | resources none → Weightage [1080.51 h]; NIFPS - Construction [1 NoS]; ACDC Manpower [200 h] |
| S06A-CC-4040 | Block-05 -HT Cable Terminations - IDT Side | 2026-12-11 → 2026-10-31 (-41d) | 2026-12-12 → 2026-11-01 (-41d) |  | 35.7d → 93.8d |  | resources none → Weightage [205.81 h]; ACDC Manpower [70 h] |
| S06A-CC-3890 | Block-05 -IDT Area - Gravel Filling | 2026-12-12 → 2026-11-10 (-32d) | 2026-12-16 → 2026-11-14 (-32d) |  | 28.7d → 77.8d |  | resources none → Weightage [308.72 h]; IDT Civil Manpower [100 h] |
| S06A-CC-3870 | Block-05 -IDT Area - Fencing | 2026-12-15 → 2026-11-11 (-34d) | 2026-12-19 → 2026-11-15 (-34d) |  | 26.7d → 77.8d |  | resources none → Weightage [617.43 h]; IDT - Fencing - Construction - Construction [1 NoS]; IDT Civil Manpower [150 h] |
| S06A-CC-4050 | Block-05 -LT Cable Terminations - LT Panel To IDT | 2026-12-11 → 2026-11-14 (-27d) | 2026-12-17 → 2026-11-20 (-27d) |  | 30.7d → 74.8d |  | resources none → Weightage [1440.68 h]; ACDC Manpower [300 h] |
| S06A-CC-4060 | Block-05 -LT Cable Terminations - Inverter To LT Panel | 2026-12-11 → 2026-11-14 (-27d) | 2026-12-17 → 2026-11-20 (-27d) |  | 30.7d → 74.8d |  | resources none → Weightage [720.34 h]; ACDC Manpower [210 h] |
| S06A-CC-3880 | Block-05 -IDT Area - Gate Installation | 2026-12-20 → 2026-11-16 (-34d) | 2026-12-20 → 2026-11-16 (-34d) |  | 26.7d → 77.8d |  | resources none → Weightage [308.72 h]; IDT - Gate - Construction [1 NoS]; IDT Civil Manpower [50 h] |
| 3 | **CONSTRUCTION-PV AREA-PRE COMMISSIONING** | 2026-10-24 → 2026-10-13 (-11d) | 2026-12-26 → 2026-11-29 (-27d) |  |  |  |  |
| S06A-CC-4090 | Block-05 -HT Panel Testing | 2026-10-24 → 2026-10-13 (-11d) | 2026-10-24 → 2026-10-13 (-11d) |  | 74.7d → 102.8d |  | resources none → Weightage [102.91 h]; HT Panel Testing [20 h] |
| S06A-CC-4100 | Block-05 -LT Panel Testing | 2026-10-27 → 2026-10-20 (-7d) | 2026-10-27 → 2026-10-20 (-7d) |  | 71.7d → 95.8d |  | resources none → Weightage [205.81 h]; LT Panel Testing [40 h] |
| S06A-CC-4070 | Block-05 -IDT Filtration | 2026-10-28 → 2026-11-10 (+13d) | 2026-10-30 → 2026-11-12 (+13d) |  | 66.7d → 70.8d |  | resources none → Weightage [154.36 h]; IDT Filtration & Testing [30 h] |
| S06A-CC-4080 | Block-05 -IDT Testing | 2026-10-31 → 2026-11-13 (+13d) | 2026-11-01 → 2026-11-14 (+13d) |  | 66.7d → 70.8d |  | resources none → Weightage [102.91 h]; IDT Filtration & Testing [20 h] |
| S06A-CC-4110 | Block-05 -Inspection Offer To Asset Commissioning Team | 2026-12-18 → 2026-11-21 (-27d) | 2026-12-18 → 2026-11-21 (-27d) |  | 30.7d → 74.8d |  | resources none → Weightage [51.45 h] |
| S06A-CC-4120 | Block-05 -Punch Point Identification By Asset Commissioning Team | 2026-12-19 → 2026-11-22 (-27d) | 2026-12-21 → 2026-11-24 (-27d) |  | 30.7d → 74.8d |  | resources none → Weightage [308.72 h] |
| S06A-CC-4130 | Block-05 -Punch Point Rectification And Pre Charging Sign Off | 2026-12-22 → 2026-11-25 (-27d) | 2026-12-26 → 2026-11-29 (-27d) |  | 30.7d → 74.8d |  | resources none → Weightage [463.08 h] |
| 4 | **CONSTRUCTION-COMMISSIONING** | 2026-12-01 → 2026-11-23 (-8d) | 2027-01-24 → 2027-01-16 (-8d) |  |  |  |  |
| S06A-CC-4140 | Block-05 -CEA Application | 2026-12-01 → 2026-11-23 (-8d) | 2026-12-02 → 2026-11-24 (-8d) |  | 37d → 62.1d |  | resources none → Weightage [51.45 h] |
| S06A-CC-4150 | Block-05 -CEA Inspection | 2026-12-21 → 2026-12-02 (-19d) | 2026-12-21 → 2026-12-03 (-18d) |  | 26.7d → 62.1d |  | resources none → Weightage [51.45 h] |
| S06A-CC-4160 | Block-05 -CEA Compliance & Approval | 2026-12-23 → 2026-12-04 (-19d) | 2026-12-27 → 2026-12-09 (-18d) |  | 26.7d → 62.1d |  | resources none → Weightage [411.62 h] |
| S06A-CC-4170 | Block-05 -First Time Charging - Application | 2027-01-07 → 2026-12-30 (-8d) | 2027-01-07 → 2026-12-30 (-8d) |  | 16.7d → 41.8d |  | resources none → Weightage [51.45 h] |
| S06A-CC-4180 | Block-05 -First Time Charging - Approval | 2027-01-08 → 2026-12-31 (-8d) | 2027-01-09 → 2027-01-01 (-8d) |  | 16.7d → 41.8d |  | resources none → Weightage [308.72 h] |
| S06A-CC-4190 | Block-05 -First Time Charging | 2027-01-10 → 2027-01-02 (-8d) | 2027-01-10 → 2027-01-02 (-8d) |  | 16.7d → 41.8d |  | resources none → Weightage [102.91 h] |
| S06A-CC-4200 | Block-05 -Tracker Commissioning - SCADA | 2027-01-10 → 2027-01-02 (-8d) | 2027-01-17 → 2027-01-09 (-8d) |  | 21.7d → 46.8d |  | resources none → Weightage [1080.51 h] |
| S06A-CC-4210 | Block-05 -Robot Commissioning - SCADA | 2027-01-10 → 2027-01-02 (-8d) | 2027-01-21 → 2027-01-13 (-8d) |  | 17.7d → 42.8d |  | resources none → Weightage [6174.34 h] |
| S06A-CC-4220 | Block-05 -Trial Operation | 2027-01-17 → 2027-01-09 (-8d) | 2027-01-17 → 2027-01-09 (-8d) |  | 16.7d → 41.8d |  | resources none → Weightage [102.91 h] |
| S06A-CC-4230 | Block-05 -Trial Run Certificate | 2027-01-20 → 2027-01-12 (-8d) | 2027-01-20 → 2027-01-12 (-8d) |  | 16.7d → 41.8d |  | resources none → Weightage [51.45 h] |
| S06A-CC-4240 | Block-05 -COD | 2027-01-23 → 2027-01-15 (-8d) | 2027-01-24 → 2027-01-16 (-8d) |  | 16.7d → 41.8d |  | resources none → Weightage [360.17 h] |
| 2 | **BLOCK-06** |  | 2027-01-24 → 2027-01-16 (-8d) |  |  |  |  |
| 1 | **CONSTRUCTION-PV AREA-DC SIDE** |  | 2027-01-11 → 2027-01-07 (-4d) |  |  |  |  |
| S06A-CC-4250 | Block-06 -Piling - MMS (Marking, Auguring & Concreting) |  | 2026-10-28 → 2026-10-09 (-19d) | 11% → 75% | 48.7d → 65.8d |  | resources none → Weightage [17288.2 h]; Piling Stub - MMS - Construction [5832 NoS]; Piling Manpower [2651 h] |
| S06A-CC-4260 | Block-06 -Pile Capping | 2026-10-09 → 2026-08-30 A (-40d) | 2026-11-07 → 2026-10-16 (-22d) | 0% → 61% | 57.7d → 96.8d |  | resources none → Weightage [8644.08 h]; Piling Manpower [1268 h] |
| S06A-CC-4270 | Block-06 -Piling - LT Cable Hanger System | 2026-10-09 → 2026-10-06 (-3d) | 2026-10-28 → 2026-10-25 (-3d) |  | 56.7d → 76.8d |  | resources none → Weightage [2058.11 h]; Piling Stub - LT Cable Hanger - Construction [508 NoS]; Piling Manpower [462 h] |
| S06A-CC-4280 | Block-06 -Piling - Inverters | 2026-10-13 → 2026-10-06 (-7d) | 2026-10-28 → 2026-10-21 (-7d) |  | 66.7d → 90.8d |  | resources none → Weightage [2469.74 h]; Piling Stub - Invertor - Construction [94 NoS]; Piling Manpower [470 h] |
| S06A-CC-4300 | Block-06 -Array Earthing |  |  |  | 58.7d → 75.8d |  | resources none → Earthing - Construction [5.28 KM]; Weightage [4939.47 h]; ACDC Manpower [108 h] |
| S06A-CC-4310 | Block-06 -MMS Erection - Torque Tube/Raftar |  |  |  | 48.7d → 65.8d |  | resources none → Weightage [59067.9 h]; MMS - Rafter - Construction [486 TBL]; FT Manpower [4860 h] |
| S06A-CC-4320 | Block-06 -MMS Erection - Transmission Shaft/Bracing |  |  |  | 52.7d → 69.8d |  | resources none → Weightage [14406.8 h]; MMS - Bracing - Construction [486 TBL]; FT Manpower [2430 h] |
| S06A-CC-4330 | Block-06 -MMS Erection - Purlin |  |  |  | 48.7d → 65.8d |  | resources none → Weightage [14406.8 h]; MMS - FT Purlin - Construction [486 TBL]; FT Manpower [2430 h] |
| S06A-CC-4340 | Block-06 -MMS - RFI Completion |  |  |  | 48.7d → 65.8d |  | resources none → Weightage [7203.4 h]; FT Manpower [1400 h] |
| S06A-CC-4350 | Block-06 -Module Installation | 2026-11-29 → 2026-11-21 (-8d) | 2027-01-06 → 2026-12-29 (-8d) |  | 16.7d → 41.8d |  | resources none → Weightage [56598.1 h]; Module - Construction [17 MWdc]; Module Manpower [8400 h] |
| S06A-CC-4370 | Block-06 -DC Cable Laying | 2026-11-30 → 2026-11-22 (-8d) | 2026-12-29 → 2026-12-21 (-8d) |  | 31.7d → 56.8d |  | resources none → Weightage [12348.7 h]; DC Cable - Construction [99 KM]; ACDC Manpower [2200 h] |
| S06A-CC-4290 | Block-06 -Piling - Robotic Docking System | 2026-10-28 → 2026-11-25 (+28d) | 2026-11-06 → 2026-12-04 (+28d) |  | 59.7d → 48.8d |  | resources none → Piling Stub - Robot Docking - Construction [25 NoS]; Weightage [1543.59 h]; Piling Manpower [300 h] |
| S06A-CC-4360 | Block-06 -Module - RFI Completion | 2026-12-03 → 2026-11-25 (-8d) | 2027-01-11 → 2027-01-03 (-8d) |  | 21.7d → 46.8d |  | resources none → Weightage [4116.23 h]; Module Manpower [1200 h] |
| S06A-CC-4400 | Block-06 -Robotic Structure - Docking Station Installation | 2026-12-06 → 2026-12-05 (-1d) | 2026-12-15 → 2026-12-14 (-1d) |  | 30.7d → 48.8d |  | resources none → Weightage [1543.59 h]; Robot Structure - Docking - Construction [40 NoS]; Robot Installation Manpower [300 h] |
| S06A-CC-4410 | Block-06 -Robotic Structure - Reverse Station Installation | 2026-12-06 → 2026-12-05 (-1d) | 2026-12-15 → 2026-12-14 (-1d) |  | 42.7d → 60.8d |  | resources none → Weightage [1543.59 h]; Robot Structure - Reverse - Construction [40 NoS]; Robot Installation Manpower [300 h] |
| S06A-CC-4380 | Block-06 -Module Interconnection & MC4 Termination | 2026-12-14 → 2026-12-06 (-8d) | 2027-01-07 → 2026-12-30 (-8d) |  | 24.7d → 49.8d |  | resources none → Weightage [7203.4 h]; MC4 Connector - Construction [3888 NoS]; ACDC Manpower [2592 h] |
| S06A-CC-4430 | Block-06 -Robot Installation | 2026-12-10 → 2026-12-09 (-1d) | 2027-01-08 → 2027-01-07 (-1d) |  | 30.7d → 48.8d |  | resources none → Weightage [3087.17 h]; Robots - Construction [40 NoS]; Robot Installation Manpower [600 h] |
| S06A-CC-4390 | Block-06 -VOC Testing | 2026-12-19 → 2026-12-11 (-8d) | 2027-01-09 → 2027-01-01 (-8d) |  | 24.7d → 49.8d |  | resources none → Weightage [617.43 h]; ACDC Manpower [220 h] |
| S06A-CC-4420 | Block-06 -Robotic Structure - Bridges Installation | 2026-12-20 → 2026-12-12 (-8d) | 2027-01-08 → 2026-12-31 (-8d) |  | 36.7d → 61.8d |  | resources none → Weightage [5145.28 h]; Robot Structure - Bridges - Construction [300 NoS]; Robot Installation Manpower [2200 h] |
| 2 | **CONSTRUCTION-PV AREA-AC SIDE** |  | 2026-12-20 → 2026-11-18 (-32d) |  |  |  |  |
| S06A-CC-4440 | Block-06 -IDT Foundation Up To Rail |  |  |  | 61.7d → 78.8d |  | resources none → Weightage [7717.93 h]; IDT Station - Rail - Construction [1 NoS]; IDT Station - Foundation Bolt & Inserts - Construction [1 NoS]; IDT Station - Rebar - Construction [1 NoS]; IDT Civil Manpower [1470 h] |
| S06A-CC-4450 | Block-06 -HT & LT Station - Slab |  |  |  |  |  | resources none → Weightage [5402.55 h]; IDT Station - Foundation Bolt & Inserts - Construction [1 NoS]; IDT Station - Rebar - Construction [1 NoS]; IDT Civil Manpower [1200 h] |
| S06A-CC-4480 | Block-06 -IDT Foundation - Grade Slab Casting & Dyke Wall |  | 2026-10-06 → 2026-10-03 (-3d) | 40% → 80% | 94.7d → 114.8d |  | resources none → Weightage [4630.76 h]; IDT Station - Rebar - Construction [1 NoS]; IDT Civil Manpower [990 h] |
| S06A-CC-4460 | Block-06 -HT & LT Station - Shed Installation |  |  |  | 78.7d → 95.8d |  | resources none → Weightage [1080.51 h]; IDT Shed - Construction [1 NoS]; IDT Civil Manpower [250 h] |
| S06A-CC-4550 | Block-06 -HT LT Station - Staircase |  |  |  | 101.7d → 118.8d |  | resources none → Weightage [205.81 h]; IDT Civil Manpower [40 h] |
| S06A-CC-4580 | Block-06 -HT Cable Laying | 2026-10-01 → 2026-10-06 (+5d) | 2026-10-08 → 2026-10-12 (+4d) |  | 98.7d → 111.8d |  | resources none → Weightage [2881.36 h]; HT Cable - Construction [6.02 KM]; ACDC Manpower [912 h] |
| S06A-CC-4490 | Block-06 -NIFPS Foundation |  |  |  | 61.7d → 78.8d |  | resources none → Weightage [1029.06 h]; IDT Station - Rebar - Construction [1 NoS]; IDT Civil Manpower [300 h] |
| S06A-CC-4500 | Block-06 -BOT Foundation |  |  |  | 83.7d → 100.8d |  | resources none → Weightage [3858.96 h]; IDT Station - Rebar - Construction [1 NoS]; IDT Civil Manpower [800 h] |
| S06A-CC-4510 | Block-06 -Aux Transformer Foundation |  |  |  | 82.7d → 99.8d |  | resources none → Weightage [1029.06 h]; IDT Station - Rebar - Construction [1 NoS]; IDT Civil Manpower [250 h] |
| S06A-CC-4470 | Block-06 -HT & LT Station - Sheeting Installation |  |  |  | 78.7d → 95.8d |  | resources none → Weightage [1080.51 h]; IDT Sheeting - Construction [1 NoS]; IDT Civil Manpower [240 h] |
| S06A-CC-4590 | Block-06 -FO Cable Laying | 2026-10-01 → 2026-10-11 (+10d) | 2026-10-08 → 2026-10-18 (+10d) |  | 98.7d → 106.1d |  | resources none → Weightage [3601.7 h]; FO Cable - Construction [4 KM]; ACDC Manpower [700 h] |
| S06A-CC-4600 | Block-06 -Control Cable Laying | 2026-11-04 → 2026-10-12 (-23d) | 2026-11-09 → 2026-10-16 (-24d) |  | 61d → 101.8d |  | resources none → Weightage [308.72 h]; Control Cable - Construction [1 KM]; ACDC Manpower [100 h] |
| S06A-CC-4610 | Block-06 -HT Panel Erection | 2026-10-23 → 2026-10-12 (-11d) | 2026-10-23 → 2026-10-12 (-11d) |  | 74.7d → 102.8d |  | resources none → Weightage [308.72 h]; HT Panel - Construction [1 NoS]; ACDC Manpower [60 h] |
| S06A-CC-4650 | Block-06 -SCADA & SACU Installation | 2026-11-04 → 2026-10-12 (-23d) | 2026-11-09 → 2026-10-16 (-24d) |  | 61d → 101.8d |  | resources none → Weightage [205.81 h]; SCADA & SACU - Construction [1 NoS]; ACDC Manpower [50 h] |
| S06A-CC-4660 | Block-06 -ACDB Installation | 2026-12-11 → 2026-10-12 (-60d) | 2026-12-12 → 2026-10-13 (-60d) |  | 27.7d → 104.8d |  | resources none → Weightage [205.81 h]; ACDB - Construction [1 NoS]; ACDC Manpower [40 h] |
| S06A-CC-4620 | Block-06 -LT Panel Erection | 2026-10-21 → 2026-10-14 (-7d) | 2026-10-26 → 2026-10-19 (-7d) |  | 71.7d → 95.8d |  | resources none → Weightage [823.25 h]; LT Panel - Construction [16 NoS]; ACDC Manpower [180 h] |
| S06A-CC-4670 | Block-06 -Aux Transformer - Installation | 2026-12-11 → 2026-10-16 (-56d) | 2026-12-14 → 2026-10-19 (-56d) |  | 26.7d → 99.8d | S06A-CC-4510 FS+3d, S06A-PR-6630 SS → S06A-CC-4510 FS+3d, S06A-PR-6630 SS+10d | resources none → Weightage [411.62 h]; Aux Transformer - Construction [1 NoS]; ACDC Manpower [80 h] |
| S06A-CC-4560 | Block-06 -Cable Hanger - Structure & Messenger Wire Erection | 2026-10-28 → 2026-10-25 (-3d) | 2026-11-01 → 2026-10-29 (-3d) |  | 56.7d → 76.8d |  | resources none → Weightage [1543.59 h]; LT Cable - Hangers - Construction [1 Lot]; LT Cable - Support Structure - Construction [1 Lot]; LT Cable - Clamps - Construction [1 Lot]; LT Cable - Messenger wire - Construction [3.23 KM]; LT Cable - Fasteners - Construction [1 Lot]; ACDC Manpower [190 h] |

| ID | Task | Start | Finish | Complete | Total float | Predecessors | Other |
| --- | --- | --- | --- | --- | --- | --- | --- |
| S06A-CC-4640 | Block-06 -Inverter Installation | 2026-10-31 → 2026-10-25 (-6d) | 2026-11-06 → 2026-11-01 (-5d) |  | 66.7d → 89.1d |  | resources none → Weightage [1440.68 h]; Invertor - Construction [47 NoS]; ACDC Manpower [280 h] |
| S06A-CC-4630 | Block-06 -IDT Erection | 2026-10-08 → 2026-10-26 (+18d) | 2026-10-12 → 2026-10-30 (+18d) |  | 71.7d → 70.8d |  | resources none → Weightage [1543.59 h]; IDT - Construction [1 NoS]; ACDC Manpower [350 h] |
| S06A-CC-4570 | Block-06 -LT Cable Laying | 2026-11-01 → 2026-10-29 (-3d) | 2026-11-20 → 2026-11-17 (-3d) |  | 56.7d → 76.8d |  | resources none → Weightage [11113.8 h]; LT Cable - Construction [10.81 KM]; ACDC Manpower [1802 h] |
| S06A-CC-4680 | Block-06 -NIFPS - Installation | 2026-10-23 → 2026-10-31 (+8d) | 2026-11-01 → 2026-11-09 (+8d) |  | 61.7d → 70.8d |  | resources none → Weightage [1080.51 h]; NIFPS - Construction [1 NoS]; ACDC Manpower [200 h] |
| S06A-CC-4690 | Block-06 -HT Cable Terminations - IDT Side | 2026-12-11 → 2026-10-31 (-41d) | 2026-12-12 → 2026-11-01 (-41d) |  | 35.7d → 93.8d |  | resources none → Weightage [205.81 h]; ACDC Manpower [70 h] |
| S06A-CC-4540 | Block-06 -IDT Area - Gravel Filling | 2026-12-13 → 2026-11-10 (-33d) | 2026-12-17 → 2026-11-14 (-33d) |  | 27.7d → 77.8d |  | resources none → Weightage [308.72 h]; IDT Civil Manpower [100 h] |
| S06A-CC-4520 | Block-06 -IDT Area - Fencing | 2026-12-15 → 2026-11-11 (-34d) | 2026-12-19 → 2026-11-15 (-34d) |  | 26.7d → 77.8d |  | resources none → Weightage [617.43 h]; IDT - Fencing - Construction - Construction [1 NoS]; IDT Civil Manpower [150 h] |
| S06A-CC-4700 | Block-06 -LT Cable Terminations - LT Panel To IDT | 2026-12-11 → 2026-11-12 (-29d) | 2026-12-17 → 2026-11-18 (-29d) |  | 30.7d → 76.8d |  | resources none → Weightage [1440.68 h]; ACDC Manpower [300 h] |
| S06A-CC-4710 | Block-06 -LT Cable Terminations - Inverter To LT Panel | 2026-12-11 → 2026-11-12 (-29d) | 2026-12-17 → 2026-11-18 (-29d) |  | 30.7d → 76.8d |  | resources none → Weightage [720.34 h]; ACDC Manpower [210 h] |
| S06A-CC-4530 | Block-06 -IDT Area - Gate Installation | 2026-12-20 → 2026-11-16 (-34d) | 2026-12-20 → 2026-11-16 (-34d) |  | 26.7d → 77.8d |  | resources none → Weightage [308.72 h]; IDT - Gate - Construction [1 NoS]; IDT Civil Manpower [50 h] |
| 3 | **CONSTRUCTION-PV AREA-PRE COMMISSIONING** | 2026-10-24 → 2026-10-13 (-11d) | 2026-12-26 → 2026-11-27 (-29d) |  |  |  |  |
| S06A-CC-4740 | Block-06 -HT Panel Testing | 2026-10-24 → 2026-10-13 (-11d) | 2026-10-24 → 2026-10-13 (-11d) |  | 74.7d → 102.8d |  | resources none → Weightage [102.91 h]; HT Panel Testing [20 h] |
| S06A-CC-4750 | Block-06 -LT Panel Testing | 2026-10-27 → 2026-10-20 (-7d) | 2026-10-27 → 2026-10-20 (-7d) |  | 71.7d → 95.8d |  | resources none → Weightage [205.81 h]; LT Panel Testing [40 h] |
| S06A-CC-4720 | Block-06 -IDT Filtration | 2026-11-02 → 2026-11-10 (+8d) | 2026-11-04 → 2026-11-12 (+8d) |  | 61.7d → 70.8d |  | resources none → Weightage [154.36 h]; IDT Filtration & Testing [30 h] |
| S06A-CC-4730 | Block-06 -IDT Testing | 2026-11-05 → 2026-11-13 (+8d) | 2026-11-06 → 2026-11-14 (+8d) |  | 61.7d → 70.8d |  | resources none → Weightage [102.91 h]; IDT Filtration & Testing [20 h] |
| S06A-CC-4760 | Block-06 -Inspection Offer To Asset Commissioning Team | 2026-12-18 → 2026-11-19 (-29d) | 2026-12-18 → 2026-11-19 (-29d) |  | 30.7d → 76.8d |  | resources none → Weightage [51.45 h] |
| S06A-CC-4770 | Block-06 -Punch Point Identification By Asset Commissioning Team | 2026-12-19 → 2026-11-20 (-29d) | 2026-12-21 → 2026-11-22 (-29d) |  | 30.7d → 76.8d |  | resources none → Weightage [308.72 h] |
| S06A-CC-4780 | Block-06 -Punch Point Rectification And Pre Charging Sign Off | 2026-12-22 → 2026-11-23 (-29d) | 2026-12-26 → 2026-11-27 (-29d) |  | 30.7d → 76.8d |  | resources none → Weightage [463.08 h] |
| 4 | **CONSTRUCTION-COMMISSIONING** | 2026-12-01 → 2026-11-23 (-8d) | 2027-01-24 → 2027-01-16 (-8d) |  |  |  |  |
| S06A-CC-4790 | Block-06 -CEA Application | 2026-12-01 → 2026-11-23 (-8d) | 2026-12-02 → 2026-11-24 (-8d) |  | 37d → 62.1d |  | resources none → Weightage [51.45 h] |
| S06A-CC-4800 | Block-06 -CEA Inspection | 2026-12-21 → 2026-12-02 (-19d) | 2026-12-21 → 2026-12-03 (-18d) |  | 26.7d → 62.1d |  | resources none → Weightage [51.45 h] |
| S06A-CC-4810 | Block-06 -CEA Compliance & Approval | 2026-12-23 → 2026-12-04 (-19d) | 2026-12-27 → 2026-12-09 (-18d) |  | 26.7d → 62.1d |  | resources none → Weightage [411.62 h] |
| S06A-CC-4820 | Block-06 -First Time Charging - Application | 2027-01-07 → 2026-12-30 (-8d) | 2027-01-07 → 2026-12-30 (-8d) |  | 16.7d → 41.8d |  | resources none → Weightage [51.45 h] |
| S06A-CC-4830 | Block-06 -First Time Charging - Approval | 2027-01-08 → 2026-12-31 (-8d) | 2027-01-09 → 2027-01-01 (-8d) |  | 16.7d → 41.8d |  | resources none → Weightage [308.72 h] |
| S06A-CC-4840 | Block-06 -First Time Charging | 2027-01-10 → 2027-01-02 (-8d) | 2027-01-10 → 2027-01-02 (-8d) |  | 16.7d → 41.8d |  | resources none → Weightage [102.91 h] |
| S06A-CC-4850 | Block-05 -Tracker Commissioning - SCADA | 2027-01-10 → 2027-01-02 (-8d) | 2027-01-17 → 2027-01-09 (-8d) |  | 21.7d → 46.8d |  | resources none → Weightage [1080.51 h] |
| S06A-CC-4860 | Block-06 -Robot Commissioning - SCADA | 2027-01-10 → 2027-01-02 (-8d) | 2027-01-21 → 2027-01-13 (-8d) |  | 17.7d → 42.8d |  | resources none → Weightage [6174.34 h] |
| S06A-CC-4870 | Block-06 -Trial Operation | 2027-01-17 → 2027-01-09 (-8d) | 2027-01-17 → 2027-01-09 (-8d) |  | 16.7d → 41.8d |  | resources none → Weightage [102.91 h] |
| S06A-CC-4880 | Block-06 -Trial Run Certificate | 2027-01-20 → 2027-01-12 (-8d) | 2027-01-20 → 2027-01-12 (-8d) |  | 16.7d → 41.8d |  | resources none → Weightage [51.45 h] |
| S06A-CC-4890 | Block-06 -COD | 2027-01-23 → 2027-01-15 (-8d) | 2027-01-24 → 2027-01-16 (-8d) |  | 16.7d → 41.8d |  | resources none → Weightage [360.17 h] |
| 3 | **BLOCK-07** |  | 2027-01-24 → 2027-01-16 (-8d) |  |  |  |  |
| 1 | **CONSTRUCTION-PV AREA-DC SIDE** |  | 2027-01-11 → 2027-01-07 (-4d) |  |  |  |  |
| S06A-CC-4900 | Block-07 -Piling - MMS (Marking, Auguring & Concreting) |  |  |  | 46.7d → 63.8d |  | resources none → Weightage [17288.2 h]; Piling Stub - MMS - Construction [5832 NoS]; Piling Manpower [2651 h] |
| S06A-CC-4910 | Block-07 -Pile Capping |  |  |  | 57.7d → 74.8d |  | resources none → Weightage [8644.08 h]; Piling Manpower [1268 h] |
| S06A-CC-4950 | Block-07 -Array Earthing |  |  |  | 58.7d → 75.8d |  | resources none → Earthing - Construction [5.18 KM]; Weightage [4939.47 h]; ACDC Manpower [108 h] |
| S06A-CC-4920 | Block-07 -Piling - LT Cable Hanger System |  |  |  | 53.7d → 70.8d |  | resources none → Weightage [2058.11 h]; Piling Stub - LT Cable Hanger - Construction [530 NoS]; Piling Manpower [482 h] |
| S06A-CC-4930 | Block-07 -Piling - Inverters |  |  |  | 63.7d → 80.8d |  | resources none → Weightage [2469.74 h]; Piling Stub - Invertor - Construction [94 NoS]; Piling Manpower [470 h] |
| S06A-CC-4960 | Block-07 -MMS Erection - Torque Tube/Raftar |  |  |  | 46.7d → 63.8d |  | resources none → Weightage [59067.9 h]; MMS - Rafter - Construction [486 TBL]; FT Manpower [4860 h] |
| S06A-CC-4970 | Block-07 -MMS Erection - Transmission Shaft/Bracing |  |  |  | 50.7d → 67.8d |  | resources none → Weightage [14406.8 h]; MMS - Bracing - Construction [486 TBL]; FT Manpower [2430 h] |
| S06A-CC-4980 | Block-07 -MMS Erection - Purlin |  |  |  | 46.7d → 63.8d |  | resources none → Weightage [14406.8 h]; MMS - FT Purlin - Construction [486 TBL]; FT Manpower [2430 h] |
| S06A-CC-4990 | Block-07 -MMS - RFI Completion |  |  |  | 46.7d → 63.8d |  | resources none → Weightage [7203.4 h]; FT Manpower [1400 h] |
| S06A-CC-5000 | Block-07 -Module Installation | 2026-11-29 → 2026-11-21 (-8d) | 2027-01-06 → 2026-12-29 (-8d) |  | 16.7d → 41.8d |  | resources none → Weightage [56598.1 h]; Module - Construction [17 MWdc]; Module Manpower [8400 h] |
| S06A-CC-5020 | Block-07 -DC Cable Laying | 2026-11-30 → 2026-11-22 (-8d) | 2026-12-29 → 2026-12-21 (-8d) |  | 31.7d → 56.8d |  | resources none → Weightage [12348.7 h]; DC Cable - Construction [100 KM]; ACDC Manpower [2222 h] |
| S06A-CC-4940 | Block-07 -Piling - Robotic Docking System | 2026-10-28 → 2026-11-25 (+28d) | 2026-11-06 → 2026-12-04 (+28d) |  | 59.7d → 48.8d |  | resources none → Piling Stub - Robot Docking - Construction [25 NoS]; Weightage [1543.59 h]; Piling Manpower [300 h] |
| S06A-CC-5010 | Block-07 -Module - RFI Completion | 2026-12-03 → 2026-11-25 (-8d) | 2027-01-11 → 2027-01-03 (-8d) |  | 21.7d → 46.8d |  | resources none → Weightage [4116.23 h]; Module Manpower [1200 h] |
| S06A-CC-5050 | Block-07 -Robotic Structure - Docking Station Installation | 2026-12-06 → 2026-12-05 (-1d) | 2026-12-15 → 2026-12-14 (-1d) |  | 30.7d → 48.8d |  | resources none → Weightage [1543.59 h]; Robot Structure - Docking - Construction [40 NoS]; Robot Installation Manpower [300 h] |
| S06A-CC-5060 | Block-07 -Robotic Structure - Reverse Station Installation | 2026-12-06 → 2026-12-05 (-1d) | 2026-12-15 → 2026-12-14 (-1d) |  | 42.7d → 60.8d |  | resources none → Weightage [1543.59 h]; Robot Structure - Reverse - Construction [40 NoS]; Robot Installation Manpower [300 h] |
| S06A-CC-5030 | Block-07 -Module Interconnection & MC4 Termination | 2026-12-14 → 2026-12-06 (-8d) | 2027-01-07 → 2026-12-30 (-8d) |  | 24.7d → 49.8d |  | resources none → Weightage [7203.4 h]; MC4 Connector - Construction [3888 NoS]; ACDC Manpower [2592 h] |
| S06A-CC-5080 | Block-07 -Robot Installation | 2026-12-10 → 2026-12-09 (-1d) | 2027-01-08 → 2027-01-07 (-1d) |  | 30.7d → 48.8d |  | resources none → Weightage [3087.17 h]; Robots - Construction [40 NoS]; Robot Installation Manpower [600 h] |
| S06A-CC-5040 | Block-07 -VOC Testing | 2026-12-19 → 2026-12-11 (-8d) | 2027-01-09 → 2027-01-01 (-8d) |  | 24.7d → 49.8d |  | resources none → Weightage [617.43 h]; ACDC Manpower [220 h] |
| S06A-CC-5070 | Block-07 -Robotic Structure - Bridges Installation | 2026-12-20 → 2026-12-12 (-8d) | 2027-01-08 → 2026-12-31 (-8d) |  | 36.7d → 61.8d |  | resources none → Weightage [5145.28 h]; Robot Structure - Bridges - Construction [300 NoS]; Robot Installation Manpower [2200 h] |
| 2 | **CONSTRUCTION-PV AREA-AC SIDE** |  | 2026-12-20 → 2026-11-24 (-26d) |  |  |  |  |
| S06A-CC-5090 | Block-07 -IDT Foundation Up To Rail |  |  |  | 61.7d → 78.8d |  | resources none → Weightage [7717.93 h]; IDT Station - Rail - Construction [1 NoS]; IDT Station - Foundation Bolt & Inserts - Construction [1 NoS]; IDT Station - Rebar - Construction [1 NoS]; IDT Civil Manpower [1470 h] |
| S06A-CC-5100 | Block-07 -HT & LT Station - Slab |  |  |  |  |  | resources none → Weightage [5402.55 h]; IDT Station - Foundation Bolt & Inserts - Construction [1 NoS]; IDT Station - Rebar - Construction [1 NoS]; IDT Civil Manpower [1200 h] |
| S06A-CC-5130 | Block-07 -IDT Foundation - Grade Slab Casting & Dyke Wall |  | 2026-10-06 → 2026-10-03 (-3d) | 40% → 80% | 94.7d → 114.8d |  | resources none → Weightage [4630.76 h]; IDT Station - Rebar - Construction [1 NoS]; IDT Civil Manpower [990 h] |
| S06A-CC-5110 | Block-07 -HT & LT Station - Shed Installation |  |  |  | 78.7d → 95.8d |  | resources none → Weightage [1080.51 h]; IDT Shed - Construction [1 NoS]; IDT Civil Manpower [250 h] |
| S06A-CC-5200 | Block-07 -HT LT Station - Staircase |  |  |  | 101.7d → 118.8d |  | resources none → Weightage [205.81 h]; IDT Civil Manpower [40 h] |
| S06A-CC-5230 | Block-07 -HT Cable Laying | 2026-10-01 → 2026-10-06 (+5d) | 2026-10-08 → 2026-10-12 (+4d) |  | 98.7d → 111.8d |  | resources none → Weightage [2881.36 h]; HT Cable - Construction [5.85 KM]; ACDC Manpower [887 h] |
| S06A-CC-5140 | Block-07 -NIFPS Foundation |  |  |  | 61.7d → 78.8d |  | resources none → Weightage [1029.06 h]; IDT Station - Rebar - Construction [1 NoS]; IDT Civil Manpower [300 h] |
| S06A-CC-5150 | Block-07 -BOT Foundation |  |  |  | 83.7d → 100.8d |  | resources none → Weightage [3858.96 h]; IDT Station - Rebar - Construction [1 NoS]; IDT Civil Manpower [800 h] |
| S06A-CC-5160 | Block-07 -Aux Transformer Foundation |  |  |  | 82.7d → 99.8d |  | resources none → Weightage [1029.06 h]; IDT Station - Rebar - Construction [1 NoS]; IDT Civil Manpower [250 h] |
| S06A-CC-5120 | Block-07 -HT & LT Station - Sheeting Installation |  |  |  | 78.7d → 95.8d |  | resources none → Weightage [1080.51 h]; IDT Sheeting - Construction [1 NoS]; IDT Civil Manpower [240 h] |
| S06A-CC-5240 | Block-07 -FO Cable Laying | 2026-10-01 → 2026-10-11 (+10d) | 2026-10-08 → 2026-10-18 (+10d) |  | 98.7d → 106.1d |  | resources none → Weightage [3601.7 h]; FO Cable - Construction [4 KM]; ACDC Manpower [700 h] |
| S06A-CC-5250 | Block-07 -Control Cable Laying | 2026-11-04 → 2026-10-12 (-23d) | 2026-11-09 → 2026-10-16 (-24d) |  | 61d → 101.8d |  | resources none → Weightage [308.72 h]; Control Cable - Construction [1 KM]; ACDC Manpower [100 h] |
| S06A-CC-5260 | Block-07 -HT Panel Erection | 2026-10-23 → 2026-10-12 (-11d) | 2026-10-23 → 2026-10-12 (-11d) |  | 74.7d → 102.8d |  | resources none → Weightage [308.72 h]; HT Panel - Construction [1 NoS]; ACDC Manpower [60 h] |
| S06A-CC-5300 | Block-07 -SCADA & SACU Installation | 2026-11-04 → 2026-10-12 (-23d) | 2026-11-09 → 2026-10-16 (-24d) |  | 61d → 101.8d |  | resources none → Weightage [205.81 h]; SCADA & SACU - Construction [1 NoS]; ACDC Manpower [50 h] |
| S06A-CC-5310 | Block-07 -ACDB Installation | 2026-12-11 → 2026-10-12 (-60d) | 2026-12-12 → 2026-10-13 (-60d) |  | 27.7d → 104.8d |  | resources none → Weightage [205.81 h]; ACDB - Construction [1 NoS]; ACDC Manpower [40 h] |
| S06A-CC-5270 | Block-07 -LT Panel Erection | 2026-10-21 → 2026-10-14 (-7d) | 2026-10-26 → 2026-10-19 (-7d) |  | 71.7d → 95.8d |  | resources none → Weightage [823.25 h]; LT Panel - Construction [16 NoS]; ACDC Manpower [180 h] |
| S06A-CC-5320 | Block-07 -Aux Transformer - Installation | 2026-12-11 → 2026-10-16 (-56d) | 2026-12-14 → 2026-10-19 (-56d) |  | 26.7d → 99.8d | S06A-CC-5160 FS+3d, S06A-PR-6630 SS → S06A-CC-5160 FS+3d, S06A-PR-6630 SS+10d | resources none → Weightage [411.62 h]; Aux Transformer - Construction [1 NoS]; ACDC Manpower [80 h] |
| S06A-CC-5280 | Block-07 -IDT Erection | 2026-10-08 → 2026-10-26 (+18d) | 2026-10-12 → 2026-10-30 (+18d) |  | 71.7d → 70.8d |  | resources none → Weightage [1543.59 h]; IDT - Construction [1 NoS]; ACDC Manpower [350 h] |

| ID | Task | Start | Finish | Complete | Total float | Predecessors | Other |
| --- | --- | --- | --- | --- | --- | --- | --- |
| S06A-CC-5210 | Block-07 -Cable Hanger - Structure & Messenger Wire Erection |  |  |  | 53.7d → 70.8d |  | resources none → Weightage [1543.59 h]; LT Cable - Hangers - Construction [1 Lot]; LT Cable - Support Structure - Construction [1 Lot]; LT Cable - Clamps - Construction [1 Lot]; LT Cable - Messenger wire - Construction [3.18 KM]; LT Cable - Fasteners - Construction [1 Lot]; ACDC Manpower [187 h] |
| S06A-CC-5330 | Block-07 -NIFPS - Installation | 2026-10-23 → 2026-10-31 (+8d) | 2026-11-01 → 2026-11-09 (+8d) |  | 61.7d → 70.8d |  | resources none → Weightage [1080.51 h]; NIFPS - Construction [1 NoS]; ACDC Manpower [200 h] |
| S06A-CC-5340 | Block-07 -HT Cable Terminations - IDT Side | 2026-12-11 → 2026-10-31 (-41d) | 2026-12-12 → 2026-11-01 (-41d) |  | 35.7d → 93.8d |  | resources none → Weightage [205.81 h]; ACDC Manpower [70 h] |
| S06A-CC-5290 | Block-07 -Inverter Installation |  |  |  | 63.7d → 80.8d |  | resources none → Weightage [1440.68 h]; Invertor - Construction [47 NoS]; ACDC Manpower [280 h] |
| S06A-CC-5220 | Block-07 -LT Cable Laying |  |  |  | 53.7d → 70.8d |  | resources none → Weightage [11113.8 h]; LT Cable - Construction [9.51 KM]; ACDC Manpower [1585 h] |
| S06A-CC-5190 | Block-07 -IDT Area - Gravel Filling | 2026-12-13 → 2026-11-10 (-33d) | 2026-12-17 → 2026-11-14 (-33d) |  | 27.7d → 77.8d |  | resources none → Weightage [308.72 h]; IDT Civil Manpower [100 h] |
| S06A-CC-5170 | Block-07 -IDT Area - Fencing | 2026-12-15 → 2026-11-11 (-34d) | 2026-12-19 → 2026-11-15 (-34d) |  | 26.7d → 77.8d |  | resources none → Weightage [617.43 h]; IDT - Fencing - Construction - Construction [1 NoS]; IDT Civil Manpower [150 h] |
| S06A-CC-5180 | Block-07 -IDT Area - Gate Installation | 2026-12-20 → 2026-11-16 (-34d) | 2026-12-20 → 2026-11-16 (-34d) |  | 26.7d → 77.8d |  | resources none → Weightage [308.72 h]; IDT - Gate - Construction [1 NoS]; IDT Civil Manpower [50 h] |
| S06A-CC-5350 | Block-07 -LT Cable Terminations - LT Panel To IDT | 2026-12-11 → 2026-11-18 (-23d) | 2026-12-17 → 2026-11-24 (-23d) |  | 30.7d → 70.8d |  | resources none → Weightage [1440.68 h]; ACDC Manpower [300 h] |
| S06A-CC-5360 | Block-07 -LT Cable Terminations - Inverter To LT Panel | 2026-12-11 → 2026-11-18 (-23d) | 2026-12-17 → 2026-11-24 (-23d) |  | 30.7d → 70.8d |  | resources none → Weightage [720.34 h]; ACDC Manpower [210 h] |
| 3 | **CONSTRUCTION-PV AREA-PRE COMMISSIONING** | 2026-10-24 → 2026-10-13 (-11d) | 2026-12-26 → 2026-12-03 (-23d) |  |  |  |  |
| S06A-CC-5390 | Block-07 -HT Panel Testing | 2026-10-24 → 2026-10-13 (-11d) | 2026-10-24 → 2026-10-13 (-11d) |  | 74.7d → 102.8d |  | resources none → Weightage [102.91 h]; HT Panel Testing [20 h] |
| S06A-CC-5400 | Block-07 -LT Panel Testing | 2026-10-27 → 2026-10-20 (-7d) | 2026-10-27 → 2026-10-20 (-7d) |  | 71.7d → 95.8d |  | resources none → Weightage [205.81 h]; LT Panel Testing [40 h] |
| S06A-CC-5370 | Block-07 -IDT Filtration | 2026-11-02 → 2026-11-10 (+8d) | 2026-11-04 → 2026-11-12 (+8d) |  | 61.7d → 70.8d |  | resources none → Weightage [154.36 h]; IDT Filtration & Testing [30 h] |
| S06A-CC-5380 | Block-07 -IDT Testing | 2026-11-05 → 2026-11-13 (+8d) | 2026-11-06 → 2026-11-14 (+8d) |  | 61.7d → 70.8d |  | resources none → Weightage [102.91 h]; IDT Filtration & Testing [20 h] |
| S06A-CC-5410 | Block-07 -Inspection Offer To Asset Commissioning Team | 2026-12-18 → 2026-11-25 (-23d) | 2026-12-18 → 2026-11-25 (-23d) |  | 30.7d → 70.8d |  | resources none → Weightage [51.45 h] |
| S06A-CC-5420 | Block-07 -Punch Point Identification By Asset Commissioning Team | 2026-12-19 → 2026-11-26 (-23d) | 2026-12-21 → 2026-11-28 (-23d) |  | 30.7d → 70.8d |  | resources none → Weightage [308.72 h] |
| S06A-CC-5430 | Block-07 -Punch Point Rectification And Pre Charging Sign Off | 2026-12-22 → 2026-11-29 (-23d) | 2026-12-26 → 2026-12-03 (-23d) |  | 30.7d → 70.8d |  | resources none → Weightage [463.08 h] |
| 4 | **CONSTRUCTION-COMMISSIONING** | 2026-12-01 → 2026-11-23 (-8d) | 2027-01-24 → 2027-01-16 (-8d) |  |  |  |  |
| S06A-CC-5440 | Block-07 -CEA Application | 2026-12-01 → 2026-11-23 (-8d) | 2026-12-02 → 2026-11-24 (-8d) |  | 37d → 62.1d |  | resources none → Weightage [51.45 h] |
| S06A-CC-5450 | Block-07 -CEA Inspection | 2026-12-21 → 2026-12-02 (-19d) | 2026-12-21 → 2026-12-03 (-18d) |  | 26.7d → 62.1d |  | resources none → Weightage [51.45 h] |
| S06A-CC-5460 | Block-07 -CEA Compliance & Approval | 2026-12-23 → 2026-12-04 (-19d) | 2026-12-27 → 2026-12-09 (-18d) |  | 26.7d → 62.1d |  | resources none → Weightage [411.62 h] |
| S06A-CC-5470 | Block-07 -First Time Charging - Application | 2027-01-07 → 2026-12-30 (-8d) | 2027-01-07 → 2026-12-30 (-8d) |  | 16.7d → 41.8d |  | resources none → Weightage [51.45 h] |
| S06A-CC-5480 | Block-07 -First Time Charging - Approval | 2027-01-08 → 2026-12-31 (-8d) | 2027-01-09 → 2027-01-01 (-8d) |  | 16.7d → 41.8d |  | resources none → Weightage [308.72 h] |
| S06A-CC-5490 | Block-07 -First Time Charging | 2027-01-10 → 2027-01-02 (-8d) | 2027-01-10 → 2027-01-02 (-8d) |  | 16.7d → 41.8d |  | resources none → Weightage [102.91 h] |
| S06A-CC-5500 | Block-07 -Tracker Commissioning - SCADA | 2027-01-10 → 2027-01-02 (-8d) | 2027-01-17 → 2027-01-09 (-8d) |  | 21.7d → 46.8d |  | resources none → Weightage [1080.51 h] |
| S06A-CC-5510 | Block-07 -Robot Commissioning - SCADA | 2027-01-10 → 2027-01-02 (-8d) | 2027-01-21 → 2027-01-13 (-8d) |  | 17.7d → 42.8d |  | resources none → Weightage [6174.34 h] |
| S06A-CC-5520 | Block-07 -Trial Operation | 2027-01-17 → 2027-01-09 (-8d) | 2027-01-17 → 2027-01-09 (-8d) |  | 16.7d → 41.8d |  | resources none → Weightage [102.91 h] |
| S06A-CC-5530 | Block-07 -Trial Run Certificate | 2027-01-20 → 2027-01-12 (-8d) | 2027-01-20 → 2027-01-12 (-8d) |  | 16.7d → 41.8d |  | resources none → Weightage [51.45 h] |
| S06A-CC-5540 | Block-07 -COD | 2027-01-23 → 2027-01-15 (-8d) | 2027-01-24 → 2027-01-16 (-8d) |  | 16.7d → 41.8d |  | resources none → Weightage [360.17 h] |
| 4 | **BLOCK-08** |  | 2027-01-24 → 2027-01-16 (-8d) |  |  |  |  |
| 1 | **CONSTRUCTION-PV AREA-DC SIDE** |  | 2027-01-11 → 2027-01-07 (-4d) |  |  |  |  |
| S06A-CC-5550 | Block-08 -Piling - MMS (Marking, Auguring & Concreting) |  |  |  | 46.7d → 63.8d |  | resources none → Weightage [17288.2 h]; Piling Stub - MMS - Construction [5832 NoS]; Piling Manpower [2651 h] |
| S06A-CC-5560 | Block-08 -Pile Capping |  |  |  | 57.7d → 74.8d |  | resources none → Weightage [8644.08 h]; Piling Manpower [1268 h] |
| S06A-CC-5600 | Block-08 -Array Earthing |  |  |  | 58.7d → 75.8d |  | resources none → Earthing - Construction [5.38 KM]; Weightage [4939.47 h]; ACDC Manpower [108 h] |
| S06A-CC-5570 | Block-08 -Piling - LT Cable Hanger System |  |  |  | 53.7d → 70.8d |  | resources none → Weightage [2058.11 h]; Piling Stub - LT Cable Hanger - Construction [553 NoS]; Piling Manpower [503 h] |
| S06A-CC-5580 | Block-08 -Piling - Inverters |  |  |  | 63.7d → 80.8d |  | resources none → Weightage [2469.74 h]; Piling Stub - Invertor - Construction [94 NoS]; Piling Manpower [470 h] |
| S06A-CC-5610 | Block-08 -MMS Erection - Torque Tube/Raftar |  |  |  | 46.7d → 63.8d |  | resources none → Weightage [59067.9 h]; MMS - Rafter - Construction [486 TBL]; FT Manpower [4860 h] |
| S06A-CC-5620 | Block-08 -MMS Erection - Transmission Shaft/Bracing |  |  |  | 50.7d → 67.8d |  | resources none → Weightage [14406.8 h]; MMS - Bracing - Construction [486 TBL]; FT Manpower [2430 h] |
| S06A-CC-5630 | Block-08 -MMS Erection - Purlin |  |  |  | 46.7d → 63.8d |  | resources none → Weightage [14406.8 h]; MMS - FT Purlin - Construction [486 TBL]; FT Manpower [2430 h] |
| S06A-CC-5640 | Block-08 -MMS - RFI Completion |  |  |  | 46.7d → 63.8d |  | resources none → Weightage [7203.4 h]; FT Manpower [1400 h] |
| S06A-CC-5650 | Block-08 -Module Installation | 2026-11-29 → 2026-11-21 (-8d) | 2027-01-06 → 2026-12-29 (-8d) |  | 16.7d → 41.8d |  | resources none → Weightage [56598.1 h]; Module - Construction [17 MWdc]; Module Manpower [8400 h] |
| S06A-CC-5670 | Block-08 -DC Cable Laying | 2026-11-30 → 2026-11-22 (-8d) | 2026-12-29 → 2026-12-21 (-8d) |  | 31.7d → 56.8d |  | resources none → Weightage [12348.7 h]; DC Cable - Construction [99 KM]; ACDC Manpower [2200 h] |
| S06A-CC-5590 | Block-08 -Piling - Robotic Docking System | 2026-10-28 → 2026-11-25 (+28d) | 2026-11-06 → 2026-12-04 (+28d) |  | 59.7d → 48.8d |  | resources none → Piling Stub - Robot Docking - Construction [25 NoS]; Weightage [1543.59 h]; Piling Manpower [300 h] |
| S06A-CC-5660 | Block-08 -Module - RFI Completion | 2026-12-03 → 2026-11-25 (-8d) | 2027-01-11 → 2027-01-03 (-8d) |  | 21.7d → 46.8d |  | resources none → Weightage [4116.23 h]; Module Manpower [1200 h] |
| S06A-CC-5700 | Block-08 -Robotic Structure - Docking Station Installation | 2026-12-06 → 2026-12-05 (-1d) | 2026-12-15 → 2026-12-14 (-1d) |  | 30.7d → 48.8d |  | resources none → Weightage [1543.59 h]; Robot Structure - Docking - Construction [40 NoS]; Robot Installation Manpower [300 h] |
| S06A-CC-5710 | Block-08 -Robotic Structure - Reverse Station Installation | 2026-12-06 → 2026-12-05 (-1d) | 2026-12-15 → 2026-12-14 (-1d) |  | 42.7d → 60.8d |  | resources none → Weightage [1543.59 h]; Robot Structure - Reverse - Construction [40 NoS]; Robot Installation Manpower [300 h] |
| S06A-CC-5680 | Block-08 -Module Interconnection & MC4 Termination | 2026-12-14 → 2026-12-06 (-8d) | 2027-01-07 → 2026-12-30 (-8d) |  | 24.7d → 49.8d |  | resources none → Weightage [7203.4 h]; MC4 Connector - Construction [3888 NoS]; ACDC Manpower [2592 h] |
| S06A-CC-5730 | Block-08 -Robot Installation | 2026-12-10 → 2026-12-09 (-1d) | 2027-01-08 → 2027-01-07 (-1d) |  | 30.7d → 48.8d |  | resources none → Weightage [3087.17 h]; Robots - Construction [40 NoS]; Robot Installation Manpower [600 h] |
| S06A-CC-5690 | Block-08 -VOC Testing | 2026-12-19 → 2026-12-11 (-8d) | 2027-01-09 → 2027-01-01 (-8d) |  | 24.7d → 49.8d |  | resources none → Weightage [617.43 h]; ACDC Manpower [220 h] |
| S06A-CC-5720 | Block-08 -Robotic Structure - Bridges Installation | 2026-12-20 → 2026-12-12 (-8d) | 2027-01-08 → 2026-12-31 (-8d) |  | 36.7d → 61.8d |  | resources none → Weightage [5145.28 h]; Robot Structure - Bridges - Construction [300 NoS]; Robot Installation Manpower [2200 h] |
| 2 | **CONSTRUCTION-PV AREA-AC SIDE** |  | 2026-12-20 → 2026-11-24 (-26d) |  |  |  |  |
| S06A-CC-5740 | Block-08 -IDT Foundation Up To Rail |  |  |  | 61.7d → 78.8d |  | resources none → Weightage [7717.93 h]; IDT Station - Rail - Construction [1 NoS]; IDT Station - Foundation Bolt & Inserts - Construction [1 NoS]; IDT Station - Rebar - Construction [1 NoS]; IDT Civil Manpower [1470 h] |
| S06A-CC-5750 | Block-08 -HT & LT Station - Slab |  | 2026-10-07 → 2026-08-30 A (-38d) | 62% → 100% | 72.7d → none |  | resources none → Weightage [5402.55 h]; IDT Station - Foundation Bolt & Inserts - Construction [1 NoS]; IDT Station - Rebar - Construction [1 NoS]; IDT Civil Manpower [1200 h] |
| S06A-CC-5780 | Block-08 -IDT Foundation - Grade Slab Casting & Dyke Wall |  | 2026-10-06 → 2026-10-03 (-3d) | 40% → 80% | 94.7d → 114.8d |  | resources none → Weightage [4630.76 h]; IDT Station - Rebar - Construction [1 NoS]; IDT Civil Manpower [990 h] |
| S06A-CC-5760 | Block-08 -HT & LT Station - Shed Installation | 2026-10-11 → 2026-10-05 (-6d) | 2026-10-15 → 2026-10-09 (-6d) |  | 72.7d → 95.8d |  | resources none → Weightage [1080.51 h]; IDT Shed - Construction [1 NoS]; IDT Civil Manpower [250 h] |
| S06A-CC-5850 | Block-08 -HT LT Station - Staircase | 2026-10-11 → 2026-10-05 (-6d) | 2026-10-12 → 2026-10-06 (-6d) |  | 95.7d → 118.8d |  | resources none → Weightage [205.81 h]; IDT Civil Manpower [40 h] |
| S06A-CC-5880 | Block-08 -HT Cable Laying | 2026-10-01 → 2026-10-06 (+5d) | 2026-10-08 → 2026-10-12 (+4d) |  | 98.7d → 111.8d |  | resources none → Weightage [2881.36 h]; HT Cable - Construction [5.52 KM]; ACDC Manpower [836 h] |
| S06A-CC-5790 | Block-08 -NIFPS Foundation |  |  |  | 61.7d → 78.8d |  | resources none → Weightage [1029.06 h]; IDT Station - Rebar - Construction [1 NoS]; IDT Civil Manpower [300 h] |
| S06A-CC-5800 | Block-08 -BOT Foundation |  |  |  | 83.7d → 100.8d |  | resources none → Weightage [3858.96 h]; IDT Station - Rebar - Construction [1 NoS]; IDT Civil Manpower [800 h] |
| S06A-CC-5810 | Block-08 -Aux Transformer Foundation |  |  |  | 82.7d → 99.8d |  | resources none → Weightage [1029.06 h]; IDT Station - Rebar - Construction [1 NoS]; IDT Civil Manpower [250 h] |
| S06A-CC-5770 | Block-08 -HT & LT Station - Sheeting Installation | 2026-10-16 → 2026-10-10 (-6d) | 2026-10-17 → 2026-10-11 (-6d) |  | 72.7d → 95.8d |  | resources none → Weightage [1080.51 h]; IDT Sheeting - Construction [1 NoS]; IDT Civil Manpower [240 h] |
| S06A-CC-5890 | Block-08 -FO Cable Laying | 2026-10-01 → 2026-10-11 (+10d) | 2026-10-08 → 2026-10-18 (+10d) |  | 98.7d → 106.1d |  | resources none → Weightage [3601.7 h]; FO Cable - Construction [4 KM]; ACDC Manpower [700 h] |
| S06A-CC-5900 | Block-08 -Control Cable Laying | 2026-11-04 → 2026-10-12 (-23d) | 2026-11-09 → 2026-10-16 (-24d) |  | 61d → 101.8d |  | resources none → Weightage [308.72 h]; Control Cable - Construction [1 KM]; ACDC Manpower [100 h] |
| S06A-CC-5910 | Block-08 -HT Panel Erection | 2026-10-23 → 2026-10-12 (-11d) | 2026-10-23 → 2026-10-12 (-11d) |  | 74.7d → 102.8d |  | resources none → Weightage [308.72 h]; HT Panel - Construction [1 NoS]; ACDC Manpower [60 h] |
| S06A-CC-5950 | Block-08 -SCADA & SACU Installation | 2026-11-04 → 2026-10-12 (-23d) | 2026-11-09 → 2026-10-16 (-24d) |  | 61d → 101.8d |  | resources none → Weightage [205.81 h]; SCADA & SACU - Construction [1 NoS]; ACDC Manpower [50 h] |
| S06A-CC-5960 | Block-08 -ACDB Installation | 2026-12-11 → 2026-10-12 (-60d) | 2026-12-12 → 2026-10-13 (-60d) |  | 27.7d → 104.8d |  | resources none → Weightage [205.81 h]; ACDB - Construction [1 NoS]; ACDC Manpower [40 h] |
| S06A-CC-5920 | Block-08 -LT Panel Erection | 2026-10-21 → 2026-10-14 (-7d) | 2026-10-26 → 2026-10-19 (-7d) |  | 71.7d → 95.8d |  | resources none → Weightage [823.25 h]; LT Panel - Construction [16 NoS]; ACDC Manpower [180 h] |
| S06A-CC-5970 | Block-08 -Aux Transformer - Installation | 2026-12-11 → 2026-10-16 (-56d) | 2026-12-14 → 2026-10-19 (-56d) |  | 26.7d → 99.8d | S06A-CC-5810 FS+3d, S06A-PR-6630 SS → S06A-CC-5810 FS+3d, S06A-PR-6630 SS+10d | resources none → Weightage [411.62 h]; Aux Transformer - Construction [1 NoS]; ACDC Manpower [80 h] |
| S06A-CC-5930 | Block-08 -IDT Erection | 2026-10-08 → 2026-10-26 (+18d) | 2026-10-12 → 2026-10-30 (+18d) |  | 71.7d → 70.8d |  | resources none → Weightage [1543.59 h]; IDT - Construction [1 NoS]; ACDC Manpower [350 h] |

| ID | Task | Start | Finish | Complete | Total float | Predecessors | Other |
| --- | --- | --- | --- | --- | --- | --- | --- |
| S06A-CC-5860 | Block-08 -Cable Hanger - Structure & Messenger Wire Erection |  |  |  | 53.7d → 70.8d |  | resources none → Weightage [1543.59 h]; LT Cable - Hangers - Construction [1 Lot]; LT Cable - Support Structure - Construction [1 Lot]; LT Cable - Clamps - Construction [1 Lot]; LT Cable - Messenger wire - Construction [3.45 KM]; LT Cable - Fasteners - Construction [1 Lot]; ACDC Manpower [203 h] |
| S06A-CC-5980 | Block-08 -NIFPS - Installation | 2026-10-23 → 2026-10-31 (+8d) | 2026-11-01 → 2026-11-09 (+8d) |  | 61.7d → 70.8d |  | resources none → Weightage [1080.51 h]; NIFPS - Construction [1 NoS]; ACDC Manpower [200 h] |
| S06A-CC-5990 | Block-08 -HT Cable Terminations - IDT Side | 2026-12-11 → 2026-10-31 (-41d) | 2026-12-12 → 2026-11-01 (-41d) |  | 35.7d → 93.8d |  | resources none → Weightage [205.81 h]; ACDC Manpower [70 h] |
| S06A-CC-5940 | Block-08 -Inverter Installation |  |  |  | 63.7d → 80.8d |  | resources none → Weightage [1440.68 h]; Invertor - Construction [47 NoS]; ACDC Manpower [280 h] |
| S06A-CC-5870 | Block-08 -LT Cable Laying |  |  |  | 53.7d → 70.8d |  | resources none → Weightage [11113.8 h]; LT Cable - Construction [9.94 KM]; ACDC Manpower [1656 h] |
| S06A-CC-5840 | Block-08 -IDT Area - Gravel Filling | 2026-12-13 → 2026-11-10 (-33d) | 2026-12-17 → 2026-11-14 (-33d) |  | 27.7d → 77.8d |  | resources none → Weightage [308.72 h]; IDT Civil Manpower [100 h] |
| S06A-CC-5820 | Block-08 -IDT Area - Fencing | 2026-12-15 → 2026-11-11 (-34d) | 2026-12-19 → 2026-11-15 (-34d) |  | 26.7d → 77.8d |  | resources none → Weightage [617.43 h]; IDT - Fencing - Construction - Construction [1 NoS]; IDT Civil Manpower [150 h] |
| S06A-CC-5830 | Block-08 -IDT Area - Gate Installation | 2026-12-20 → 2026-11-16 (-34d) | 2026-12-20 → 2026-11-16 (-34d) |  | 26.7d → 77.8d |  | resources none → Weightage [308.72 h]; IDT - Gate - Construction [1 NoS]; IDT Civil Manpower [50 h] |
| S06A-CC-6000 | Block-08 -LT Cable Terminations - LT Panel To IDT | 2026-12-11 → 2026-11-18 (-23d) | 2026-12-17 → 2026-11-24 (-23d) |  | 30.7d → 70.8d |  | resources none → Weightage [1440.68 h]; ACDC Manpower [300 h] |
| S06A-CC-6010 | Block-08 -LT Cable Terminations - Inverter To LT Panel | 2026-12-11 → 2026-11-18 (-23d) | 2026-12-17 → 2026-11-24 (-23d) |  | 30.7d → 70.8d |  | resources none → Weightage [720.34 h]; ACDC Manpower [210 h] |
| 3 | **CONSTRUCTION-PV AREA-PRE COMMISSIONING** | 2026-10-24 → 2026-10-13 (-11d) | 2026-12-26 → 2026-12-03 (-23d) |  |  |  |  |
| S06A-CC-6040 | Block-08 -HT Panel Testing | 2026-10-24 → 2026-10-13 (-11d) | 2026-10-24 → 2026-10-13 (-11d) |  | 74.7d → 102.8d |  | resources none → Weightage [102.91 h]; HT Panel Testing [20 h] |
| S06A-CC-6050 | Block-08 -LT Panel Testing | 2026-10-27 → 2026-10-20 (-7d) | 2026-10-27 → 2026-10-20 (-7d) |  | 71.7d → 95.8d |  | resources none → Weightage [205.81 h]; LT Panel Testing [40 h] |
| S06A-CC-6020 | Block-08 -IDT Filtration | 2026-11-02 → 2026-11-10 (+8d) | 2026-11-04 → 2026-11-12 (+8d) |  | 61.7d → 70.8d |  | resources none → Weightage [154.36 h]; IDT Filtration & Testing [30 h] |
| S06A-CC-6030 | Block-08 -IDT Testing | 2026-11-05 → 2026-11-13 (+8d) | 2026-11-06 → 2026-11-14 (+8d) |  | 61.7d → 70.8d |  | resources none → Weightage [102.91 h]; IDT Filtration & Testing [20 h] |
| S06A-CC-6060 | Block-08 -Inspection Offer To Asset Commissioning Team | 2026-12-18 → 2026-11-25 (-23d) | 2026-12-18 → 2026-11-25 (-23d) |  | 30.7d → 70.8d |  | resources none → Weightage [51.45 h] |
| S06A-CC-6070 | Block-08 -Punch Point Identification By Asset Commissioning Team | 2026-12-19 → 2026-11-26 (-23d) | 2026-12-21 → 2026-11-28 (-23d) |  | 30.7d → 70.8d |  | resources none → Weightage [308.72 h] |
| S06A-CC-6080 | Block-08 -Punch Point Rectification And Pre Charging Sign Off | 2026-12-22 → 2026-11-29 (-23d) | 2026-12-26 → 2026-12-03 (-23d) |  | 30.7d → 70.8d |  | resources none → Weightage [463.08 h] |
| 4 | **CONSTRUCTION-COMMISSIONING** | 2026-12-01 → 2026-11-23 (-8d) | 2027-01-24 → 2027-01-16 (-8d) |  |  |  |  |
| S06A-CC-6090 | Block-08 -CEA Application | 2026-12-01 → 2026-11-23 (-8d) | 2026-12-02 → 2026-11-24 (-8d) |  | 37d → 62.1d |  | resources none → Weightage [51.45 h] |
| S06A-CC-6100 | Block-08 -CEA Inspection | 2026-12-21 → 2026-12-02 (-19d) | 2026-12-21 → 2026-12-03 (-18d) |  | 26.7d → 62.1d |  | resources none → Weightage [51.45 h] |
| S06A-CC-6110 | Block-08 -CEA Compliance & Approval | 2026-12-23 → 2026-12-04 (-19d) | 2026-12-27 → 2026-12-09 (-18d) |  | 26.7d → 62.1d |  | resources none → Weightage [411.62 h] |
| S06A-CC-6120 | Block-08 -First Time Charging - Application | 2027-01-07 → 2026-12-30 (-8d) | 2027-01-07 → 2026-12-30 (-8d) |  | 16.7d → 41.8d |  | resources none → Weightage [51.45 h] |
| S06A-CC-6130 | Block-08 -First Time Charging - Approval | 2027-01-08 → 2026-12-31 (-8d) | 2027-01-09 → 2027-01-01 (-8d) |  | 16.7d → 41.8d |  | resources none → Weightage [308.72 h] |
| S06A-CC-6140 | Block-08 -First Time Charging | 2027-01-10 → 2027-01-02 (-8d) | 2027-01-10 → 2027-01-02 (-8d) |  | 16.7d → 41.8d |  | resources none → Weightage [102.91 h] |
| S06A-CC-6150 | Block-08 -Tracker Commissioning - SCADA | 2027-01-10 → 2027-01-02 (-8d) | 2027-01-17 → 2027-01-09 (-8d) |  | 21.7d → 46.8d |  | resources none → Weightage [1080.51 h] |
| S06A-CC-6160 | Block-08 -Robot Commissioning - SCADA | 2027-01-10 → 2027-01-02 (-8d) | 2027-01-21 → 2027-01-13 (-8d) |  | 17.7d → 42.8d |  | resources none → Weightage [6174.34 h] |
| S06A-CC-6170 | Block-08 -Trial Operation | 2027-01-17 → 2027-01-09 (-8d) | 2027-01-17 → 2027-01-09 (-8d) |  | 16.7d → 41.8d |  | resources none → Weightage [102.91 h] |
| S06A-CC-6180 | Block-08 -Trial Run Certificate | 2027-01-20 → 2027-01-12 (-8d) | 2027-01-20 → 2027-01-12 (-8d) |  | 16.7d → 41.8d |  | resources none → Weightage [51.45 h] |
| S06A-CC-6190 | Block-08 -COD | 2027-01-23 → 2027-01-15 (-8d) | 2027-01-24 → 2027-01-16 (-8d) |  | 16.7d → 41.8d |  | resources none → Weightage [360.17 h] |
| 3 | **PHASE-3 (50MW)** |  | 2027-01-30 → 2027-01-21 (-9d) |  |  |  |  |
| 1 | **BLOCK-09** |  | 2027-01-30 → 2027-01-21 (-9d) |  |  |  |  |
| 1 | **CONSTRUCTION-PV AREA-DC SIDE** |  | 2027-01-15 → 2027-01-12 (-3d) |  |  |  |  |
| S06A-CC-6200 | Block-09 -Piling - MMS (Marking, Auguring & Concreting) |  | 2026-10-29 → 2026-10-14 (-15d) | 9% → 59% | 47.7d → 64.8d |  | resources none → Weightage [17288.2 h]; Piling Stub - MMS - Construction [5832 NoS]; Piling Manpower [2651 h] |
| S06A-CC-6210 | Block-09 -Pile Capping | 2026-10-09 → 2026-09-02 A (-37d) | 2026-11-07 → 2026-10-21 (-17d) | 0% → 47% | 56.7d → 90.8d |  | resources none → Weightage [8644.08 h]; Piling Manpower [1268 h] |
| S06A-CC-6250 | Block-09 -Array Earthing |  |  |  | 57.7d → 74.8d |  | resources none → Earthing - Construction [5.33 KM]; Weightage [4939.47 h]; ACDC Manpower [108 h] |
| S06A-CC-6230 | Block-09 -Piling - Inverters | 2026-10-14 → 2026-10-10 (-4d) | 2026-10-29 → 2026-10-25 (-4d) |  | 65.7d → 86.8d |  | resources none → Weightage [2469.74 h]; Piling Stub - Invertor - Construction [94 NoS]; Piling Manpower [470 h] |
| S06A-CC-6220 | Block-09 -Piling - LT Cable Hanger System | 2026-10-10 → 2026-10-11 (+1d) | 2026-10-29 → 2026-10-30 (+1d) |  | 56.7d → 72.8d |  | resources none → Weightage [2058.11 h]; Piling Stub - LT Cable Hanger - Construction [609 NoS]; Piling Manpower [554 h] |
| S06A-CC-6260 | Block-09 -MMS Erection - Torque Tube/Raftar |  |  |  | 47.7d → 64.8d |  | resources none → Weightage [59067.9 h]; MMS - Rafter - Construction [486 TBL]; FT Manpower [4860 h] |
| S06A-CC-6270 | Block-09 -MMS Erection - Transmission Shaft/Bracing |  |  |  | 51.7d → 68.8d |  | resources none → Weightage [14406.8 h]; MMS - Bracing - Construction [486 TBL]; FT Manpower [2430 h] |
| S06A-CC-6280 | Block-09 -MMS Erection - Purlin |  |  |  | 47.7d → 64.8d |  | resources none → Weightage [14406.8 h]; MMS - FT Purlin - Construction [486 TBL]; FT Manpower [2430 h] |
| S06A-CC-6290 | Block-09 -MMS - RFI Completion |  |  |  | 47.7d → 64.8d |  | resources none → Weightage [7203.4 h]; FT Manpower [1400 h] |
| S06A-CC-6300 | Block-09 -Module Installation | 2026-12-03 → 2026-11-25 (-8d) | 2027-01-11 → 2027-01-03 (-8d) |  | 11.7d → 36.8d |  | resources none → Weightage [56598.1 h]; Module - Construction [17 MWdc]; Module Manpower [8400 h] |
| S06A-CC-6320 | Block-09 -DC Cable Laying | 2026-12-04 → 2026-11-26 (-8d) | 2027-01-02 → 2026-12-25 (-8d) |  | 32.7d → 57.8d |  | resources none → Weightage [12348.7 h]; DC Cable - Construction [99 KM]; ACDC Manpower [2200 h] |
| S06A-CC-6310 | Block-09 -Module - RFI Completion | 2026-12-07 → 2026-11-29 (-8d) | 2027-01-15 → 2027-01-07 (-8d) |  | 17.7d → 42.8d |  | resources none → Weightage [4116.23 h]; Module Manpower [1200 h] |
| S06A-CC-6240 | Block-09 -Piling - Robotic Docking System | 2026-11-02 → 2026-11-30 (+28d) | 2026-11-11 → 2026-12-09 (+28d) |  | 53.7d → 42.8d |  | resources none → Piling Stub - Robot Docking - Construction [25 NoS]; Weightage [1543.59 h]; Piling Manpower [300 h] |
| S06A-CC-6350 | Block-09 -Robotic Structure - Docking Station Installation | 2026-12-11 → 2026-12-10 (-1d) | 2026-12-20 → 2026-12-19 (-1d) |  | 24.7d → 42.8d |  | resources none → Weightage [1543.59 h]; Robot Structure - Docking - Construction [40 NoS]; Robot Installation Manpower [300 h] |
| S06A-CC-6360 | Block-09 -Robotic Structure - Reverse Station Installation | 2026-12-11 → 2026-12-10 (-1d) | 2026-12-20 → 2026-12-19 (-1d) |  | 37.7d → 55.8d |  | resources none → Weightage [1543.59 h]; Robot Structure - Reverse - Construction [40 NoS]; Robot Installation Manpower [300 h] |
| S06A-CC-6330 | Block-09 -Module Interconnection & MC4 Termination | 2026-12-19 → 2026-12-11 (-8d) | 2027-01-12 → 2027-01-04 (-8d) |  | 24.7d → 49.8d |  | resources none → Weightage [7203.4 h]; MC4 Connector - Construction [3888 NoS]; ACDC Manpower [2592 h] |
| S06A-CC-6380 | Block-09 -Robot Installation | 2026-12-15 → 2026-12-14 (-1d) | 2027-01-13 → 2027-01-12 (-1d) |  | 24.7d → 42.8d |  | resources none → Weightage [3087.17 h]; Robots - Construction [40 NoS]; Robot Installation Manpower [600 h] |
| S06A-CC-6340 | Block-09 -VOC Testing | 2026-12-23 → 2026-12-15 (-8d) | 2027-01-13 → 2027-01-05 (-8d) |  | 20.7d → 45.8d |  | resources none → Weightage [617.43 h]; ACDC Manpower [220 h] |
| S06A-CC-6370 | Block-09 -Robotic Structure - Bridges Installation | 2026-12-24 → 2026-12-16 (-8d) | 2027-01-12 → 2027-01-04 (-8d) |  | 32.7d → 57.8d |  | resources none → Weightage [5145.28 h]; Robot Structure - Bridges - Construction [300 NoS]; Robot Installation Manpower [2200 h] |
| 2 | **CONSTRUCTION-PV AREA-AC SIDE** |  | 2026-12-25 → 2026-12-06 (-19d) |  |  |  |  |
| S06A-CC-6390 | Block-09 -IDT Foundation Up To Rail |  |  |  | 60.7d → 77.8d |  | resources none → Weightage [7717.93 h]; IDT Station - Rail - Construction [1 NoS]; IDT Station - Foundation Bolt & Inserts - Construction [1 NoS]; IDT Station - Rebar - Construction [1 NoS]; IDT Civil Manpower [1470 h] |
| S06A-CC-6400 | Block-09 -HT & LT Station - Slab |  |  |  |  |  | resources none → Weightage [5402.55 h]; IDT Station - Foundation Bolt & Inserts - Construction [1 NoS]; IDT Station - Rebar - Construction [1 NoS]; IDT Civil Manpower [1200 h] |
| S06A-CC-6430 | Block-09 -IDT Foundation - Grade Slab Casting & Dyke Wall |  |  | 40% → 80% | 90.7d → 107.8d |  | resources none → Weightage [4630.76 h]; IDT Station - Rebar - Construction [1 NoS]; IDT Civil Manpower [990 h] |
| S06A-CC-6410 | Block-09 -HT & LT Station - Shed Installation |  |  |  | 78.7d → 95.8d |  | resources none → Weightage [1080.51 h]; IDT Shed - Construction [1 NoS]; IDT Civil Manpower [250 h] |
| S06A-CC-6500 | Block-09 -HT LT Station - Staircase |  |  |  | 102.7d → 119.8d |  | resources none → Weightage [205.81 h]; IDT Civil Manpower [40 h] |
| S06A-CC-6440 | Block-09 -NIFPS Foundation |  |  |  | 60.7d → 77.8d |  | resources none → Weightage [1029.06 h]; IDT Station - Rebar - Construction [1 NoS]; IDT Civil Manpower [300 h] |
| S06A-CC-6450 | Block-09 -BOT Foundation |  |  |  | 83.7d → 100.8d |  | resources none → Weightage [3858.96 h]; IDT Station - Rebar - Construction [1 NoS]; IDT Civil Manpower [800 h] |
| S06A-CC-6460 | Block-09 -Aux Transformer Foundation |  |  |  | 81.7d → 98.8d |  | resources none → Weightage [1029.06 h]; IDT Station - Rebar - Construction [1 NoS]; IDT Civil Manpower [250 h] |
| S06A-CC-6420 | Block-09 -HT & LT Station - Sheeting Installation |  |  |  | 78.7d → 95.8d |  | resources none → Weightage [1080.51 h]; IDT Sheeting - Construction [1 NoS]; IDT Civil Manpower [240 h] |
| S06A-CC-6530 | Block-09 -HT Cable Laying | 2026-10-01 → 2026-10-11 (+10d) | 2026-10-08 → 2026-10-17 (+9d) |  | 98.7d → 106.8d |  | resources none → Weightage [2881.36 h]; HT Cable - Construction [5.51 KM]; ACDC Manpower [835 h] |
| S06A-CC-6610 | Block-09 -ACDB Installation | 2026-12-16 → 2026-10-12 (-65d) | 2026-12-17 → 2026-10-13 (-65d) |  | 23.7d → 105.8d |  | resources none → Weightage [205.81 h]; ACDB - Construction [1 NoS]; ACDC Manpower [40 h] |
| S06A-CC-6570 | Block-09 -LT Panel Erection | 2026-10-26 → 2026-10-14 (-12d) | 2026-10-31 → 2026-10-19 (-12d) |  | 66.7d → 95.8d |  | resources none → Weightage [823.25 h]; LT Panel - Construction [16 NoS]; ACDC Manpower [180 h] |
| S06A-CC-6540 | Block-09 -FO Cable Laying | 2026-10-01 → 2026-10-15 (+14d) | 2026-10-08 → 2026-10-22 (+14d) |  | 98.7d → 102.1d |  | resources none → Weightage [3601.7 h]; FO Cable - Construction [4 KM]; ACDC Manpower [700 h] |
| S06A-CC-6550 | Block-09 -Control Cable Laying | 2026-11-09 → 2026-10-16 (-24d) | 2026-11-14 → 2026-10-21 (-24d) |  | 56d → 97.1d |  | resources none → Weightage [308.72 h]; Control Cable - Construction [1 KM]; ACDC Manpower [100 h] |
| S06A-CC-6600 | Block-09 -SCADA & SACU Installation | 2026-11-09 → 2026-10-16 (-24d) | 2026-11-14 → 2026-10-21 (-24d) |  | 56d → 97.1d |  | resources none → Weightage [205.81 h]; SCADA & SACU - Construction [1 NoS]; ACDC Manpower [50 h] |
| S06A-CC-6620 | Block-09 -Aux Transformer - Installation | 2026-12-16 → 2026-10-20 (-57d) | 2026-12-19 → 2026-10-24 (-56d) |  | 21.7d → 95.1d | S06A-CC-6460 FS+3d, S06A-PR-6650 SS → S06A-CC-6460 FS+3d, S06A-PR-6650 SS+10d | resources none → Weightage [411.62 h]; Aux Transformer - Construction [1 NoS]; ACDC Manpower [80 h] |
| S06A-CC-6560 | Block-09 -HT Panel Erection | 2026-10-28 → 2026-10-21 (-7d) | 2026-10-28 → 2026-10-21 (-7d) |  | 69.7d → 93.8d |  | resources none → Weightage [308.72 h]; HT Panel - Construction [1 NoS]; ACDC Manpower [60 h] |

| ID | Task | Start | Finish | Complete | Total float | Predecessors | Other |
| --- | --- | --- | --- | --- | --- | --- | --- |
| S06A-CC-6510 | Block-09 -Cable Hanger - Structure & Messenger Wire Erection | 2026-10-29 → 2026-10-30 (+1d) | 2026-11-02 → 2026-11-03 (+1d) |  | 56.7d → 72.8d |  | resources none → Weightage [1543.59 h]; LT Cable - Hangers - Construction [1 Lot]; LT Cable - Support Structure - Construction [1 Lot]; LT Cable - Clamps - Construction [1 Lot]; LT Cable - Messenger wire - Construction [3.12 KM]; LT Cable - Fasteners - Construction [1 Lot]; ACDC Manpower [183 h] |
| S06A-CC-6590 | Block-09 -Inverter Installation | 2026-11-01 → 2026-10-30 (-2d) | 2026-11-07 → 2026-11-06 (-1d) |  | 65.7d → 84.1d |  | resources none → Weightage [1440.68 h]; Invertor - Construction [47 NoS]; ACDC Manpower [280 h] |
| S06A-CC-6520 | Block-09 -LT Cable Laying | 2026-10-31 → 2026-11-01 (+1d) | 2026-11-19 → 2026-11-20 (+1d) |  | 56.7d → 72.8d |  | resources none → Weightage [11113.8 h]; LT Cable - Construction [9.85 KM]; ACDC Manpower [1642 h] |
| S06A-CC-6660 | Block-09 -LT Cable Terminations - Inverter to LT Panel | 2026-12-16 → 2026-11-16 (-30d) | 2026-12-22 → 2026-11-22 (-30d) |  | 25.7d → 72.8d |  | resources none → Weightage [720.34 h]; ACDC Manpower [210 h] |
| S06A-CC-6580 | Block-09 -IDT Erection | 2026-10-26 → 2026-11-20 (+25d) | 2026-10-30 → 2026-11-24 (+25d) |  | 63.7d → 55.8d |  | resources none → Weightage [1543.59 h]; IDT - Construction [1 NoS]; ACDC Manpower [350 h] |
| S06A-CC-6630 | Block-09 -NIFPS - Installation | 2026-10-26 → 2026-11-20 (+25d) | 2026-11-04 → 2026-11-29 (+25d) |  | 58.7d → 50.8d |  | resources none → Weightage [1080.51 h]; NIFPS - Construction [1 NoS]; ACDC Manpower [200 h] |
| S06A-CC-6640 | Block-09 -HT Cable Terminations - IDT Side | 2026-12-16 → 2026-11-25 (-21d) | 2026-12-17 → 2026-11-26 (-21d) |  | 30.7d → 68.8d |  | resources none → Weightage [205.81 h]; ACDC Manpower [70 h] |
| S06A-CC-6650 | Block-09 -LT Cable Terminations - LT Panel to IDT | 2026-12-16 → 2026-11-25 (-21d) | 2026-12-22 → 2026-12-01 (-21d) |  | 25.7d → 63.8d |  | resources none → Weightage [1440.68 h]; ACDC Manpower [300 h] |
| S06A-CC-6490 | Block-09 -IDT Area - Gravel Filling | 2026-12-17 → 2026-11-30 (-17d) | 2026-12-21 → 2026-12-04 (-17d) |  | 23.7d → 57.8d |  | resources none → Weightage [308.72 h]; IDT Civil Manpower [100 h] |
| S06A-CC-6470 | Block-09 -IDT Area - Fencing | 2026-12-20 → 2026-12-01 (-19d) | 2026-12-24 → 2026-12-05 (-19d) |  | 21.7d → 57.8d |  | resources none → Weightage [617.43 h]; IDT - Fencing - Construction - Construction [1 NoS]; IDT Civil Manpower [150 h] |
| S06A-CC-6480 | Block-09 -IDT Area - Gate Installation | 2026-12-25 → 2026-12-06 (-19d) | 2026-12-25 → 2026-12-06 (-19d) |  | 21.7d → 57.8d |  | resources none → Weightage [308.72 h]; IDT - Gate - Construction [1 NoS]; IDT Civil Manpower [50 h] |
| 3 | **CONSTRUCTION-PV AREA-PRE COMMISSIONING** | 2026-10-29 → 2026-10-20 (-9d) | 2026-12-31 → 2026-12-10 (-21d) |  |  |  |  |
| S06A-CC-6700 | Block-09 -LT Panel Testing | 2026-11-01 → 2026-10-20 (-12d) | 2026-11-01 → 2026-10-20 (-12d) |  | 66.7d → 95.8d |  | resources none → Weightage [205.81 h]; LT Panel Testing [40 h] |
| S06A-CC-6690 | Block-09 -HT Panel Testing | 2026-10-29 → 2026-10-22 (-7d) | 2026-10-29 → 2026-10-22 (-7d) |  | 69.7d → 93.8d |  | resources none → Weightage [102.91 h]; HT Panel Testing [20 h] |
| S06A-CC-6670 | Block-09 -IDT Filtration | 2026-11-05 → 2026-11-30 (+25d) | 2026-11-07 → 2026-12-02 (+25d) |  | 58.7d → 50.8d |  | resources none → Weightage [154.36 h]; IDT Filtration & Testing [30 h] |
| S06A-CC-6710 | Block-09 -Inspection Offer To Asset Commissioning Team | 2026-12-23 → 2026-12-02 (-21d) | 2026-12-23 → 2026-12-02 (-21d) |  | 25.7d → 63.8d |  | resources none → Weightage [51.45 h] |
| S06A-CC-6680 | Block-09 -IDT Testing | 2026-11-08 → 2026-12-03 (+25d) | 2026-11-09 → 2026-12-04 (+25d) |  | 58.7d → 50.8d |  | resources none → Weightage [102.91 h]; IDT Filtration & Testing [20 h] |
| S06A-CC-6720 | Block-09 -Punch Point Identification By Asset Commissioning Team | 2026-12-24 → 2026-12-03 (-21d) | 2026-12-26 → 2026-12-05 (-21d) |  | 25.7d → 63.8d |  | resources none → Weightage [308.72 h] |
| S06A-CC-6730 | Block-09 -Punch Point Rectification And Pre Charging Sign Off | 2026-12-27 → 2026-12-06 (-21d) | 2026-12-31 → 2026-12-10 (-21d) |  | 25.7d → 63.8d |  | resources none → Weightage [463.08 h] |
| 4 | **CONSTRUCTION-COMMISSIONING** |  | 2027-01-30 → 2027-01-21 (-9d) |  |  |  |  |
| S06A-CC-6740 | Block-09 -CEA Application |  | 2026-12-06 → 2026-12-05 (-1d) |  | 33d → 50.8d |  | resources none → Weightage [51.45 h] |
| S06A-CC-6750 | Block-09 -CEA Inspection | 2026-12-26 → 2026-12-14 (-12d) | 2026-12-26 → 2026-12-14 (-12d) |  | 21.7d → 50.8d |  | resources none → Weightage [51.45 h] |
| S06A-CC-6760 | Block-09 -CEA Compliance & Approval | 2026-12-28 → 2026-12-16 (-12d) | 2027-01-01 → 2026-12-20 (-12d) |  | 21.7d → 50.8d |  | resources none → Weightage [411.62 h] |
| S06A-CC-6770 | Block-09 -First Time Charging - Application | 2027-01-12 → 2027-01-04 (-8d) | 2027-01-12 → 2027-01-04 (-8d) |  | 11.7d → 36.8d |  | resources none → Weightage [51.45 h] |
| S06A-CC-6780 | Block-09 -First Time Charging - Approval | 2027-01-13 → 2027-01-05 (-8d) | 2027-01-14 → 2027-01-06 (-8d) |  | 11.7d → 36.8d |  | resources none → Weightage [308.72 h] |
| S06A-CC-6790 | Block-09 -First Time Charging | 2027-01-15 → 2027-01-07 (-8d) | 2027-01-15 → 2027-01-07 (-8d) |  | 11.7d → 36.8d |  | resources none → Weightage [102.91 h] |
| S06A-CC-6800 | Block-09 -Tracker Commissioning - SCADA | 2027-01-15 → 2027-01-07 (-8d) | 2027-01-22 → 2027-01-14 (-8d) |  | 16.7d → 41.8d |  | resources none → Weightage [1080.51 h] |
| S06A-CC-6810 | Block-09 -Robot Commissioning - SCADA | 2027-01-15 → 2027-01-07 (-8d) | 2027-01-27 → 2027-01-18 (-9d) |  | 12.7d → 37.8d |  | resources none → Weightage [6174.34 h] |
| S06A-CC-6820 | Block-09 -Trial Operation | 2027-01-22 → 2027-01-14 (-8d) | 2027-01-22 → 2027-01-14 (-8d) |  | 11.7d → 36.8d |  | resources none → Weightage [102.91 h] |
| S06A-CC-6830 | Block-09 -Trial Run Certificate | 2027-01-25 → 2027-01-17 (-8d) | 2027-01-25 → 2027-01-17 (-8d) |  | 11.7d → 36.8d |  | resources none → Weightage [51.45 h] |
| S06A-CC-6840 | Block-09 -COD | 2027-01-29 → 2027-01-20 (-9d) | 2027-01-30 → 2027-01-21 (-9d) |  | 11.7d → 36.8d |  | resources none → Weightage [360.17 h] |
| 2 | **BLOCK-10** |  | 2027-01-30 → 2027-01-21 (-9d) |  |  |  |  |
| 1 | **CONSTRUCTION-PV AREA-DC SIDE** | 2026-10-01 → 2026-09-06 (-25d) | 2027-01-15 → 2027-01-12 (-3d) |  |  |  |  |
| S06A-CC-6850 | Block-10 -Piling - MMS (Marking, Auguring & Concreting) | 2026-10-01 → 2026-09-06 A (-25d) | 2026-10-31 → 2026-10-29 (-2d) | 0% → 8% | 45.7d → 64.8d |  | resources none → Weightage [17288.2 h]; Piling Stub - MMS - Construction [5832 NoS]; Piling Manpower [2651 h] |
| S06A-CC-6860 | Block-10 -Pile Capping |  |  |  | 56.7d → 73.8d |  | resources none → Weightage [8644.08 h]; Piling Manpower [1268 h] |
| S06A-CC-6900 | Block-10 -Array Earthing |  |  |  | 57.7d → 74.8d |  | resources none → Earthing - Construction [5.31 KM]; Weightage [4939.47 h]; ACDC Manpower [108 h] |
| S06A-CC-6870 | Block-10 -Piling - LT Cable Hanger System | 2026-10-12 → 2026-10-11 (-1d) | 2026-10-31 → 2026-10-30 (-1d) |  | 54.7d → 72.8d |  | resources none → Weightage [2058.11 h]; Piling Stub - LT Cable Hanger - Construction [539 NoS]; Piling Manpower [490 h] |
| S06A-CC-6880 | Block-10 -Piling - Inverters | 2026-10-16 → 2026-10-14 (-2d) | 2026-10-31 → 2026-10-29 (-2d) |  | 63.7d → 82.8d |  | resources none → Weightage [2469.74 h]; Piling Stub - Invertor - Construction [94 NoS]; Piling Manpower [470 h] |
| S06A-CC-6910 | Block-10 -MMS Erection - Torque Tube/Raftar | 2026-10-18 → 2026-10-16 (-2d) | 2026-11-14 → 2026-11-12 (-2d) |  | 45.7d → 64.8d |  | resources none → Weightage [59067.9 h]; MMS - Rafter - Construction [486 TBL]; FT Manpower [4860 h] |
| S06A-CC-6920 | Block-10 -MMS Erection - Transmission Shaft/Bracing | 2026-10-22 → 2026-10-20 (-2d) | 2026-11-18 → 2026-11-16 (-2d) |  | 49.7d → 68.8d |  | resources none → Weightage [14406.8 h]; MMS - Bracing - Construction [486 TBL]; FT Manpower [2430 h] |
| S06A-CC-6930 | Block-10 -MMS Erection - Purlin | 2026-10-22 → 2026-10-20 (-2d) | 2026-11-18 → 2026-11-16 (-2d) |  | 45.7d → 64.8d |  | resources none → Weightage [14406.8 h]; MMS - FT Purlin - Construction [486 TBL]; FT Manpower [2430 h] |
| S06A-CC-6940 | Block-10 -MMS - RFI Completion | 2026-10-26 → 2026-10-24 (-2d) | 2026-11-22 → 2026-11-20 (-2d) |  | 45.7d → 64.8d |  | resources none → Weightage [7203.4 h]; FT Manpower [1400 h] |
| S06A-CC-6950 | Block-10 -Module Installation | 2026-12-03 → 2026-11-25 (-8d) | 2027-01-11 → 2027-01-03 (-8d) |  | 11.7d → 36.8d |  | resources none → Weightage [56598.1 h]; Module - Construction [17 MWdc]; Module Manpower [8400 h] |
| S06A-CC-6970 | Block-10 -DC Cable Laying | 2026-12-04 → 2026-11-26 (-8d) | 2027-01-02 → 2026-12-25 (-8d) |  | 27.7d → 52.8d |  | resources none → Weightage [12348.7 h]; DC Cable - Construction [99 KM]; ACDC Manpower [2200 h] |
| S06A-CC-6960 | Block-10 -Module - RFI Completion | 2026-12-07 → 2026-11-29 (-8d) | 2027-01-15 → 2027-01-07 (-8d) |  | 17.7d → 42.8d |  | resources none → Weightage [4116.23 h]; Module Manpower [1200 h] |
| S06A-CC-6890 | Block-10 -Piling - Robotic Docking System | 2026-11-02 → 2026-11-30 (+28d) | 2026-11-11 → 2026-12-09 (+28d) |  | 53.7d → 42.8d |  | resources none → Piling Stub - Robot Docking - Construction [25 NoS]; Weightage [1543.59 h]; Piling Manpower [300 h] |
| S06A-CC-7000 | Block-10 -Robotic Structure - Docking Station Installation | 2026-12-11 → 2026-12-10 (-1d) | 2026-12-20 → 2026-12-19 (-1d) |  | 24.7d → 42.8d |  | resources none → Weightage [1543.59 h]; Robot Structure - Docking - Construction [40 NoS]; Robot Installation Manpower [300 h] |
| S06A-CC-7010 | Block-10 -Robotic Structure - Reverse Station Installation | 2026-12-11 → 2026-12-10 (-1d) | 2026-12-20 → 2026-12-19 (-1d) |  | 37.7d → 55.8d |  | resources none → Weightage [1543.59 h]; Robot Structure - Reverse - Construction [40 NoS]; Robot Installation Manpower [300 h] |
| S06A-CC-6980 | Block-10 -Module Interconnection & MC4 Termination | 2026-12-19 → 2026-12-11 (-8d) | 2027-01-12 → 2027-01-04 (-8d) |  | 19.7d → 44.8d |  | resources none → Weightage [7203.4 h]; MC4 Connector - Construction [3888 NoS]; ACDC Manpower [2592 h] |
| S06A-CC-7030 | Block-10 -Robot Installation | 2026-12-15 → 2026-12-14 (-1d) | 2027-01-13 → 2027-01-12 (-1d) |  | 24.7d → 42.8d |  | resources none → Weightage [3087.17 h]; Robots - Construction [40 NoS]; Robot Installation Manpower [600 h] |
| S06A-CC-6990 | Block-10 -VOC Testing | 2026-12-24 → 2026-12-16 (-8d) | 2027-01-14 → 2027-01-06 (-8d) |  | 19.7d → 44.8d |  | resources none → Weightage [617.43 h]; ACDC Manpower [220 h] |
| S06A-CC-7020 | Block-10 -Robotic Structure - Bridges Installation | 2026-12-24 → 2026-12-16 (-8d) | 2027-01-12 → 2027-01-04 (-8d) |  | 32.7d → 57.8d |  | resources none → Weightage [5145.28 h]; Robot Structure - Bridges - Construction [300 NoS]; Robot Installation Manpower [2200 h] |
| 2 | **CONSTRUCTION-PV AREA-AC SIDE** |  | 2026-12-25 → 2026-12-06 (-19d) |  |  |  |  |
| S06A-CC-7040 | Block-10 -IDT Foundation Up To Rail |  | 2026-10-07 → 2026-09-11 A (-26d) | 75% → 100% | 60.7d → none |  | resources none → Weightage [7717.93 h]; IDT Station - Rail - Construction [1 NoS]; IDT Station - Foundation Bolt & Inserts - Construction [1 NoS]; IDT Station - Rebar - Construction [1 NoS]; IDT Civil Manpower [1470 h] |
| S06A-CC-7050 | Block-10 -HT & LT Station - Slab |  | 2026-10-07 → 2026-09-07 A (-30d) | 62% → 100% | 72.7d → none |  | resources none → Weightage [5402.55 h]; IDT Station - Foundation Bolt & Inserts - Construction [1 NoS]; IDT Station - Rebar - Construction [1 NoS]; IDT Civil Manpower [1200 h] |
| S06A-CC-7080 | Block-10 -IDT Foundation - Grade Slab Casting & Dyke Wall | 2026-10-08 → 2026-08-16 A (-53d) | 2026-10-16 → 2026-10-03 (-13d) | 0% → 80% | 84.7d → 114.8d |  | resources none → Weightage [4630.76 h]; IDT Station - Rebar - Construction [1 NoS]; IDT Civil Manpower [990 h] |
| S06A-CC-7090 | Block-10 -NIFPS Foundation | 2026-10-08 → 2026-10-01 (-7d) | 2026-10-17 → 2026-10-11 (-6d) |  | 60.7d → 83.8d |  | resources none → Weightage [1029.06 h]; IDT Station - Rebar - Construction [1 NoS]; IDT Civil Manpower [300 h] |
| S06A-CC-7100 | Block-10 -BOT Foundation | 2026-10-08 → 2026-10-01 (-7d) | 2026-10-17 → 2026-10-11 (-6d) |  | 83.7d → 106.8d |  | resources none → Weightage [3858.96 h]; IDT Station - Rebar - Construction [1 NoS]; IDT Civil Manpower [800 h] |
| S06A-CC-7110 | Block-10 -Aux Transformer Foundation | 2026-10-08 → 2026-10-01 (-7d) | 2026-10-12 → 2026-10-06 (-6d) |  | 82.7d → 105.8d |  | resources none → Weightage [1029.06 h]; IDT Station - Rebar - Construction [1 NoS]; IDT Civil Manpower [250 h] |
| S06A-CC-7060 | Block-10 -HT & LT Station - Shed Installation | 2026-10-11 → 2026-10-05 (-6d) | 2026-10-15 → 2026-10-09 (-6d) |  | 72.7d → 95.8d |  | resources none → Weightage [1080.51 h]; IDT Shed - Construction [1 NoS]; IDT Civil Manpower [250 h] |
| S06A-CC-7150 | Block-10 -HT LT Station - Staircase | 2026-10-11 → 2026-10-05 (-6d) | 2026-10-12 → 2026-10-06 (-6d) |  | 95.7d → 118.8d |  | resources none → Weightage [205.81 h]; IDT Civil Manpower [40 h] |
| S06A-CC-7070 | Block-10 -HT & LT Station - Sheeting Installation | 2026-10-16 → 2026-10-10 (-6d) | 2026-10-17 → 2026-10-11 (-6d) |  | 72.7d → 95.8d |  | resources none → Weightage [1080.51 h]; IDT Sheeting - Construction [1 NoS]; IDT Civil Manpower [240 h] |
| S06A-CC-7180 | Block-10 -HT Cable Laying | 2026-10-01 → 2026-10-11 (+10d) | 2026-10-08 → 2026-10-17 (+9d) |  | 98.7d → 106.8d |  | resources none → Weightage [2881.36 h]; HT Cable - Construction [5.06 KM]; ACDC Manpower [767 h] |
| S06A-CC-7260 | Block-10 -ACDB Installation | 2026-12-16 → 2026-10-12 (-65d) | 2026-12-17 → 2026-10-13 (-65d) |  | 22.7d → 104.8d |  | resources none → Weightage [205.81 h]; ACDB - Construction [1 NoS]; ACDC Manpower [40 h] |
| S06A-CC-7220 | Block-10 -LT Panel Erection | 2026-10-26 → 2026-10-14 (-12d) | 2026-10-31 → 2026-10-19 (-12d) |  | 66.7d → 95.8d |  | resources none → Weightage [823.25 h]; LT Panel - Construction [16 NoS]; ACDC Manpower [180 h] |
| S06A-CC-7190 | Block-10 -FO Cable Laying | 2026-10-01 → 2026-10-15 (+14d) | 2026-10-08 → 2026-10-22 (+14d) |  | 98.7d → 102.1d |  | resources none → Weightage [3601.7 h]; FO Cable - Construction [4 KM]; ACDC Manpower [700 h] |
| S06A-CC-7200 | Block-10 -Control Cable Laying | 2026-11-09 → 2026-10-16 (-24d) | 2026-11-14 → 2026-10-21 (-24d) |  | 56d → 97.1d |  | resources none → Weightage [308.72 h]; Control Cable - Construction [1 KM]; ACDC Manpower [100 h] |
| S06A-CC-7250 | Block-10 -SCADA & SACU Installation | 2026-11-09 → 2026-10-16 (-24d) | 2026-11-14 → 2026-10-21 (-24d) |  | 56d → 97.1d |  | resources none → Weightage [205.81 h]; SCADA & SACU - Construction [1 NoS]; ACDC Manpower [50 h] |
| S06A-CC-7270 | Block-10 -Aux Transformer - Installation | 2026-12-16 → 2026-10-20 (-57d) | 2026-12-19 → 2026-10-24 (-56d) |  | 21.7d → 95.1d | S06A-CC-7110 FS+3d, S06A-PR-6650 SS → S06A-CC-7110 FS+3d, S06A-PR-6650 SS+10d | resources none → Weightage [411.62 h]; Aux Transformer - Construction [1 NoS]; ACDC Manpower [80 h] |
| S06A-CC-7210 | Block-10 -HT Panel Erection | 2026-10-28 → 2026-10-21 (-7d) | 2026-10-28 → 2026-10-21 (-7d) |  | 69.7d → 93.8d |  | resources none → Weightage [308.72 h]; HT Panel - Construction [1 NoS]; ACDC Manpower [60 h] |

| ID | Task | Start | Finish | Complete | Total float | Predecessors | Other |
| --- | --- | --- | --- | --- | --- | --- | --- |
| S06A-CC-7160 | Block-10 -Cable Hanger - Structure & Messenger Wire Erection | 2026-10-31 → 2026-10-30 (-1d) | 2026-11-04 → 2026-11-03 (-1d) |  | 54.7d → 72.8d |  | resources none → Weightage [1543.59 h]; LT Cable - Hangers - Construction [1 Lot]; LT Cable - Support Structure - Construction [1 Lot]; LT Cable - Clamps - Construction [1 Lot]; LT Cable - Messenger wire - Construction [3.02 KM]; LT Cable - Fasteners - Construction [1 Lot]; ACDC Manpower [178 h] |
| S06A-CC-7170 | Block-10 -LT Cable Laying | 2026-11-02 → 2026-11-01 (-1d) | 2026-11-21 → 2026-11-20 (-1d) |  | 54.7d → 72.8d |  | resources none → Weightage [11113.8 h]; LT Cable - Construction [10.01 KM]; ACDC Manpower [1669 h] |
| S06A-CC-7240 | Block-10 -Inverter Installation | 2026-11-03 → 2026-11-01 (-2d) | 2026-11-09 → 2026-11-07 (-2d) |  | 63.7d → 82.8d |  | resources none → Weightage [1440.68 h]; Invertor - Construction [47 NoS]; ACDC Manpower [280 h] |
| S06A-CC-7310 | Block-10 -LT Cable Terminations - Inverter to LT Panel | 2026-12-16 → 2026-11-16 (-30d) | 2026-12-22 → 2026-11-22 (-30d) |  | 25.7d → 72.8d |  | resources none → Weightage [720.34 h]; ACDC Manpower [210 h] |
| S06A-CC-7230 | Block-10 -IDT Erection | 2026-10-26 → 2026-11-20 (+25d) | 2026-10-30 → 2026-11-24 (+25d) |  | 63.7d → 55.8d |  | resources none → Weightage [1543.59 h]; IDT - Construction [1 NoS]; ACDC Manpower [350 h] |
| S06A-CC-7280 | Block-10 -NIFPS - Installation | 2026-10-26 → 2026-11-20 (+25d) | 2026-11-04 → 2026-11-29 (+25d) |  | 58.7d → 50.8d |  | resources none → Weightage [1080.51 h]; NIFPS - Construction [1 NoS]; ACDC Manpower [200 h] |
| S06A-CC-7290 | Block-10 -HT Cable Terminations - IDT Side | 2026-12-16 → 2026-11-25 (-21d) | 2026-12-17 → 2026-11-26 (-21d) |  | 30.7d → 68.8d |  | resources none → Weightage [205.81 h]; ACDC Manpower [70 h] |
| S06A-CC-7300 | Block-10 -LT Cable Terminations - LT Panel to IDT | 2026-12-16 → 2026-11-25 (-21d) | 2026-12-22 → 2026-12-01 (-21d) |  | 25.7d → 63.8d |  | resources none → Weightage [1440.68 h]; ACDC Manpower [300 h] |
| S06A-CC-7140 | Block-10 -IDT Area - Gravel Filling | 2026-12-18 → 2026-11-30 (-18d) | 2026-12-22 → 2026-12-04 (-18d) |  | 22.7d → 57.8d |  | resources none → Weightage [308.72 h]; IDT Civil Manpower [100 h] |
| S06A-CC-7120 | Block-10 -IDT Area - Fencing | 2026-12-20 → 2026-12-01 (-19d) | 2026-12-24 → 2026-12-05 (-19d) |  | 21.7d → 57.8d |  | resources none → Weightage [617.43 h]; IDT - Fencing - Construction - Construction [1 NoS]; IDT Civil Manpower [150 h] |
| S06A-CC-7130 | Block-10 -IDT Area - Gate Installation | 2026-12-25 → 2026-12-06 (-19d) | 2026-12-25 → 2026-12-06 (-19d) |  | 21.7d → 57.8d |  | resources none → Weightage [308.72 h]; IDT - Gate - Construction [1 NoS]; IDT Civil Manpower [50 h] |
| 3 | **CONSTRUCTION-PV AREA-PRE COMMISSIONING** | 2026-10-29 → 2026-10-20 (-9d) | 2026-12-31 → 2026-12-10 (-21d) |  |  |  |  |
| S06A-CC-7350 | Block-10 -LT Panel Testing | 2026-11-01 → 2026-10-20 (-12d) | 2026-11-01 → 2026-10-20 (-12d) |  | 66.7d → 95.8d |  | resources none → Weightage [205.81 h]; LT Panel Testing [40 h] |
| S06A-CC-7340 | Block-10 -HT Panel Testing | 2026-10-29 → 2026-10-22 (-7d) | 2026-10-29 → 2026-10-22 (-7d) |  | 69.7d → 93.8d |  | resources none → Weightage [102.91 h]; HT Panel Testing [20 h] |
| S06A-CC-7320 | Block-10 -IDT Filtration | 2026-11-05 → 2026-11-30 (+25d) | 2026-11-07 → 2026-12-02 (+25d) |  | 58.7d → 50.8d |  | resources none → Weightage [154.36 h]; IDT Filtration & Testing [30 h] |
| S06A-CC-7360 | Block-10 -Inspection Offer To Asset Commissioning Team | 2026-12-23 → 2026-12-02 (-21d) | 2026-12-23 → 2026-12-02 (-21d) |  | 25.7d → 63.8d |  | resources none → Weightage [51.45 h] |
| S06A-CC-7330 | Block-10 -IDT Testing | 2026-11-08 → 2026-12-03 (+25d) | 2026-11-09 → 2026-12-04 (+25d) |  | 58.7d → 50.8d |  | resources none → Weightage [102.91 h]; IDT Filtration & Testing [20 h] |
| S06A-CC-7370 | Block-10 -Punch Point Identification By Asset Commissioning Team | 2026-12-24 → 2026-12-03 (-21d) | 2026-12-26 → 2026-12-05 (-21d) |  | 25.7d → 63.8d |  | resources none → Weightage [308.72 h] |
| S06A-CC-7380 | Block-10 -Punch Point Rectification And Pre Charging Sign Off | 2026-12-27 → 2026-12-06 (-21d) | 2026-12-31 → 2026-12-10 (-21d) |  | 25.7d → 63.8d |  | resources none → Weightage [463.08 h] |
| 4 | **CONSTRUCTION-COMMISSIONING** |  | 2027-01-30 → 2027-01-21 (-9d) |  |  |  |  |
| S06A-CC-7390 | Block-10 -CEA Application |  | 2026-12-06 → 2026-12-05 (-1d) |  | 33d → 50.8d |  | resources none → Weightage [51.45 h] |
| S06A-CC-7400 | Block-10 -CEA Inspection | 2026-12-26 → 2026-12-14 (-12d) | 2026-12-26 → 2026-12-14 (-12d) |  | 21.7d → 50.8d |  | resources none → Weightage [51.45 h] |
| S06A-CC-7410 | Block-10 -CEA Compliance & Approval | 2026-12-28 → 2026-12-16 (-12d) | 2027-01-01 → 2026-12-20 (-12d) |  | 21.7d → 50.8d |  | resources none → Weightage [411.62 h] |
| S06A-CC-7420 | Block-10 -First Time Charging - Application | 2027-01-12 → 2027-01-04 (-8d) | 2027-01-12 → 2027-01-04 (-8d) |  | 11.7d → 36.8d |  | resources none → Weightage [51.45 h] |
| S06A-CC-7430 | Block-10 -First Time Charging - Approval | 2027-01-13 → 2027-01-05 (-8d) | 2027-01-14 → 2027-01-06 (-8d) |  | 11.7d → 36.8d |  | resources none → Weightage [308.72 h] |
| S06A-CC-7440 | Block-10 -First Time Charging | 2027-01-15 → 2027-01-07 (-8d) | 2027-01-15 → 2027-01-07 (-8d) |  | 11.7d → 36.8d |  | resources none → Weightage [102.91 h] |
| S06A-CC-7450 | Block-10 -Tracker Commissioning - SCADA | 2027-01-15 → 2027-01-07 (-8d) | 2027-01-22 → 2027-01-14 (-8d) |  | 16.7d → 41.8d |  | resources none → Weightage [1080.51 h] |
| S06A-CC-7460 | Block-10 -Robot Commissioning - SCADA | 2027-01-15 → 2027-01-07 (-8d) | 2027-01-27 → 2027-01-18 (-9d) |  | 12.7d → 37.8d |  | resources none → Weightage [6174.34 h] |
| S06A-CC-7470 | Block-10 -Trial Operation | 2027-01-22 → 2027-01-14 (-8d) | 2027-01-22 → 2027-01-14 (-8d) |  | 11.7d → 36.8d |  | resources none → Weightage [102.91 h] |
| S06A-CC-7480 | Block-10 -Trial Run Certificate | 2027-01-25 → 2027-01-17 (-8d) | 2027-01-25 → 2027-01-17 (-8d) |  | 11.7d → 36.8d |  | resources none → Weightage [51.45 h] |
| S06A-CC-7490 | Block-10 -COD | 2027-01-29 → 2027-01-20 (-9d) | 2027-01-30 → 2027-01-21 (-9d) |  | 11.7d → 36.8d |  | resources none → Weightage [360.17 h] |
| 3 | **BLOCK-11** |  | 2027-01-30 → 2027-01-21 (-9d) |  |  |  |  |
| 1 | **CONSTRUCTION-PV AREA-DC SIDE** |  | 2027-01-15 → 2027-01-12 (-3d) |  |  |  |  |
| S06A-CC-7500 | Block-11 -Piling - MMS (Marking, Auguring & Concreting) |  | 2026-10-11 → 2026-10-06 (-5d) | 70% → 86% | 47.7d → 64.8d |  | resources none → Weightage [17288.2 h]; Piling Stub - MMS - Construction [5832 NoS]; Piling Manpower [2651 h] |
| S06A-CC-7510 | Block-11 -Pile Capping |  | 2026-10-20 → 2026-10-16 (-4d) | 37% → 50% | 74.7d → 95.8d |  | resources none → Weightage [8644.08 h]; Piling Manpower [1268 h] |
| S06A-CC-7550 | Block-11 -Array Earthing |  |  |  | 57.7d → 74.8d |  | resources none → Earthing - Construction [5.21 KM]; Weightage [4939.47 h]; ACDC Manpower [108 h] |
| S06A-CC-7530 | Block-11 -Piling - Inverters | 2026-10-01 → 2026-10-10 (+9d) | 2026-10-17 → 2026-10-25 (+8d) |  | 77.7d → 86.8d |  | resources none → Weightage [2469.74 h]; Piling Stub - Invertor - Construction [94 NoS]; Piling Manpower [470 h] |
| S06A-CC-7520 | Block-11 -Piling - LT Cable Hanger System | 2026-10-01 → 2026-10-11 (+10d) | 2026-10-21 → 2026-10-30 (+9d) |  | 64.7d → 72.8d |  | resources none → Weightage [2058.11 h]; Piling Stub - LT Cable Hanger - Construction [545 NoS]; Piling Manpower [495 h] |
| S06A-CC-7560 | Block-11 -MMS Erection - Torque Tube/Raftar |  |  |  | 47.7d → 64.8d |  | resources none → Weightage [59067.9 h]; MMS - Rafter - Construction [486 TBL]; FT Manpower [4860 h] |
| S06A-CC-7570 | Block-11 -MMS Erection - Transmission Shaft/Bracing |  |  |  | 51.7d → 68.8d |  | resources none → Weightage [14406.8 h]; MMS - Bracing - Construction [486 TBL]; FT Manpower [2430 h] |
| S06A-CC-7580 | Block-11 -MMS Erection - Purlin |  |  |  | 47.7d → 64.8d |  | resources none → Weightage [14406.8 h]; MMS - FT Purlin - Construction [486 TBL]; FT Manpower [2430 h] |
| S06A-CC-7590 | Block-11 -MMS - RFI Completion |  |  |  | 47.7d → 64.8d |  | resources none → Weightage [7203.4 h]; FT Manpower [1400 h] |
| S06A-CC-7600 | Block-11 -Module Installation | 2026-12-03 → 2026-11-25 (-8d) | 2027-01-11 → 2027-01-03 (-8d) |  | 11.7d → 36.8d |  | resources none → Weightage [56598.1 h]; Module - Construction [17 MWdc]; Module Manpower [8400 h] |
| S06A-CC-7620 | Block-11 -DC Cable Laying | 2026-12-04 → 2026-11-26 (-8d) | 2027-01-02 → 2026-12-25 (-8d) |  | 27.7d → 52.8d |  | resources none → Weightage [12348.7 h]; DC Cable - Construction [99 KM]; ACDC Manpower [2200 h] |
| S06A-CC-7610 | Block-11 -Module - RFI Completion | 2026-12-07 → 2026-11-29 (-8d) | 2027-01-15 → 2027-01-07 (-8d) |  | 17.7d → 42.8d |  | resources none → Weightage [4116.23 h]; Module Manpower [1200 h] |
| S06A-CC-7540 | Block-11 -Piling - Robotic Docking System | 2026-11-02 → 2026-11-30 (+28d) | 2026-11-11 → 2026-12-09 (+28d) |  | 53.7d → 42.8d |  | resources none → Piling Stub - Robot Docking - Construction [25 NoS]; Weightage [1543.59 h]; Piling Manpower [300 h] |
| S06A-CC-7650 | Block-11 -Robotic Structure - Docking Station Installation | 2026-12-11 → 2026-12-10 (-1d) | 2026-12-20 → 2026-12-19 (-1d) |  | 24.7d → 42.8d |  | resources none → Weightage [1543.59 h]; Robot Structure - Docking - Construction [40 NoS]; Robot Installation Manpower [300 h] |
| S06A-CC-7660 | Block-11 -Robotic Structure - Reverse Station Installation | 2026-12-11 → 2026-12-10 (-1d) | 2026-12-20 → 2026-12-19 (-1d) |  | 37.7d → 55.8d |  | resources none → Weightage [1543.59 h]; Robot Structure - Reverse - Construction [40 NoS]; Robot Installation Manpower [300 h] |
| S06A-CC-7630 | Block-11 -Module Interconnection & MC4 Termination | 2026-12-19 → 2026-12-11 (-8d) | 2027-01-12 → 2027-01-04 (-8d) |  | 19.7d → 44.8d |  | resources none → Weightage [7203.4 h]; MC4 Connector - Construction [3888 NoS]; ACDC Manpower [2592 h] |
| S06A-CC-7680 | Block-11 -Robot Installation | 2026-12-15 → 2026-12-14 (-1d) | 2027-01-13 → 2027-01-12 (-1d) |  | 24.7d → 42.8d |  | resources none → Weightage [3087.17 h]; Robots - Construction [40 NoS]; Robot Installation Manpower [600 h] |
| S06A-CC-7640 | Block-11 -VOC Testing | 2026-12-24 → 2026-12-16 (-8d) | 2027-01-14 → 2027-01-06 (-8d) |  | 19.7d → 44.8d |  | resources none → Weightage [617.43 h]; ACDC Manpower [220 h] |
| S06A-CC-7670 | Block-11 -Robotic Structure - Bridges Installation | 2026-12-24 → 2026-12-16 (-8d) | 2027-01-12 → 2027-01-04 (-8d) |  | 32.7d → 57.8d |  | resources none → Weightage [5145.28 h]; Robot Structure - Bridges - Construction [300 NoS]; Robot Installation Manpower [2200 h] |
| 2 | **CONSTRUCTION-PV AREA-AC SIDE** |  | 2026-12-25 → 2026-12-06 (-19d) |  |  |  |  |
| S06A-CC-7690 | Block-11 -IDT Foundation Up To Rail |  | 2026-10-07 → 2026-09-02 A (-35d) | 75% → 100% | 60.7d → none |  | resources none → Weightage [7717.93 h]; IDT Station - Rail - Construction [1 NoS]; IDT Station - Foundation Bolt & Inserts - Construction [1 NoS]; IDT Station - Rebar - Construction [1 NoS]; IDT Civil Manpower [1470 h] |
| S06A-CC-7700 | Block-11 -HT & LT Station - Slab |  |  |  |  |  | resources none → Weightage [5402.55 h]; IDT Station - Foundation Bolt & Inserts - Construction [1 NoS]; IDT Station - Rebar - Construction [1 NoS]; IDT Civil Manpower [1200 h] |
| S06A-CC-7730 | Block-11 -IDT Foundation - Grade Slab Casting & Dyke Wall |  | 2026-10-03 → 2026-09-11 A (-22d) | 80% → 100% | 97.7d → none |  | resources none → Weightage [4630.76 h]; IDT Station - Rebar - Construction [1 NoS]; IDT Civil Manpower [990 h] |
| S06A-CC-7740 | Block-11 -NIFPS Foundation | 2026-10-08 → 2026-10-01 (-7d) | 2026-10-17 → 2026-10-11 (-6d) |  | 60.7d → 83.8d |  | resources none → Weightage [1029.06 h]; IDT Station - Rebar - Construction [1 NoS]; IDT Civil Manpower [300 h] |
| S06A-CC-7750 | Block-11 -BOT Foundation | 2026-10-08 → 2026-10-01 (-7d) | 2026-10-17 → 2026-10-11 (-6d) |  | 83.7d → 106.8d |  | resources none → Weightage [3858.96 h]; IDT Station - Rebar - Construction [1 NoS]; IDT Civil Manpower [800 h] |
| S06A-CC-7760 | Block-11 -Aux Transformer Foundation | 2026-10-08 → 2026-10-01 (-7d) | 2026-10-12 → 2026-10-06 (-6d) |  | 82.7d → 105.8d |  | resources none → Weightage [1029.06 h]; IDT Station - Rebar - Construction [1 NoS]; IDT Civil Manpower [250 h] |
| S06A-CC-7710 | Block-11 -HT & LT Station - Shed Installation |  |  |  | 78.7d → 95.8d |  | resources none → Weightage [1080.51 h]; IDT Shed - Construction [1 NoS]; IDT Civil Manpower [250 h] |
| S06A-CC-7800 | Block-11 -HT LT Station - Staircase |  |  |  | 101.7d → 118.8d |  | resources none → Weightage [205.81 h]; IDT Civil Manpower [40 h] |
| S06A-CC-7720 | Block-11 -HT & LT Station - Sheeting Installation |  |  |  | 78.7d → 95.8d |  | resources none → Weightage [1080.51 h]; IDT Sheeting - Construction [1 NoS]; IDT Civil Manpower [240 h] |
| S06A-CC-7830 | Block-11 -HT Cable Laying | 2026-10-01 → 2026-10-11 (+10d) | 2026-10-08 → 2026-10-17 (+9d) |  | 98.7d → 106.8d |  | resources none → Weightage [2881.36 h]; HT Cable - Construction [4.86 KM]; ACDC Manpower [736 h] |
| S06A-CC-7910 | Block-11 -ACDB Installation | 2026-12-16 → 2026-10-12 (-65d) | 2026-12-17 → 2026-10-13 (-65d) |  | 22.7d → 104.8d |  | resources none → Weightage [205.81 h]; ACDB - Construction [1 NoS]; ACDC Manpower [40 h] |
| S06A-CC-7870 | Block-11 -LT Panel Erection | 2026-10-26 → 2026-10-14 (-12d) | 2026-10-31 → 2026-10-19 (-12d) |  | 66.7d → 95.8d |  | resources none → Weightage [823.25 h]; LT Panel - Construction [16 NoS]; ACDC Manpower [180 h] |
| S06A-CC-7840 | Block-11 -FO Cable Laying | 2026-10-01 → 2026-10-15 (+14d) | 2026-10-08 → 2026-10-22 (+14d) |  | 98.7d → 102.1d |  | resources none → Weightage [3601.7 h]; FO Cable - Construction [4 KM]; ACDC Manpower [700 h] |
| S06A-CC-7850 | Block-11 -Control Cable Laying | 2026-11-09 → 2026-10-16 (-24d) | 2026-11-14 → 2026-10-21 (-24d) |  | 56d → 97.1d |  | resources none → Weightage [308.72 h]; Control Cable - Construction [1 KM]; ACDC Manpower [100 h] |
| S06A-CC-7900 | Block-11 -SCADA & SACU Installation | 2026-11-09 → 2026-10-16 (-24d) | 2026-11-14 → 2026-10-21 (-24d) |  | 56d → 97.1d |  | resources none → Weightage [205.81 h]; SCADA & SACU - Construction [1 NoS]; ACDC Manpower [50 h] |
| S06A-CC-7920 | Block-11 -Aux Transformer - Installation | 2026-12-16 → 2026-10-20 (-57d) | 2026-12-19 → 2026-10-24 (-56d) |  | 21.7d → 95.1d | S06A-CC-7760 FS+3d, S06A-PR-6650 SS → S06A-CC-7760 FS+3d, S06A-PR-6650 SS+10d | resources none → Weightage [411.62 h]; Aux Transformer - Construction [1 NoS]; ACDC Manpower [80 h] |
| S06A-CC-7860 | Block-11 -HT Panel Erection | 2026-10-28 → 2026-10-21 (-7d) | 2026-10-28 → 2026-10-21 (-7d) |  | 69.7d → 93.8d |  | resources none → Weightage [308.72 h]; HT Panel - Construction [1 NoS]; ACDC Manpower [60 h] |

| ID | Task | Start | Finish | Complete | Total float | Predecessors | Other |
| --- | --- | --- | --- | --- | --- | --- | --- |
| S06A-CC-7810 | Block-11 -Cable Hanger - Structure & Messenger Wire Erection | 2026-10-21 → 2026-10-30 (+9d) | 2026-10-25 → 2026-11-03 (+9d) |  | 64.7d → 72.8d |  | resources none → Weightage [1543.59 h]; LT Cable - Hangers - Construction [1 Lot]; LT Cable - Support Structure - Construction [1 Lot]; LT Cable - Clamps - Construction [1 Lot]; LT Cable - Messenger wire - Construction [3.46 KM]; LT Cable - Fasteners - Construction [1 Lot]; ACDC Manpower [204 h] |
| S06A-CC-7890 | Block-11 -Inverter Installation |  | 2026-11-05 → 2026-11-06 (+1d) |  | 67.7d → 84.1d |  | resources none → Weightage [1440.68 h]; Invertor - Construction [47 NoS]; ACDC Manpower [280 h] |
| S06A-CC-7820 | Block-11 -LT Cable Laying | 2026-10-23 → 2026-11-01 (+9d) | 2026-11-11 → 2026-11-20 (+9d) |  | 64.7d → 72.8d |  | resources none → Weightage [11113.8 h]; LT Cable - Construction [9.58 KM]; ACDC Manpower [1596 h] |
| S06A-CC-7960 | Block-11 -LT Cable Terminations - Inverter to LT Panel | 2026-12-16 → 2026-11-16 (-30d) | 2026-12-22 → 2026-11-22 (-30d) |  | 25.7d → 72.8d |  | resources none → Weightage [720.34 h]; ACDC Manpower [210 h] |
| S06A-CC-7880 | Block-11 -IDT Erection | 2026-10-26 → 2026-11-20 (+25d) | 2026-10-30 → 2026-11-24 (+25d) |  | 63.7d → 55.8d |  | resources none → Weightage [1543.59 h]; IDT - Construction [1 NoS]; ACDC Manpower [350 h] |
| S06A-CC-7930 | Block-11 -NIFPS - Installation | 2026-10-26 → 2026-11-20 (+25d) | 2026-11-04 → 2026-11-29 (+25d) |  | 58.7d → 50.8d |  | resources none → Weightage [1080.51 h]; NIFPS - Construction [1 NoS]; ACDC Manpower [200 h] |
| S06A-CC-7940 | Block-11 -HT Cable Terminations - IDT Side | 2026-12-16 → 2026-11-25 (-21d) | 2026-12-17 → 2026-11-26 (-21d) |  | 30.7d → 68.8d |  | resources none → Weightage [205.81 h]; ACDC Manpower [70 h] |
| S06A-CC-7950 | Block-11 -LT Cable Terminations - LT Panel to IDT | 2026-12-16 → 2026-11-25 (-21d) | 2026-12-22 → 2026-12-01 (-21d) |  | 25.7d → 63.8d |  | resources none → Weightage [1440.68 h]; ACDC Manpower [300 h] |
| S06A-CC-7790 | Block-11 -IDT Area - Gravel Filling | 2026-12-18 → 2026-11-30 (-18d) | 2026-12-22 → 2026-12-04 (-18d) |  | 22.7d → 57.8d |  | resources none → Weightage [308.72 h]; IDT Civil Manpower [100 h] |
| S06A-CC-7770 | Block-11 -IDT Area - Fencing | 2026-12-20 → 2026-12-01 (-19d) | 2026-12-24 → 2026-12-05 (-19d) |  | 21.7d → 57.8d |  | resources none → Weightage [617.43 h]; IDT - Fencing - Construction - Construction [1 NoS]; IDT Civil Manpower [150 h] |
| S06A-CC-7780 | Block-11 -IDT Area - Gate Installation | 2026-12-25 → 2026-12-06 (-19d) | 2026-12-25 → 2026-12-06 (-19d) |  | 21.7d → 57.8d |  | resources none → Weightage [308.72 h]; IDT - Gate - Construction [1 NoS]; IDT Civil Manpower [50 h] |
| 3 | **CONSTRUCTION-PV AREA-PRE COMMISSIONING** | 2026-10-29 → 2026-10-20 (-9d) | 2026-12-31 → 2026-12-10 (-21d) |  |  |  |  |
| S06A-CC-8000 | Block-11 -LT Panel Testing | 2026-11-01 → 2026-10-20 (-12d) | 2026-11-01 → 2026-10-20 (-12d) |  | 66.7d → 95.8d |  | resources none → Weightage [205.81 h]; LT Panel Testing [40 h] |
| S06A-CC-7990 | Block-11 -HT Panel Testing | 2026-10-29 → 2026-10-22 (-7d) | 2026-10-29 → 2026-10-22 (-7d) |  | 69.7d → 93.8d |  | resources none → Weightage [102.91 h]; HT Panel Testing [20 h] |
| S06A-CC-7970 | Block-11 -IDT Filtration | 2026-11-05 → 2026-11-30 (+25d) | 2026-11-07 → 2026-12-02 (+25d) |  | 58.7d → 50.8d |  | resources none → Weightage [154.36 h]; IDT Filtration & Testing [30 h] |
| S06A-CC-8010 | Block-11 -Inspection Offer To Asset Commissioning Team | 2026-12-23 → 2026-12-02 (-21d) | 2026-12-23 → 2026-12-02 (-21d) |  | 25.7d → 63.8d |  | resources none → Weightage [51.45 h] |
| S06A-CC-7980 | Block-11 -IDT Testing | 2026-11-08 → 2026-12-03 (+25d) | 2026-11-09 → 2026-12-04 (+25d) |  | 58.7d → 50.8d |  | resources none → Weightage [102.91 h]; IDT Filtration & Testing [20 h] |
| S06A-CC-8020 | Block-11 -Punch Point Identification By Asset Commissioning Team | 2026-12-24 → 2026-12-03 (-21d) | 2026-12-26 → 2026-12-05 (-21d) |  | 25.7d → 63.8d |  | resources none → Weightage [308.72 h] |
| S06A-CC-8030 | Block-11 -Punch Point Rectification And Pre Charging Sign Off | 2026-12-27 → 2026-12-06 (-21d) | 2026-12-31 → 2026-12-10 (-21d) |  | 25.7d → 63.8d |  | resources none → Weightage [463.08 h] |
| 4 | **CONSTRUCTION-COMMISSIONING** |  | 2027-01-30 → 2027-01-21 (-9d) |  |  |  |  |
| S06A-CC-8040 | Block-11 -CEA Application |  | 2026-12-06 → 2026-12-05 (-1d) |  | 33d → 50.8d |  | resources none → Weightage [51.45 h] |
| S06A-CC-8050 | Block-11 -CEA Inspection | 2026-12-26 → 2026-12-14 (-12d) | 2026-12-26 → 2026-12-14 (-12d) |  | 21.7d → 50.8d |  | resources none → Weightage [51.45 h] |
| S06A-CC-8060 | Block-11 -CEA Compliance & Approval | 2026-12-28 → 2026-12-16 (-12d) | 2027-01-01 → 2026-12-20 (-12d) |  | 21.7d → 50.8d |  | resources none → Weightage [411.62 h] |
| S06A-CC-8070 | Block-11 -First Time Charging - Application | 2027-01-12 → 2027-01-04 (-8d) | 2027-01-12 → 2027-01-04 (-8d) |  | 11.7d → 36.8d |  | resources none → Weightage [51.45 h] |
| S06A-CC-8080 | Block-11 -First Time Charging - Approval | 2027-01-13 → 2027-01-05 (-8d) | 2027-01-14 → 2027-01-06 (-8d) |  | 11.7d → 36.8d |  | resources none → Weightage [308.72 h] |
| S06A-CC-8090 | Block-11 -First Time Charging | 2027-01-15 → 2027-01-07 (-8d) | 2027-01-15 → 2027-01-07 (-8d) |  | 11.7d → 36.8d |  | resources none → Weightage [102.91 h] |
| S06A-CC-8100 | Block-11-Tracker Commissioning - SCADA | 2027-01-15 → 2027-01-07 (-8d) | 2027-01-22 → 2027-01-14 (-8d) |  | 16.7d → 41.8d |  | resources none → Weightage [1080.51 h] |
| S06A-CC-8110 | Block-11 -Robot Commissioning - SCADA | 2027-01-15 → 2027-01-07 (-8d) | 2027-01-27 → 2027-01-18 (-9d) |  | 12.7d → 37.8d |  | resources none → Weightage [6174.34 h] |
| S06A-CC-8120 | Block-11 -Trial Operation | 2027-01-22 → 2027-01-14 (-8d) | 2027-01-22 → 2027-01-14 (-8d) |  | 11.7d → 36.8d |  | resources none → Weightage [102.91 h] |
| S06A-CC-8130 | Block-11 -Trial Run Certificate | 2027-01-25 → 2027-01-17 (-8d) | 2027-01-25 → 2027-01-17 (-8d) |  | 11.7d → 36.8d |  | resources none → Weightage [51.45 h] |
| S06A-CC-8140 | Block-11 -COD | 2027-01-29 → 2027-01-20 (-9d) | 2027-01-30 → 2027-01-21 (-9d) |  | 11.7d → 36.8d |  | resources none → Weightage [360.17 h] |
| 4 | **BLOCK-12** |  | 2027-01-30 → 2027-01-21 (-9d) |  |  |  |  |
| 1 | **CONSTRUCTION-PV AREA-DC SIDE** | 2026-10-01 → 2026-08-30 (-32d) | 2027-01-15 → 2027-01-12 (-3d) |  |  |  |  |
| S06A-CC-8150 | Block-12 -Piling - MMS (Marking, Auguring & Concreting) | 2026-10-01 → 2026-08-30 A (-32d) | 2026-10-31 → 2026-10-20 (-11d) | 0% → 34% | 45.7d → 64.8d |  | resources none → Weightage [17288.2 h]; Piling Stub - MMS - Construction [5832 NoS]; Piling Manpower [2651 h] |
| S06A-CC-8160 | Block-12 -Pile Capping |  |  |  | 56.7d → 73.8d |  | resources none → Weightage [8644.08 h]; Piling Manpower [1268 h] |
| S06A-CC-8200 | Block-12 -Array Earthing |  |  |  | 57.7d → 74.8d |  | resources none → Earthing - Construction [5.32 KM]; Weightage [4939.47 h]; ACDC Manpower [108 h] |
| S06A-CC-8180 | Block-12 -Piling - Inverters | 2026-10-16 → 2026-10-10 (-6d) | 2026-10-31 → 2026-10-25 (-6d) |  | 63.7d → 86.8d |  | resources none → Weightage [2469.74 h]; Piling Stub - Invertor - Construction [94 NoS]; Piling Manpower [470 h] |
| S06A-CC-8170 | Block-12 -Piling - LT Cable Hanger System | 2026-10-12 → 2026-10-11 (-1d) | 2026-10-31 → 2026-10-30 (-1d) |  | 54.7d → 72.8d |  | resources none → Weightage [2058.11 h]; Piling Stub - LT Cable Hanger - Construction [545 NoS]; Piling Manpower [495 h] |
| S06A-CC-8210 | Block-12 -MMS Erection - Torque Tube/Raftar | 2026-10-18 → 2026-10-16 (-2d) | 2026-11-14 → 2026-11-12 (-2d) |  | 45.7d → 64.8d |  | resources none → Weightage [59067.9 h]; MMS - Rafter - Construction [345 TBL]; FT Manpower [4860 h] |
| S06A-CC-8220 | Block-12 -MMS Erection - Transmission Shaft/Bracing | 2026-10-22 → 2026-10-20 (-2d) | 2026-11-18 → 2026-11-16 (-2d) |  | 49.7d → 68.8d |  | resources none → Weightage [14406.8 h]; MMS - Bracing - Construction [486 TBL]; FT Manpower [2430 h] |
| S06A-CC-8230 | Block-12 -MMS Erection - Purlin | 2026-10-22 → 2026-10-20 (-2d) | 2026-11-18 → 2026-11-16 (-2d) |  | 45.7d → 64.8d |  | resources none → Weightage [14406.8 h]; MMS - FT Purlin - Construction [486 TBL]; FT Manpower [2430 h] |
| S06A-CC-8240 | Block-12 -MMS - RFI Completion | 2026-10-26 → 2026-10-24 (-2d) | 2026-11-22 → 2026-11-20 (-2d) |  | 45.7d → 64.8d |  | resources none → Weightage [7203.4 h]; FT Manpower [1400 h] |
| S06A-CC-8250 | Block-12 -Module Installation | 2026-12-03 → 2026-11-25 (-8d) | 2027-01-11 → 2027-01-03 (-8d) |  | 11.7d → 36.8d |  | resources none → Weightage [56598.1 h]; Module - Construction [17 MWdc]; Module Manpower [8400 h] |
| S06A-CC-8270 | Block-12 -DC Cable Laying | 2026-12-04 → 2026-11-26 (-8d) | 2027-01-02 → 2026-12-25 (-8d) |  | 27.7d → 52.8d |  | resources none → Weightage [12348.7 h]; DC Cable - Construction [99 KM]; ACDC Manpower [2200 h] |
| S06A-CC-8260 | Block-12 -Module - RFI Completion | 2026-12-07 → 2026-11-29 (-8d) | 2027-01-15 → 2027-01-07 (-8d) |  | 17.7d → 42.8d |  | resources none → Weightage [4116.23 h]; Module Manpower [1200 h] |
| S06A-CC-8190 | Block-12 -Piling - Robotic Docking System | 2026-11-02 → 2026-11-30 (+28d) | 2026-11-11 → 2026-12-09 (+28d) |  | 53.7d → 42.8d |  | resources none → Piling Stub - Robot Docking - Construction [25 NoS]; Weightage [1543.59 h]; Piling Manpower [300 h] |
| S06A-CC-8300 | Block-12 -Robotic Structure - Docking Station Installation | 2026-12-11 → 2026-12-10 (-1d) | 2026-12-20 → 2026-12-19 (-1d) |  | 24.7d → 42.8d |  | resources none → Weightage [1543.59 h]; Robot Structure - Docking - Construction [40 NoS]; Robot Installation Manpower [300 h] |
| S06A-CC-8310 | Block-12 -Robotic Structure - Reverse Station Installation | 2026-12-11 → 2026-12-10 (-1d) | 2026-12-20 → 2026-12-19 (-1d) |  | 37.7d → 55.8d |  | resources none → Weightage [1543.59 h]; Robot Structure - Reverse - Construction [40 NoS]; Robot Installation Manpower [300 h] |
| S06A-CC-8280 | Block-12 -Module Interconnection & MC4 Termination | 2026-12-19 → 2026-12-11 (-8d) | 2027-01-12 → 2027-01-04 (-8d) |  | 19.7d → 44.8d |  | resources none → Weightage [7203.4 h]; MC4 Connector - Construction [3888 NoS]; ACDC Manpower [2592 h] |
| S06A-CC-8330 | Block-12 -Robot Installation | 2026-12-15 → 2026-12-14 (-1d) | 2027-01-13 → 2027-01-12 (-1d) |  | 24.7d → 42.8d |  | resources none → Weightage [3087.17 h]; Robots - Construction [40 NoS]; Robot Installation Manpower [600 h] |
| S06A-CC-8290 | Block-12 -VOC Testing | 2026-12-24 → 2026-12-16 (-8d) | 2027-01-14 → 2027-01-06 (-8d) |  | 19.7d → 44.8d |  | resources none → Weightage [617.43 h]; ACDC Manpower [220 h] |
| S06A-CC-8320 | Block-12 -Robotic Structure - Bridges Installation | 2026-12-24 → 2026-12-16 (-8d) | 2027-01-12 → 2027-01-04 (-8d) |  | 32.7d → 57.8d |  | resources none → Weightage [5145.28 h]; Robot Structure - Bridges - Construction [300 NoS]; Robot Installation Manpower [2200 h] |
| 2 | **CONSTRUCTION-PV AREA-AC SIDE** |  | 2026-12-25 → 2026-12-06 (-19d) |  |  |  |  |
| S06A-CC-8340 | Block-12 -IDT Foundation Up To Rail |  |  |  | 60.7d → 77.8d |  | resources none → Weightage [7717.93 h]; IDT Station - Rail - Construction [1 NoS]; IDT Station - Foundation Bolt & Inserts - Construction [1 NoS]; IDT Station - Rebar - Construction [1 NoS]; IDT Civil Manpower [1470 h] |
| S06A-CC-8350 | Block-12 -HT & LT Station - Slab |  |  |  | 72.7d → 89.8d |  | resources none → Weightage [5402.55 h]; IDT Station - Foundation Bolt & Inserts - Construction [1 NoS]; IDT Station - Rebar - Construction [1 NoS]; IDT Civil Manpower [1200 h] |
| S06A-CC-8380 | Block-12 -IDT Foundation - Grade Slab Casting & Dyke Wall |  |  |  | 84.7d → 101.8d |  | resources none → Weightage [4630.76 h]; IDT Station - Rebar - Construction [1 NoS]; IDT Civil Manpower [990 h] |
| S06A-CC-8390 | Block-12 -NIFPS Foundation |  |  |  | 60.7d → 77.8d |  | resources none → Weightage [1029.06 h]; IDT Station - Rebar - Construction [1 NoS]; IDT Civil Manpower [300 h] |
| S06A-CC-8400 | Block-12 -BOT Foundation |  |  |  | 83.7d → 100.8d |  | resources none → Weightage [3858.96 h]; IDT Station - Rebar - Construction [1 NoS]; IDT Civil Manpower [800 h] |
| S06A-CC-8410 | Block-12 -Aux Transformer Foundation |  |  |  | 82.7d → 99.8d |  | resources none → Weightage [1029.06 h]; IDT Station - Rebar - Construction [1 NoS]; IDT Civil Manpower [250 h] |
| S06A-CC-8360 | Block-12 -HT & LT Station - Shed Installation |  |  |  | 72.7d → 89.8d |  | resources none → Weightage [1080.51 h]; IDT Shed - Construction [1 NoS]; IDT Civil Manpower [250 h] |
| S06A-CC-8450 | Block-12 -HT LT Station - Staircase |  |  |  | 95.7d → 112.8d |  | resources none → Weightage [205.81 h]; IDT Civil Manpower [40 h] |
| S06A-CC-8480 | Block-12 -HT Cable Laying | 2026-10-01 → 2026-10-11 (+10d) | 2026-10-08 → 2026-10-17 (+9d) |  | 98.7d → 106.8d |  | resources none → Weightage [2881.36 h]; HT Cable - Construction [4.55 KM]; ACDC Manpower [690 h] |
| S06A-CC-8490 | Block-12 -FO Cable Laying | 2026-10-01 → 2026-10-15 (+14d) | 2026-10-08 → 2026-10-22 (+14d) |  | 98.7d → 102.1d |  | resources none → Weightage [3601.7 h]; FO Cable - Construction [4 KM]; ACDC Manpower [700 h] |
| S06A-CC-8370 | Block-12 -HT & LT Station - Sheeting Installation |  |  |  | 72.7d → 89.8d |  | resources none → Weightage [1080.51 h]; IDT Sheeting - Construction [1 NoS]; IDT Civil Manpower [240 h] |
| S06A-CC-8500 | Block-12 -Control Cable Laying | 2026-11-09 → 2026-10-18 (-22d) | 2026-11-14 → 2026-10-22 (-23d) |  | 56d → 95.8d |  | resources none → Weightage [308.72 h]; Control Cable - Construction [1 KM]; ACDC Manpower [100 h] |
| S06A-CC-8550 | Block-12 -SCADA & SACU Installation | 2026-11-09 → 2026-10-18 (-22d) | 2026-11-14 → 2026-10-22 (-23d) |  | 56d → 95.8d |  | resources none → Weightage [205.81 h]; SCADA & SACU - Construction [1 NoS]; ACDC Manpower [50 h] |
| S06A-CC-8560 | Block-12 -ACDB Installation | 2026-12-16 → 2026-10-18 (-59d) | 2026-12-17 → 2026-10-19 (-59d) |  | 22.7d → 98.8d |  | resources none → Weightage [205.81 h]; ACDB - Construction [1 NoS]; ACDC Manpower [40 h] |
| S06A-CC-8520 | Block-12 -LT Panel Erection | 2026-10-26 → 2026-10-20 (-6d) | 2026-10-31 → 2026-10-25 (-6d) |  | 66.7d → 89.8d |  | resources none → Weightage [823.25 h]; LT Panel - Construction [16 NoS]; ACDC Manpower [180 h] |
| S06A-CC-8570 | Block-12 -Aux Transformer - Installation | 2026-12-16 → 2026-10-20 (-57d) | 2026-12-19 → 2026-10-24 (-56d) |  | 21.7d → 95.1d | S06A-CC-8410 FS+3d, S06A-PR-6650 SS → S06A-CC-8410 FS+3d, S06A-PR-6650 SS+10d | resources none → Weightage [411.62 h]; Aux Transformer - Construction [1 NoS]; ACDC Manpower [80 h] |
| S06A-CC-8510 | Block-12 -HT Panel Erection | 2026-10-28 → 2026-10-21 (-7d) | 2026-10-28 → 2026-10-21 (-7d) |  | 69.7d → 93.8d |  | resources none → Weightage [308.72 h]; HT Panel - Construction [1 NoS]; ACDC Manpower [60 h] |

| ID | Task | Start | Finish | Complete | Total float | Predecessors | Other |
| --- | --- | --- | --- | --- | --- | --- | --- |
| S06A-CC-8460 | Block-12 -Cable Hanger - Structure & Messenger Wire Erection | 2026-10-31 → 2026-10-30 (-1d) | 2026-11-04 → 2026-11-03 (-1d) |  | 54.7d → 72.8d |  | resources none → Weightage [1543.59 h]; LT Cable - Hangers - Construction [1 Lot]; LT Cable - Support Structure - Construction [1 Lot]; LT Cable - Clamps - Construction [1 Lot]; LT Cable - Messenger wire - Construction [3.39 KM]; LT Cable - Fasteners - Construction [1 Lot]; ACDC Manpower [200 h] |
| S06A-CC-8540 | Block-12 -Inverter Installation | 2026-11-03 → 2026-10-30 (-4d) | 2026-11-09 → 2026-11-06 (-3d) |  | 63.7d → 84.1d |  | resources none → Weightage [1440.68 h]; Invertor - Construction [47 NoS]; ACDC Manpower [280 h] |
| S06A-CC-8470 | Block-12 -LT Cable Laying | 2026-11-02 → 2026-11-01 (-1d) | 2026-11-21 → 2026-11-20 (-1d) |  | 54.7d → 72.8d |  | resources none → Weightage [11113.8 h]; LT Cable - Construction [9.89 KM]; ACDC Manpower [1649 h] |
| S06A-CC-8610 | Block-12 -LT Cable Terminations - Inverter to LT Panel | 2026-12-16 → 2026-11-16 (-30d) | 2026-12-22 → 2026-11-22 (-30d) |  | 25.7d → 72.8d |  | resources none → Weightage [720.34 h]; ACDC Manpower [210 h] |
| S06A-CC-8530 | Block-12 -IDT Erection | 2026-10-26 → 2026-11-20 (+25d) | 2026-10-30 → 2026-11-24 (+25d) |  | 63.7d → 55.8d |  | resources none → Weightage [1543.59 h]; IDT - Construction [1 NoS]; ACDC Manpower [350 h] |
| S06A-CC-8580 | Block-12 -NIFPS - Installation | 2026-10-26 → 2026-11-20 (+25d) | 2026-11-04 → 2026-11-29 (+25d) |  | 58.7d → 50.8d |  | resources none → Weightage [1080.51 h]; NIFPS - Construction [1 NoS]; ACDC Manpower [200 h] |
| S06A-CC-8590 | Block-12 -HT Cable Terminations - IDT Side | 2026-12-16 → 2026-11-25 (-21d) | 2026-12-17 → 2026-11-26 (-21d) |  | 30.7d → 68.8d |  | resources none → Weightage [205.81 h]; ACDC Manpower [70 h] |
| S06A-CC-8600 | Block-12 -LT Cable Terminations - LT Panel to IDT | 2026-12-16 → 2026-11-25 (-21d) | 2026-12-22 → 2026-12-01 (-21d) |  | 25.7d → 63.8d |  | resources none → Weightage [1440.68 h]; ACDC Manpower [300 h] |
| S06A-CC-8440 | Block-12 -IDT Area - Gravel Filling | 2026-12-18 → 2026-11-30 (-18d) | 2026-12-22 → 2026-12-04 (-18d) |  | 22.7d → 57.8d |  | resources none → Weightage [308.72 h]; IDT Civil Manpower [100 h] |
| S06A-CC-8420 | Block-12 -IDT Area - Fencing | 2026-12-20 → 2026-12-01 (-19d) | 2026-12-24 → 2026-12-05 (-19d) |  | 21.7d → 57.8d |  | resources none → Weightage [617.43 h]; IDT - Fencing - Construction - Construction [1 NoS]; IDT Civil Manpower [150 h] |
| S06A-CC-8430 | Block-12 -IDT Area - Gate Installation | 2026-12-25 → 2026-12-06 (-19d) | 2026-12-25 → 2026-12-06 (-19d) |  | 21.7d → 57.8d |  | resources none → Weightage [308.72 h]; IDT - Gate - Construction [1 NoS]; IDT Civil Manpower [50 h] |
| 3 | **CONSTRUCTION-PV AREA-PRE COMMISSIONING** | 2026-10-29 → 2026-10-22 (-7d) | 2026-12-31 → 2026-12-10 (-21d) |  |  |  |  |
| S06A-CC-8640 | Block-12 -HT Panel Testing | 2026-10-29 → 2026-10-22 (-7d) | 2026-10-29 → 2026-10-22 (-7d) |  | 69.7d → 93.8d |  | resources none → Weightage [102.91 h]; HT Panel Testing [20 h] |
| S06A-CC-8650 | Block-12 -LT Panel Testing | 2026-11-01 → 2026-10-26 (-6d) | 2026-11-01 → 2026-10-26 (-6d) |  | 66.7d → 89.8d |  | resources none → Weightage [205.81 h]; LT Panel Testing [40 h] |
| S06A-CC-8620 | Block-12 -IDT Filtration | 2026-11-05 → 2026-11-30 (+25d) | 2026-11-07 → 2026-12-02 (+25d) |  | 58.7d → 50.8d |  | resources none → Weightage [154.36 h]; IDT Filtration & Testing [30 h] |
| S06A-CC-8660 | Block-12 -Inspection Offer To Asset Commissioning Team | 2026-12-23 → 2026-12-02 (-21d) | 2026-12-23 → 2026-12-02 (-21d) |  | 25.7d → 63.8d |  | resources none → Weightage [51.45 h] |
| S06A-CC-8630 | Block-12 -IDT Testing | 2026-11-08 → 2026-12-03 (+25d) | 2026-11-09 → 2026-12-04 (+25d) |  | 58.7d → 50.8d |  | resources none → Weightage [102.91 h]; IDT Filtration & Testing [20 h] |
| S06A-CC-8670 | Block-12 -Punch Point Identification By Asset Commissioning Team | 2026-12-24 → 2026-12-03 (-21d) | 2026-12-26 → 2026-12-05 (-21d) |  | 25.7d → 63.8d |  | resources none → Weightage [308.72 h] |
| S06A-CC-8680 | Block-12 -Punch Point Rectification And Pre Charging Sign Off | 2026-12-27 → 2026-12-06 (-21d) | 2026-12-31 → 2026-12-10 (-21d) |  | 25.7d → 63.8d |  | resources none → Weightage [463.08 h] |
| 4 | **CONSTRUCTION-COMMISSIONING** |  | 2027-01-30 → 2027-01-21 (-9d) |  |  |  |  |
| S06A-CC-8690 | Block-12 -CEA Application |  | 2026-12-06 → 2026-12-05 (-1d) |  | 33d → 50.8d |  | resources none → Weightage [51.45 h] |
| S06A-CC-8700 | Block-12 -CEA Inspection | 2026-12-26 → 2026-12-14 (-12d) | 2026-12-26 → 2026-12-14 (-12d) |  | 21.7d → 50.8d |  | resources none → Weightage [51.45 h] |
| S06A-CC-8710 | Block-12 -CEA Compliance & Approval | 2026-12-28 → 2026-12-16 (-12d) | 2027-01-01 → 2026-12-20 (-12d) |  | 21.7d → 50.8d |  | resources none → Weightage [411.62 h] |
| S06A-CC-8720 | Block-12 -First Time Charging - Application | 2027-01-12 → 2027-01-04 (-8d) | 2027-01-12 → 2027-01-04 (-8d) |  | 11.7d → 36.8d |  | resources none → Weightage [51.45 h] |
| S06A-CC-8730 | Block-12 -First Time Charging - Approval | 2027-01-13 → 2027-01-05 (-8d) | 2027-01-14 → 2027-01-06 (-8d) |  | 11.7d → 36.8d |  | resources none → Weightage [308.72 h] |
| S06A-CC-8740 | Block-12 -First Time Charging | 2027-01-15 → 2027-01-07 (-8d) | 2027-01-15 → 2027-01-07 (-8d) |  | 11.7d → 36.8d |  | resources none → Weightage [102.91 h] |
| S06A-CC-8750 | Block-12 -Tracker Commissioning - SCADA | 2027-01-15 → 2027-01-07 (-8d) | 2027-01-22 → 2027-01-14 (-8d) |  | 16.7d → 41.8d |  | resources none → Weightage [1080.51 h] |
| S06A-CC-8760 | Block-12 -Robot Commissioning - SCADA | 2027-01-15 → 2027-01-07 (-8d) | 2027-01-27 → 2027-01-18 (-9d) |  | 12.7d → 37.8d |  | resources none → Weightage [6174.34 h] |
| S06A-CC-8770 | Block-12 -Trial Operation | 2027-01-22 → 2027-01-14 (-8d) | 2027-01-22 → 2027-01-14 (-8d) |  | 11.7d → 36.8d |  | resources none → Weightage [102.91 h] |
| S06A-CC-8780 | Block-12 -Trial Run Certificate | 2027-01-25 → 2027-01-17 (-8d) | 2027-01-25 → 2027-01-17 (-8d) |  | 11.7d → 36.8d |  | resources none → Weightage [51.45 h] |
| S06A-CC-8790 | Block-12 -COD | 2027-01-29 → 2027-01-20 (-9d) | 2027-01-30 → 2027-01-21 (-9d) |  | 11.7d → 36.8d |  | resources none → Weightage [360.17 h] |
| 4 | **PHASE-4 (50MW)** |  | 2027-02-26 → 2027-02-28 (+2d) |  |  |  |  |
| 1 | **BLOCK-13** |  | 2027-02-26 → 2027-02-28 (+2d) |  |  |  |  |
| 1 | **CONSTRUCTION-PV AREA-DC SIDE** |  | 2027-02-12 → 2027-02-15 (+3d) |  |  |  |  |
| S06A-CC-8800 | Block-13 -Piling - MMS (Marking, Auguring & Concreting) |  |  |  | 64.7d → 82.8d |  | resources none → Weightage [17288.2 h]; Piling Stub - MMS - Construction [4140 NoS]; Piling Manpower [1882 h] |
| S06A-CC-8810 | Block-13 -Pile Capping |  |  |  | 89.7d → 107.8d |  | resources none → Weightage [8644.08 h]; Piling Manpower [900 h] |
| S06A-CC-8860 | Block-13 -MMS Erection - Torque Tube/Raftar | 2026-10-01 → 2026-10-05 (+4d) | 2026-10-29 → 2026-11-01 (+3d) |  | 64.7d → 79.8d |  | resources none → Weightage [59067.9 h]; MMS - Rafter - Construction [486 TBL]; FT Manpower [3450 h] |
| S06A-CC-8870 | Block-13 -MMS Erection - Transmission Shaft/Bracing | 2026-10-03 → 2026-10-06 (+3d) | 2026-10-29 → 2026-11-01 (+3d) |  | 68.7d → 83.8d |  | resources none → Weightage [14406.8 h]; MMS - Bracing - Construction [345 TBL]; FT Manpower [1725 h] |
| S06A-CC-8880 | Block-13 -MMS Erection - Purlin | 2026-10-03 → 2026-10-06 (+3d) | 2026-10-29 → 2026-11-02 (+4d) |  | 64.7d → 79.1d |  | resources none → Weightage [14406.8 h]; MMS - FT Purlin - Construction [345 TBL]; FT Manpower [1725 h] |
| S06A-CC-8850 | Block-13 -Array Earthing | 2026-10-01 → 2026-10-08 (+7d) | 2026-10-26 → 2026-11-01 (+6d) |  | 67.7d → 79.8d |  | resources none → Earthing - Construction [3.8 KM]; Weightage [4939.47 h]; ACDC Manpower [108 h] |
| S06A-CC-8890 | Block-13 -MMS - RFI Completion | 2026-10-07 → 2026-10-10 (+3d) | 2026-11-02 → 2026-11-06 (+4d) |  | 64.7d → 79.1d |  | resources none → Weightage [7203.4 h]; FT Manpower [1400 h] |
| S06A-CC-8830 | Block-13 -Piling - Inverters | 2026-10-01 → 2026-10-15 (+14d) | 2026-10-17 → 2026-10-30 (+13d) |  | 77.7d → 82.8d |  | resources none → Weightage [2469.74 h]; Piling Stub - Invertor - Construction [72 NoS]; Piling Manpower [360 h] |
| S06A-CC-8820 | Block-13 -Piling - LT Cable Hanger System | 2026-10-01 → 2026-10-16 (+15d) | 2026-10-21 → 2026-11-04 (+14d) |  | 64.7d → 68.8d |  | resources none → Weightage [2058.11 h]; Piling Stub - LT Cable Hanger - Construction [359 NoS]; Piling Manpower [326 h] |
| S06A-CC-8840 | Block-13 -Piling - Robotic Docking System | 2026-11-07 → 2026-12-05 (+28d) | 2026-11-16 → 2026-12-14 (+28d) |  | 47.7d → 37.8d |  | resources none → Piling Stub - Robot Docking - Construction [25 NoS]; Weightage [1543.59 h]; Piling Manpower [300 h] |
| S06A-CC-8950 | Block-13 -Robotic Structure - Docking Station Installation | 2026-12-16 → 2026-12-15 (-1d) | 2026-12-25 → 2026-12-24 (-1d) |  | 18.7d → 37.8d |  | resources none → Weightage [1543.59 h]; Robot Structure - Docking - Construction [40 NoS]; Robot Installation Manpower [300 h] |
| S06A-CC-8960 | Block-13 -Robotic Structure - Reverse Station Installation | 2026-12-16 → 2026-12-15 (-1d) | 2026-12-25 → 2026-12-24 (-1d) |  | 32.7d → 51.8d |  | resources none → Weightage [1543.59 h]; Robot Structure - Reverse - Construction [40 NoS]; Robot Installation Manpower [300 h] |
| S06A-CC-8900 | Block-13 -Module Installation | 2026-12-30 → 2027-01-01 (+2d) | 2027-02-08 → 2027-02-11 (+3d) |  | -15.3d → 0.1d | S06A-PR-6180 SS, S06A-CC-8890 FF+12d, S06A-CC-8890 SS+4d, S06A-EN-1630, S06A-EN-2070 → S06A-PR-6180 SS+8d, S06A-CC-8890 FF+12d, S06A-CC-8890 SS+4d, S06A-EN-1630, S06A-EN-2070 | resources none → Weightage [56598.1 h]; Module - Construction [17 MWdc]; Module Manpower [5842 h] |
| S06A-CC-8920 | Block-13 -DC Cable Laying | 2026-12-31 → 2027-01-02 (+2d) | 2027-01-30 → 2027-02-02 (+3d) |  | 0.7d → 16.1d |  | resources none → Weightage [12348.7 h]; DC Cable - Construction [91 KM]; ACDC Manpower [2022 h] |
| S06A-CC-8910 | Block-13 -Module - RFI Completion | 2027-01-03 → 2027-01-05 (+2d) | 2027-02-12 → 2027-02-15 (+3d) |  | -9.3d → 6.1d |  | resources none → Weightage [4116.23 h]; Module Manpower [1200 h] |
| S06A-CC-8980 | Block-13 -Robot Installation | 2027-01-11 → 2027-01-13 (+2d) | 2027-02-10 → 2027-02-13 (+3d) |  | -3.3d → 12.1d |  | resources none → Weightage [3087.17 h]; Robots - Construction [40 NoS]; Robot Installation Manpower [600 h] |
| S06A-CC-8930 | Block-13 -Module Interconnection & MC4 Termination | 2027-01-15 → 2027-01-17 (+2d) | 2027-02-09 → 2027-02-12 (+3d) |  | -7.3d → 8.1d |  | resources none → Weightage [7203.4 h]; MC4 Connector - Construction [2760 NoS]; ACDC Manpower [1840 h] |
| S06A-CC-8940 | Block-13 -VOC Testing | 2027-01-20 → 2027-01-22 (+2d) | 2027-02-11 → 2027-02-14 (+3d) |  | -7.3d → 8.1d |  | resources none → Weightage [617.43 h]; ACDC Manpower [220 h] |
| S06A-CC-8970 | Block-13 -Robotic Structure - Bridges Installation | 2027-01-20 → 2027-01-22 (+2d) | 2027-02-09 → 2027-02-12 (+3d) |  | 5.7d → 21.1d |  | resources none → Weightage [5145.28 h]; Robot Structure - Bridges - Construction [300 NoS]; Robot Installation Manpower [2200 h] |
| 2 | **CONSTRUCTION-PV AREA-AC SIDE** |  | 2027-01-01 → 2026-12-21 (-11d) |  |  |  |  |
| S06A-CC-8990 | Block-13 -IDT Foundation Up To Rail |  | 2026-10-07 → 2026-09-06 A (-31d) | 75% → 100% | 60.7d → none |  | resources none → Weightage [7717.93 h]; IDT Station - Rail - Construction [1 NoS]; IDT Station - Foundation Bolt & Inserts - Construction [1 NoS]; IDT Station - Rebar - Construction [1 NoS]; IDT Civil Manpower [1470 h] |
| S06A-CC-9000 | Block-13 -HT & LT Station - Slab |  | 2026-10-08 → 2026-08-27 A (-42d) | 62% → 100% | 71.7d → none |  | resources none → Weightage [5402.55 h]; IDT Station - Foundation Bolt & Inserts - Construction [1 NoS]; IDT Station - Rebar - Construction [1 NoS]; IDT Civil Manpower [1200 h] |
| S06A-CC-9030 | Block-13 -IDT Foundation - Grade Slab Casting & Dyke Wall |  |  |  | 97.7d → 115.8d |  | resources none → Weightage [4630.76 h]; IDT Station - Rebar - Construction [1 NoS]; IDT Civil Manpower [990 h] |
| S06A-CC-9040 | Block-13 -NIFPS Foundation | 2026-10-08 → 2026-10-01 (-7d) | 2026-10-17 → 2026-10-11 (-6d) |  | 60.7d → 84.8d |  | resources none → Weightage [1029.06 h]; IDT Station - Rebar - Construction [1 NoS]; IDT Civil Manpower [300 h] |
| S06A-CC-9050 | Block-13 -BOT Foundation | 2026-10-08 → 2026-10-01 (-7d) | 2026-10-17 → 2026-10-11 (-6d) |  | 83.7d → 107.8d |  | resources none → Weightage [3858.96 h]; IDT Station - Rebar - Construction [1 NoS]; IDT Civil Manpower [800 h] |
| S06A-CC-9060 | Block-13 -Aux Transformer Foundation | 2026-10-08 → 2026-10-01 (-7d) | 2026-10-12 → 2026-10-06 (-6d) |  | 82.7d → 106.8d |  | resources none → Weightage [1029.06 h]; IDT Station - Rebar - Construction [1 NoS]; IDT Civil Manpower [250 h] |
| S06A-CC-9100 | Block-13 -HT LT Station - Staircase |  |  |  | 104.7d → 122.8d |  | resources none → Weightage [205.81 h]; IDT Civil Manpower [40 h] |
| S06A-CC-9010 | Block-13 -HT & LT Station - Shed Installation | 2026-10-12 → 2026-10-05 (-7d) | 2026-10-16 → 2026-10-09 (-7d) |  | 71.7d → 96.8d |  | resources none → Weightage [1080.51 h]; IDT Shed - Construction [1 NoS]; IDT Civil Manpower [250 h] |
| S06A-CC-9020 | Block-13 -HT & LT Station - Sheeting Installation | 2026-10-17 → 2026-10-10 (-7d) | 2026-10-18 → 2026-10-11 (-7d) |  | 71.7d → 96.8d |  | resources none → Weightage [1080.51 h]; IDT Sheeting - Construction [1 NoS]; IDT Civil Manpower [240 h] |
| S06A-CC-9170 | Block-13 -LT Panel Erection | 2026-10-31 → 2026-10-14 (-17d) | 2026-11-05 → 2026-10-19 (-17d) |  | 61.7d → 96.8d |  | resources none → Weightage [823.25 h]; LT Panel - Construction [16 NoS]; ACDC Manpower [180 h] |
| S06A-CC-9210 | Block-13 -ACDB Installation | 2026-12-21 → 2026-10-16 (-66d) | 2026-12-22 → 2026-10-17 (-66d) |  | 17.7d → 101.8d |  | resources none → Weightage [205.81 h]; ACDB - Construction [1 NoS]; ACDC Manpower [40 h] |
| S06A-CC-9220 | Block-13 -Aux Transformer - Installation | 2026-12-22 → 2026-10-17 (-66d) | 2026-12-26 → 2026-10-21 (-66d) |  | 15d → 99.1d |  | resources none → Weightage [411.62 h]; Aux Transformer - Construction [1 NoS]; ACDC Manpower [80 h] |
| S06A-CC-9150 | Block-13 -Control Cable Laying | 2026-11-14 → 2026-10-21 (-24d) | 2026-11-19 → 2026-10-26 (-24d) |  | 51d → 93.1d |  | resources none → Weightage [308.72 h]; Control Cable - Construction [1 KM]; ACDC Manpower [100 h] |
| S06A-CC-9200 | Block-13 -SCADA & SACU Installation | 2026-11-14 → 2026-10-21 (-24d) | 2026-11-19 → 2026-10-26 (-24d) |  | 51d → 93.1d |  | resources none → Weightage [205.81 h]; SCADA & SACU - Construction [1 NoS]; ACDC Manpower [50 h] |
| S06A-CC-9160 | Block-13 -HT Panel Erection | 2026-11-02 → 2026-10-31 (-2d) | 2026-11-02 → 2026-10-31 (-2d) |  | 64.7d → 84.8d |  | resources none → Weightage [308.72 h]; HT Panel - Construction [1 NoS]; ACDC Manpower [60 h] |
| S06A-CC-9190 | Block-13 -Inverter Installation | 2026-11-04 → 2026-11-02 (-2d) | 2026-11-10 → 2026-11-08 (-2d) |  | 62.7d → 82.8d |  | resources none → Weightage [1440.68 h]; Invertor - Construction [34 NoS]; ACDC Manpower [280 h] |

| ID | Task | Start | Finish | Duration | Complete | Total float | Predecessors | Other |
| --- | --- | --- | --- | --- | --- | --- | --- | --- |
| S06A-CC-9130 | Block-13 -HT Cable Laying | 2026-10-01 → 2026-11-02 (+32d) | 2026-10-08 → 2026-11-09 (+32d) |  |  | 98.7d → 85.1d | S06A-PR-4490 SS+4d, S06A-EN-1940 → S06A-PR-4490 SS+18d, S06A-EN-1940 | resources none → Weightage [2881.36 h]; HT Cable - Construction [4.33 KM]; ACDC Manpower [655 h] |
| S06A-CC-9140 | Block-13 -FO Cable Laying | 2026-10-01 → 2026-11-02 (+32d) | 2026-10-08 → 2026-11-09 (+32d) |  |  | 98.7d → 85.1d |  | resources none → Weightage [3601.7 h]; FO Cable - Construction [4 KM]; ACDC Manpower [700 h] |
| S06A-CC-9110 | Block-13 -Cable Hanger - Structure & Messenger Wire Erection | 2026-10-21 → 2026-11-04 (+14d) | 2026-10-25 → 2026-11-08 (+14d) |  |  | 64.7d → 68.8d |  | resources none → Weightage [1543.59 h]; LT Cable - Hangers - Construction [1 Lot]; LT Cable - Support Structure - Construction [1 Lot]; LT Cable - Clamps - Construction [1 Lot]; LT Cable - Messenger wire - Construction [2.32 KM]; LT Cable - Fasteners - Construction [1 Lot]; ACDC Manpower [137 h] |
| S06A-CC-9120 | Block-13 -LT Cable Laying | 2026-10-23 → 2026-11-06 (+14d) | 2026-11-11 → 2026-11-25 (+14d) |  |  | 64.7d → 68.8d |  | resources none → Weightage [11113.8 h]; LT Cable - Construction [6.3 KM]; ACDC Manpower [1051 h] |
| S06A-CC-9260 | Block-13 -LT Cable Terminations - Inverter to LT Panel | 2026-12-21 → 2026-11-21 (-30d) | 2026-12-27 → 2026-11-27 (-30d) |  |  | 20.7d → 68.8d |  | resources none → Weightage [720.34 h]; ACDC Manpower [210 h] |
| S06A-CC-9180 | Block-13 -IDT Erection | 2026-11-10 → 2026-12-05 (+25d) | 2026-11-14 → 2026-12-09 (+25d) |  |  | 48.7d → 41.8d |  | resources none → Weightage [1543.59 h]; IDT - Construction [1 NoS]; ACDC Manpower [350 h] |
| S06A-CC-9230 | Block-13 -NIFPS - Installation | 2026-11-10 → 2026-12-05 (+25d) | 2026-11-19 → 2026-12-14 (+25d) |  |  | 43.7d → 36.8d |  | resources none → Weightage [1080.51 h]; NIFPS - Construction [1 NoS]; ACDC Manpower [200 h] |
| S06A-CC-9240 | Block-13 -HT Cable Terminations - IDT Side | 2026-12-21 → 2026-12-10 (-11d) | 2026-12-22 → 2026-12-11 (-11d) |  |  | 25.7d → 54.8d |  | resources none → Weightage [205.81 h]; ACDC Manpower [70 h] |
| S06A-CC-9250 | Block-13 -LT Cable Terminations - LT Panel to IDT | 2026-12-21 → 2026-12-10 (-11d) | 2026-12-27 → 2026-12-16 (-11d) |  |  | 20.7d → 49.8d |  | resources none → Weightage [1440.68 h]; ACDC Manpower [300 h] |
| S06A-CC-9090 | Block-13 -IDT Area - Gravel Filling | 2026-12-23 → 2026-12-15 (-8d) | 2026-12-28 → 2026-12-19 (-9d) |  |  | 17d → 43.8d |  | resources none → Weightage [308.72 h]; IDT Civil Manpower [100 h] |
| S06A-CC-9070 | Block-13 -IDT Area - Fencing | 2026-12-26 → 2026-12-16 (-10d) | 2026-12-31 → 2026-12-20 (-11d) |  |  | 15d → 43.8d |  | resources none → Weightage [617.43 h]; IDT - Fencing - Construction - Construction [1 NoS]; IDT Civil Manpower [150 h] |
| S06A-CC-9080 | Block-13 -IDT Area - Gate Installation | 2026-12-31 → 2026-12-21 (-10d) | 2027-01-01 → 2026-12-21 (-11d) |  |  | 15d → 43.8d |  | resources none → Weightage [308.72 h]; IDT - Gate - Construction [1 NoS]; IDT Civil Manpower [50 h] |
| 3 | **CONSTRUCTION-PV AREA-PRE COMMISSIONING** | 2026-11-03 → 2026-10-20 (-14d) | 2027-01-05 → 2026-12-25 (-11d) |  |  |  |  |  |
| S06A-CC-9300 | Block-13 -LT Panel Testing | 2026-11-06 → 2026-10-20 (-17d) | 2026-11-06 → 2026-10-20 (-17d) |  |  | 61.7d → 96.8d |  | resources none → Weightage [205.81 h]; LT Panel Testing [40 h] |
| S06A-CC-9290 | Block-13 -HT Panel Testing | 2026-11-03 → 2026-11-01 (-2d) | 2026-11-03 → 2026-11-01 (-2d) |  |  | 64.7d → 84.8d |  | resources none → Weightage [102.91 h]; HT Panel Testing [20 h] |
| S06A-CC-9270 | Block-13 -IDT Filtration | 2026-11-20 → 2026-12-15 (+25d) | 2026-11-22 → 2026-12-17 (+25d) |  |  | 43.7d → 36.8d |  | resources none → Weightage [154.36 h]; IDT Filtration & Testing [30 h] |
| S06A-CC-9310 | Block-13 -Inspection Offer To Asset Commissioning Team | 2026-12-28 → 2026-12-17 (-11d) | 2026-12-28 → 2026-12-17 (-11d) |  |  | 20.7d → 49.8d |  | resources none → Weightage [51.45 h] |
| S06A-CC-9280 | Block-13 -IDT Testing | 2026-11-23 → 2026-12-18 (+25d) | 2026-11-24 → 2026-12-19 (+25d) |  |  | 43.7d → 36.8d |  | resources none → Weightage [102.91 h]; IDT Filtration & Testing [20 h] |
| S06A-CC-9320 | Block-13 -Punch Point Identification By Asset Commissioning Team | 2026-12-29 → 2026-12-18 (-11d) | 2026-12-31 → 2026-12-20 (-11d) |  |  | 20.7d → 49.8d |  | resources none → Weightage [308.72 h] |
| S06A-CC-9330 | Block-13 -Punch Point Rectification And Pre Charging Sign Off | 2027-01-01 → 2026-12-21 (-11d) | 2027-01-05 → 2026-12-25 (-11d) |  |  | 20.7d → 49.8d |  | resources none → Weightage [463.08 h] |
| 4 | **CONSTRUCTION-COMMISSIONING** | 2027-01-01 → 2026-12-27 (-5d) | 2027-02-26 → 2027-02-28 (+2d) |  |  |  |  |  |
| S06A-CC-9340 | Block-13 -CEA Application | 2027-01-01 → 2026-12-27 (-5d) | 2027-01-02 → 2026-12-28 (-5d) |  |  | 6d → 29.1d |  | resources none → Weightage [51.45 h] |
| S06A-CC-9350 | Block-13 -CEA Inspection | 2027-01-10 → 2027-01-05 (-5d) | 2027-01-11 → 2027-01-06 (-5d) |  |  | 6d → 29.1d |  | resources none → Weightage [51.45 h] |
| S06A-CC-9360 | Block-13 -CEA Compliance & Approval | 2027-01-12 → 2027-01-07 (-5d) | 2027-01-17 → 2027-01-12 (-5d) |  |  | 6d → 29.1d |  | resources none → Weightage [411.62 h] |
| S06A-CC-9370 | Block-13 -First Time Charging - Application | 2027-02-09 → 2027-02-11 (+2d) | 2027-02-09 → 2027-02-12 (+3d) |  |  | -15.3d → 0.1d |  | resources none → Weightage [51.45 h] |
| S06A-CC-9380 | Block-13 -First Time Charging - Approval | 2027-02-10 → 2027-02-12 (+2d) | 2027-02-11 → 2027-02-14 (+3d) |  |  | -15.3d → 0.1d |  | resources none → Weightage [308.72 h] |
| S06A-CC-9390 | Block-13 -First Time Charging | 2027-02-12 → 2027-02-14 (+2d) | 2027-02-12 → 2027-02-15 (+3d) |  |  | -15.3d → 0.1d |  | resources none → Weightage [102.91 h] |
| S06A-CC-9400 | Block-13 -Tracker Commissioning - SCADA | 2027-02-12 → 2027-02-14 (+2d) | 2027-02-19 → 2027-02-22 (+3d) |  |  | -10.3d → 5.1d |  | resources none → Weightage [1080.51 h] |
| S06A-CC-9410 | Block-13 -Robot Commissioning - SCADA | 2027-02-12 → 2027-02-14 (+2d) | 2027-02-23 → 2027-02-26 (+3d) |  |  | -14.3d → 1.1d |  | resources none → Weightage [6174.34 h] |
| S06A-CC-9420 | Block-13 -Trial Operation | 2027-02-19 → 2027-02-21 (+2d) | 2027-02-19 → 2027-02-22 (+3d) |  |  | -15.3d → 0.1d |  | resources none → Weightage [102.91 h] |
| S06A-CC-9430 | Block-13 -Trial Run Certificate | 2027-02-22 → 2027-02-24 (+2d) | 2027-02-22 → 2027-02-25 (+3d) |  |  | -15.3d → 0.1d |  | resources none → Weightage [51.45 h] |
| S06A-CC-9440 | Block-13 -COD | 2027-02-25 → 2027-02-27 (+2d) | 2027-02-26 → 2027-02-28 (+2d) | 2d → 1d |  | -15.3d → 0.1d |  | resources none → Weightage [360.17 h] |
| 2 | **BLOCK-14** |  | 2027-02-26 → 2027-02-28 (+2d) |  |  |  |  |  |
| 1 | **CONSTRUCTION-PV AREA-DC SIDE** |  | 2027-02-12 → 2027-02-15 (+3d) |  |  |  |  |  |
| S06A-CC-9450 | Block-14 -Piling - MMS (Marking, Auguring & Concreting) |  |  |  |  | 53.9d → 66d |  | resources none → Weightage [17288.2 h]; Piling Stub - MMS - Construction [5832 NoS]; Piling Manpower [2651 h] |
| S06A-CC-9460 | Block-14 -Pile Capping |  |  |  |  | 83.7d → 101.8d |  | resources none → Weightage [8644.08 h]; Piling Manpower [1268 h] |
| S06A-CC-9510 | Block-14 -MMS Erection - Torque Tube/Raftar | 2026-10-10 → 2026-09-22 A (-18d) | 2026-11-07 → 2026-11-01 (-6d) |  | 0% → 64% | 53.9d → 60.8d |  | resources none → Weightage [59067.9 h]; MMS - Rafter - Construction [486 TBL]; FT Manpower [4860 h] |
| S06A-CC-9520 | Block-14 -MMS Erection - Transmission Shaft/Bracing | 2026-10-14 → 2026-09-25 A (-19d) | 2026-11-11 → 2026-11-05 (-6d) |  | 0% → 8% | 57.9d → 81.8d |  | resources none → Weightage [14406.8 h]; MMS - Bracing - Construction [486 TBL]; FT Manpower [2430 h] |
| S06A-CC-9500 | Block-14 -Array Earthing | 2026-10-01 → 2026-10-08 (+7d) | 2026-10-27 → 2026-11-01 (+5d) |  |  | 64.9d → 60.8d |  | resources none → Earthing - Construction [5.32 KM]; Weightage [4939.47 h]; ACDC Manpower [108 h] |
| S06A-CC-9530 | Block-14 -MMS Erection - Purlin | 2026-10-14 → 2026-10-08 (-6d) | 2026-11-12 → 2026-11-05 (-7d) |  |  | 53.9d → 78.8d |  | resources none → Weightage [14406.8 h]; MMS - FT Purlin - Construction [486 TBL]; FT Manpower [2430 h] |
| S06A-CC-9540 | Block-14 -MMS - RFI Completion | 2026-10-17 → 2026-10-11 (-6d) | 2026-11-15 → 2026-11-08 (-7d) |  |  | 53.9d → 78.8d |  | resources none → Weightage [7203.4 h]; FT Manpower [1400 h] |
| S06A-CC-9480 | Block-14 -Piling - Inverters | 2026-10-01 → 2026-10-15 (+14d) | 2026-10-17 → 2026-10-30 (+13d) |  |  | 77.7d → 82.8d |  | resources none → Weightage [2469.74 h]; Piling Stub - Invertor - Construction [94 NoS]; Piling Manpower [470 h] |
| S06A-CC-9470 | Block-14 -Piling - LT Cable Hanger System | 2026-10-01 → 2026-10-16 (+15d) | 2026-10-21 → 2026-11-04 (+14d) |  |  | 64.7d → 68.8d |  | resources none → Weightage [2058.11 h]; Piling Stub - LT Cable Hanger - Construction [538 NoS]; Piling Manpower [489 h] |
| S06A-CC-9490 | Block-14 -Piling - Robotic Docking System | 2026-11-07 → 2026-12-05 (+28d) | 2026-11-16 → 2026-12-14 (+28d) |  |  | 47.7d → 37.8d |  | resources none → Piling Stub - Robot Docking - Construction [25 NoS]; Weightage [1543.59 h]; Piling Manpower [300 h] |
| S06A-CC-9600 | Block-14 -Robotic Structure - Docking Station Installation | 2026-12-16 → 2026-12-15 (-1d) | 2026-12-25 → 2026-12-24 (-1d) |  |  | 18.7d → 37.8d |  | resources none → Weightage [1543.59 h]; Robot Structure - Docking - Construction [40 NoS]; Robot Installation Manpower [300 h] |
| S06A-CC-9610 | Block-14 -Robotic Structure - Reverse Station Installation | 2026-12-16 → 2026-12-15 (-1d) | 2026-12-25 → 2026-12-24 (-1d) |  |  | 32.7d → 51.8d |  | resources none → Weightage [1543.59 h]; Robot Structure - Reverse - Construction [40 NoS]; Robot Installation Manpower [300 h] |
| S06A-CC-9550 | Block-14 -Module Installation | 2026-12-30 → 2027-01-01 (+2d) | 2027-02-08 → 2027-02-11 (+3d) |  |  | -15.3d → 0.1d | S06A-CC-9540 FF+12d, S06A-CC-9540 SS+4d, S06A-PR-6180 SS, S06A-EN-1630, S06A-EN-2070 → S06A-CC-9540 FF+12d, S06A-CC-9540 SS+4d, S06A-PR-6180 SS+8d, S06A-EN-1630, S06A-EN-2070 | resources none → Weightage [56598.1 h]; Module - Construction [17 MWdc]; Module Manpower [8400 h] |
| S06A-CC-9570 | Block-14 -DC Cable Laying | 2026-12-31 → 2027-01-02 (+2d) | 2027-01-30 → 2027-02-02 (+3d) |  |  | 0.7d → 16.1d |  | resources none → Weightage [12348.7 h]; DC Cable - Construction [99 KM]; ACDC Manpower [2200 h] |
| S06A-CC-9560 | Block-14 -Module - RFI Completion | 2027-01-03 → 2027-01-05 (+2d) | 2027-02-12 → 2027-02-15 (+3d) |  |  | -9.3d → 6.1d |  | resources none → Weightage [4116.23 h]; Module Manpower [1200 h] |
| S06A-CC-9630 | Block-14 -Robot Installation | 2027-01-11 → 2027-01-13 (+2d) | 2027-02-10 → 2027-02-13 (+3d) |  |  | -3.3d → 12.1d |  | resources none → Weightage [3087.17 h]; Robots - Construction [40 NoS]; Robot Installation Manpower [600 h] |
| S06A-CC-9580 | Block-14 -Module Interconnection & MC4 Termination | 2027-01-15 → 2027-01-17 (+2d) | 2027-02-09 → 2027-02-12 (+3d) |  |  | -7.3d → 8.1d |  | resources none → Weightage [7203.4 h]; MC4 Connector - Construction [3888 NoS]; ACDC Manpower [2592 h] |
| S06A-CC-9590 | Block-14 -VOC Testing | 2027-01-20 → 2027-01-22 (+2d) | 2027-02-11 → 2027-02-14 (+3d) |  |  | -7.3d → 8.1d |  | resources none → Weightage [617.43 h]; ACDC Manpower [220 h] |
| S06A-CC-9620 | Block-14 -Robotic Structure - Bridges Installation | 2027-01-20 → 2027-01-22 (+2d) | 2027-02-09 → 2027-02-12 (+3d) |  |  | 5.7d → 21.1d |  | resources none → Weightage [5145.28 h]; Robot Structure - Bridges - Construction [300 NoS]; Robot Installation Manpower [2200 h] |
| 2 | **CONSTRUCTION-PV AREA-AC SIDE** |  | 2027-01-01 → 2026-12-21 (-11d) |  |  |  |  |  |
| S06A-CC-9640 | Block-14 -IDT Foundation Up To Rail |  | 2026-10-07 → 2026-09-02 A (-35d) |  | 75% → 100% | 67.7d → none |  | resources none → Weightage [7717.93 h]; IDT Station - Rail - Construction [1 NoS]; IDT Station - Foundation Bolt & Inserts - Construction [1 NoS]; IDT Station - Rebar - Construction [1 NoS]; IDT Civil Manpower [1470 h] |
| S06A-CC-9650 | Block-14 -HT & LT Station - Slab |  |  |  |  |  |  | resources none → Weightage [5402.55 h]; IDT Station - Foundation Bolt & Inserts - Construction [1 NoS]; IDT Station - Rebar - Construction [1 NoS]; IDT Civil Manpower [1200 h] |
| S06A-CC-9680 | Block-14 -IDT Foundation - Grade Slab Casting & Dyke Wall |  |  |  |  | 92.7d → 110.8d |  | resources none → Weightage [4630.76 h]; IDT Station - Rebar - Construction [1 NoS]; IDT Civil Manpower [990 h] |
| S06A-CC-9660 | Block-14 -HT & LT Station - Shed Installation |  |  |  |  | 82.7d → 100.8d |  | resources none → Weightage [1080.51 h]; IDT Shed - Construction [1 NoS]; IDT Civil Manpower [250 h] |
| S06A-CC-9690 | Block-14 -NIFPS Foundation |  |  |  |  | 67.7d → 85.8d |  | resources none → Weightage [1029.06 h]; IDT Station - Rebar - Construction [1 NoS]; IDT Civil Manpower [300 h] |
| S06A-CC-9700 | Block-14 -BOT Foundation |  |  |  |  | 90.7d → 108.8d |  | resources none → Weightage [3858.96 h]; IDT Station - Rebar - Construction [1 NoS]; IDT Civil Manpower [800 h] |
| S06A-CC-9710 | Block-14 -Aux Transformer Foundation |  |  |  |  | 88.7d → 106.8d |  | resources none → Weightage [1029.06 h]; IDT Station - Rebar - Construction [1 NoS]; IDT Civil Manpower [250 h] |
| S06A-CC-9750 | Block-14 -HT LT Station - Staircase |  |  |  |  | 101.7d → 119.8d |  | resources none → Weightage [205.81 h]; IDT Civil Manpower [40 h] |
| S06A-CC-9670 | Block-14 -HT & LT Station - Sheeting Installation |  |  |  |  | 82.7d → 100.8d |  | resources none → Weightage [1080.51 h]; IDT Sheeting - Construction [1 NoS]; IDT Civil Manpower [240 h] |
| S06A-CC-9820 | Block-14 -LT Panel Erection | 2026-10-31 → 2026-10-10 (-21d) | 2026-11-05 → 2026-10-15 (-21d) |  |  | 61.7d → 100.8d |  |  |
| S06A-CC-9860 | Block-14 -ACDB Installation | 2026-12-21 → 2026-10-16 (-66d) | 2026-12-22 → 2026-10-17 (-66d) |  |  | 17.7d → 101.8d |  | resources none → Weightage [205.81 h]; ACDB - Construction [1 NoS]; ACDC Manpower [40 h] |
| S06A-CC-9870 | Block-14 -Aux Transformer - Installation | 2026-12-22 → 2026-10-17 (-66d) | 2026-12-26 → 2026-10-21 (-66d) |  |  | 15d → 99.1d |  | resources none → Weightage [411.62 h]; Aux Transformer - Construction [1 NoS]; ACDC Manpower [80 h] |
| S06A-CC-9800 | Block-14 -Control Cable Laying | 2026-11-14 → 2026-10-21 (-24d) | 2026-11-19 → 2026-10-26 (-24d) |  |  | 51d → 93.1d |  |  |
| S06A-CC-9850 | Block-14 -SCADA & SACU Installation | 2026-11-14 → 2026-10-21 (-24d) | 2026-11-19 → 2026-10-26 (-24d) |  |  | 51d → 93.1d |  | resources none → Weightage [205.81 h]; SCADA & SACU - Construction [1 NoS]; ACDC Manpower [50 h] |
| S06A-CC-9810 | Block-14 -HT Panel Erection | 2026-11-02 → 2026-10-31 (-2d) | 2026-11-02 → 2026-10-31 (-2d) |  |  | 64.7d → 84.8d |  |  |
| S06A-CC-9840 | Block-14 -Inverter Installation | 2026-11-04 → 2026-11-02 (-2d) | 2026-11-10 → 2026-11-08 (-2d) |  |  | 62.7d → 82.8d |  | resources none → Weightage [1440.68 h]; Invertor - Construction [47 NoS]; ACDC Manpower [280 h] |

| ID | Task | Start | Finish | Duration | Complete | Total float | Predecessors | Other |
| --- | --- | --- | --- | --- | --- | --- | --- | --- |
| S06A-CC-9780 | Block-14 -HT Cable Laying | 2026-10-01 → 2026-11-02 (+32d) | 2026-10-08 → 2026-11-09 (+32d) |  |  | 98.7d → 85.1d | S06A-PR-4490 SS+4d, S06A-EN-1940 → S06A-PR-4490 SS+18d, S06A-EN-1940 | resources none → Weightage [2881.36 h]; HT Cable - Construction [4.09 KM]; ACDC Manpower [620 h] |
| S06A-CC-9790 | Block-14 -FO Cable Laying | 2026-10-01 → 2026-11-02 (+32d) | 2026-10-08 → 2026-11-09 (+32d) |  |  | 98.7d → 85.1d |  | resources none → Weightage [3601.7 h]; FO Cable - Construction [4 KM]; ACDC Manpower [700 h] |
| S06A-CC-9760 | Block-14 -Cable Hanger - Structure & Messenger Wire Erection | 2026-10-21 → 2026-11-04 (+14d) | 2026-10-25 → 2026-11-08 (+14d) |  |  | 64.7d → 68.8d |  | resources none → Weightage [1543.59 h]; LT Cable - Hangers - Construction [1 Lot]; LT Cable - Support Structure - Construction [1 Lot]; LT Cable - Clamps - Construction [1 Lot]; LT Cable - Messenger wire - Construction [3.44 KM]; LT Cable - Fasteners - Construction [1 Lot]; ACDC Manpower [203 h] |
| S06A-CC-9770 | Block-14 -LT Cable Laying | 2026-10-23 → 2026-11-06 (+14d) | 2026-11-11 → 2026-11-25 (+14d) |  |  | 64.7d → 68.8d |  | resources none → Weightage [11113.8 h]; LT Cable - Construction [10.12 KM]; ACDC Manpower [1688 h] |
| S06A-CC-9910 | Block-14 -LT Cable Terminations - Inverter to LT Panel | 2026-12-21 → 2026-11-21 (-30d) | 2026-12-27 → 2026-11-27 (-30d) |  |  | 20.7d → 68.8d |  | resources none → Weightage [720.34 h]; ACDC Manpower [210 h] |
| S06A-CC-9830 | Block-14 -IDT Erection | 2026-11-10 → 2026-12-05 (+25d) | 2026-11-14 → 2026-12-09 (+25d) |  |  | 48.7d → 41.8d |  |  |
| S06A-CC-9880 | Block-14 -NIFPS - Installation | 2026-11-10 → 2026-12-05 (+25d) | 2026-11-19 → 2026-12-14 (+25d) |  |  | 43.7d → 36.8d |  | resources none → Weightage [1080.51 h]; NIFPS - Construction [1 NoS]; ACDC Manpower [200 h] |
| S06A-CC-9890 | Block-14 -HT Cable Terminations - IDT Side | 2026-12-21 → 2026-12-10 (-11d) | 2026-12-22 → 2026-12-11 (-11d) |  |  | 25.7d → 54.8d |  | resources none → Weightage [205.81 h]; ACDC Manpower [70 h] |
| S06A-CC-9900 | Block-14 -LT Cable Terminations - LT Panel to IDT | 2026-12-21 → 2026-12-10 (-11d) | 2026-12-27 → 2026-12-16 (-11d) |  |  | 20.7d → 49.8d |  | resources none → Weightage [1440.68 h]; ACDC Manpower [300 h] |
| S06A-CC-9740 | Block-14 -IDT Area - Gravel Filling | 2026-12-23 → 2026-12-15 (-8d) | 2026-12-28 → 2026-12-19 (-9d) |  |  | 17d → 43.8d |  | resources none → Weightage [308.72 h]; IDT Civil Manpower [100 h] |
| S06A-CC-9720 | Block-14 -IDT Area - Fencing | 2026-12-26 → 2026-12-16 (-10d) | 2026-12-31 → 2026-12-20 (-11d) |  |  | 15d → 43.8d |  | resources none → Weightage [617.43 h]; IDT - Fencing - Construction - Construction [1 NoS]; IDT Civil Manpower [150 h] |
| S06A-CC-9730 | Block-14 -IDT Area - Gate Installation | 2026-12-31 → 2026-12-21 (-10d) | 2027-01-01 → 2026-12-21 (-11d) |  |  | 15d → 43.8d |  | resources none → Weightage [308.72 h]; IDT - Gate - Construction [1 NoS]; IDT Civil Manpower [50 h] |
| 3 | **CONSTRUCTION-PV AREA-PRE COMMISSIONING** | 2026-11-03 → 2026-10-16 (-18d) | 2027-01-05 → 2026-12-25 (-11d) |  |  |  |  |  |
| S06A-CC-9950 | Block-14 -LT Panel Testing | 2026-11-06 → 2026-10-16 (-21d) | 2026-11-06 → 2026-10-16 (-21d) |  |  | 61.7d → 100.8d |  | resources none → Weightage [205.81 h]; LT Panel Testing [40 h] |
| S06A-CC-9940 | Block-14 -HT Panel Testing | 2026-11-03 → 2026-11-01 (-2d) | 2026-11-03 → 2026-11-01 (-2d) |  |  | 64.7d → 84.8d |  | resources none → Weightage [102.91 h]; HT Panel Testing [20 h] |
| S06A-CC-9920 | Block-14 -IDT Filtration | 2026-11-20 → 2026-12-15 (+25d) | 2026-11-22 → 2026-12-17 (+25d) |  |  | 43.7d → 36.8d |  | resources none → Weightage [154.36 h]; IDT Filtration & Testing [30 h] |
| S06A-CC-9960 | Block-14 -Inspection Offer To Asset Commissioning Team | 2026-12-28 → 2026-12-17 (-11d) | 2026-12-28 → 2026-12-17 (-11d) |  |  | 20.7d → 49.8d |  | resources none → Weightage [51.45 h] |
| S06A-CC-9930 | Block-14 -IDT Testing | 2026-11-23 → 2026-12-18 (+25d) | 2026-11-24 → 2026-12-19 (+25d) |  |  | 43.7d → 36.8d |  | resources none → Weightage [102.91 h]; IDT Filtration & Testing [20 h] |
| S06A-CC-9970 | Block-14 -Punch Point Identification By Asset Commissioning Team | 2026-12-29 → 2026-12-18 (-11d) | 2026-12-31 → 2026-12-20 (-11d) |  |  | 20.7d → 49.8d |  | resources none → Weightage [308.72 h] |
| S06A-CC-9980 | Block-14 -Punch Point Rectification And Pre Charging Sign Off | 2027-01-01 → 2026-12-21 (-11d) | 2027-01-05 → 2026-12-25 (-11d) |  |  | 20.7d → 49.8d |  | resources none → Weightage [463.08 h] |
| 4 | **CONSTRUCTION-COMMISSIONING** | 2027-01-01 → 2026-12-27 (-5d) | 2027-02-26 → 2027-02-28 (+2d) |  |  |  |  |  |
| S06A-CC-10090 | Block-14 -CEA Application | 2027-01-01 → 2026-12-27 (-5d) | 2027-01-02 → 2026-12-28 (-5d) |  |  | 6d → 29.1d |  | resources none → Weightage [51.45 h] |
| S06A-CC-9990 | Block-14 -CEA Inspection | 2027-01-10 → 2027-01-05 (-5d) | 2027-01-11 → 2027-01-06 (-5d) |  |  | 6d → 29.1d |  | resources none → Weightage [51.45 h] |
| S06A-CC-10000 | Block-14 -CEA Compliance & Approval | 2027-01-12 → 2027-01-07 (-5d) | 2027-01-17 → 2027-01-12 (-5d) |  |  | 6d → 29.1d |  | resources none → Weightage [411.62 h] |
| S06A-CC-10010 | Block-14 -First Time Charging - Application | 2027-02-09 → 2027-02-11 (+2d) | 2027-02-09 → 2027-02-12 (+3d) |  |  | -15.3d → 0.1d |  | resources none → Weightage [51.45 h] |
| S06A-CC-10020 | Block-14 -First Time Charging - Approval | 2027-02-10 → 2027-02-12 (+2d) | 2027-02-11 → 2027-02-14 (+3d) |  |  | -15.3d → 0.1d |  | resources none → Weightage [308.72 h] |
| S06A-CC-10030 | Block-14 -First Time Charging | 2027-02-12 → 2027-02-14 (+2d) | 2027-02-12 → 2027-02-15 (+3d) |  |  | -15.3d → 0.1d |  | resources none → Weightage [102.91 h] |
| S06A-CC-10040 | Block-14 -Tracker Commissioning - SCADA | 2027-02-12 → 2027-02-14 (+2d) | 2027-02-19 → 2027-02-22 (+3d) |  |  | -10.3d → 5.1d |  | resources none → Weightage [1080.51 h] |
| S06A-CC-10050 | Block-14 -Robot Commissioning - SCADA | 2027-02-12 → 2027-02-14 (+2d) | 2027-02-23 → 2027-02-26 (+3d) |  |  | -14.3d → 1.1d |  | resources none → Weightage [6174.34 h] |
| S06A-CC-10060 | Block-14 -Trial Operation | 2027-02-19 → 2027-02-21 (+2d) | 2027-02-19 → 2027-02-22 (+3d) |  |  | -15.3d → 0.1d |  | resources none → Weightage [102.91 h] |
| S06A-CC-10070 | Block-14 -Trial Run Certificate | 2027-02-22 → 2027-02-24 (+2d) | 2027-02-22 → 2027-02-25 (+3d) |  |  | -15.3d → 0.1d |  | resources none → Weightage [51.45 h] |
| S06A-CC-10080 | Block-14 -COD | 2027-02-25 → 2027-02-27 (+2d) | 2027-02-26 → 2027-02-28 (+2d) | 2d → 1d |  | -15.3d → 0.1d |  | resources none → Weightage [360.17 h] |
| 3 | **BLOCK-15** |  | 2027-02-26 → 2027-02-28 (+2d) |  |  |  |  |  |
| 1 | **CONSTRUCTION-PV AREA-DC SIDE** |  | 2027-02-12 → 2027-02-15 (+3d) |  |  |  |  |  |
| S06A-CC-10100 | Block-15 -Piling - MMS (Marking, Auguring & Concreting) |  |  |  |  | 51.9d → 70d |  | resources none → Weightage [17288.2 h]; Piling Stub - MMS - Construction [5832 NoS]; Piling Manpower [2651 h] |
| S06A-CC-10110 | Block-15 -Pile Capping |  |  |  |  | 60.9d → 79d |  | resources none → Weightage [8644.08 h]; Piling Manpower [1268 h] |
| S06A-CC-10150 | Block-15 -Array Earthing | 2026-10-04 → 2026-10-08 (+4d) | 2026-10-29 → 2026-11-01 (+3d) |  |  | 61.9d → 76.8d |  | resources none → Earthing - Construction [5.33 KM]; Weightage [4939.47 h]; ACDC Manpower [108 h] |
| S06A-CC-10160 | Block-15 -MMS Erection - Torque Tube/Raftar |  |  |  |  | 51.9d → 70d |  | resources none → Weightage [59067.9 h]; MMS - Rafter - Construction [486 TBL]; FT Manpower [4860 h] |
| S06A-CC-10130 | Block-15 -Piling - Inverters | 2026-10-01 → 2026-10-15 (+14d) | 2026-10-17 → 2026-10-30 (+13d) |  |  | 77.7d → 82.8d |  | resources none → Weightage [2469.74 h]; Piling Stub - Invertor - Construction [94 NoS]; Piling Manpower [470 h] |
| S06A-CC-10170 | Block-15 -MMS Erection - Transmission Shaft/Bracing |  |  |  |  | 55.9d → 74d |  | resources none → Weightage [14406.8 h]; MMS - Bracing - Construction [486 TBL]; FT Manpower [2430 h] |
| S06A-CC-10180 | Block-15 -MMS Erection - Purlin |  |  |  |  | 51.9d → 70d |  | resources none → Weightage [14406.8 h]; MMS - FT Purlin - Construction [486 TBL]; FT Manpower [2430 h] |
| S06A-CC-10120 | Block-15 -Piling - LT Cable Hanger System | 2026-10-01 → 2026-10-16 (+15d) | 2026-10-21 → 2026-11-04 (+14d) |  |  | 87.7d → 91.8d |  | resources none → Weightage [2058.11 h]; Piling Stub - LT Cable Hanger - Construction [558 NoS]; Piling Manpower [535 h] |
| S06A-CC-10190 | Block-15 -MMS - RFI Completion |  |  |  |  | 51.9d → 70d |  | resources none → Weightage [7203.4 h]; FT Manpower [1400 h] |
| S06A-CC-10140 | Block-15 -Piling - Robotic Docking System | 2026-11-07 → 2026-12-05 (+28d) | 2026-11-16 → 2026-12-14 (+28d) |  |  | 47.7d → 37.8d |  | resources none → Piling Stub - Robot Docking - Construction [25 NoS]; Weightage [1543.59 h]; Piling Manpower [300 h] |
| S06A-CC-10250 | Block-15 -Robotic Structure - Docking Station Installation | 2026-12-16 → 2026-12-15 (-1d) | 2026-12-25 → 2026-12-24 (-1d) |  |  | 18.7d → 37.8d |  | resources none → Weightage [1543.59 h]; Robot Structure - Docking - Construction [40 NoS]; Robot Installation Manpower [300 h] |
| S06A-CC-10260 | Block-15 -Robotic Structure - Reverse Station Installation | 2026-12-16 → 2026-12-15 (-1d) | 2026-12-25 → 2026-12-24 (-1d) |  |  | 32.7d → 51.8d |  | resources none → Weightage [1543.59 h]; Robot Structure - Reverse - Construction [40 NoS]; Robot Installation Manpower [300 h] |
| S06A-CC-10200 | Block-15 -Module Installation | 2026-12-30 → 2027-01-01 (+2d) | 2027-02-08 → 2027-02-11 (+3d) |  |  | -15.3d → 0.1d | S06A-PR-6180 SS, S06A-CC-10190 FF+12d, S06A-CC-10190 SS+4d, S06A-EN-1630, S06A-EN-2070 → S06A-PR-6180 SS+8d, S06A-CC-10190 FF+12d, S06A-CC-10190 SS+4d, S06A-EN-1630, S06A-EN-2070 | resources none → Weightage [56598.1 h]; Module - Construction [17 MWdc]; Module Manpower [8400 h] |
| S06A-CC-10220 | Block-15 -DC Cable Laying | 2026-12-31 → 2027-01-02 (+2d) | 2027-01-30 → 2027-02-02 (+3d) |  |  | 0.7d → 16.1d |  | resources none → Weightage [12348.7 h]; DC Cable - Construction [99 KM]; ACDC Manpower [2200 h] |
| S06A-CC-10210 | Block-15 -Module - RFI Completion | 2027-01-03 → 2027-01-05 (+2d) | 2027-02-12 → 2027-02-15 (+3d) |  |  | -9.3d → 6.1d |  | resources none → Weightage [4116.23 h]; Module Manpower [1200 h] |
| S06A-CC-10280 | Block-15 -Robot Installation | 2027-01-11 → 2027-01-13 (+2d) | 2027-02-10 → 2027-02-13 (+3d) |  |  | -3.3d → 12.1d |  | resources none → Weightage [3087.17 h]; Robots - Construction [40 NoS]; Robot Installation Manpower [600 h] |
| S06A-CC-10230 | Block-15 -Module Interconnection & MC4 Termination | 2027-01-15 → 2027-01-17 (+2d) | 2027-02-09 → 2027-02-12 (+3d) |  |  | -7.3d → 8.1d |  | resources none → Weightage [7203.4 h]; MC4 Connector - Construction [3888 NoS]; ACDC Manpower [2592 h] |
| S06A-CC-10240 | Block-15 -VOC Testing | 2027-01-20 → 2027-01-22 (+2d) | 2027-02-11 → 2027-02-14 (+3d) |  |  | -7.3d → 8.1d |  | resources none → Weightage [617.43 h]; ACDC Manpower [220 h] |
| S06A-CC-10270 | Block-15 -Robotic Structure - Bridges Installation | 2027-01-20 → 2027-01-22 (+2d) | 2027-02-09 → 2027-02-12 (+3d) |  |  | 5.7d → 21.1d |  | resources none → Weightage [5145.28 h]; Robot Structure - Bridges - Construction [300 NoS]; Robot Installation Manpower [2200 h] |
| 2 | **CONSTRUCTION-PV AREA-AC SIDE** |  | 2027-01-01 → 2026-12-21 (-11d) |  |  |  |  |  |
| S06A-CC-10290 | Block-15 -IDT Foundation Up To Rail |  | 2026-10-07 → 2026-09-04 A (-33d) |  | 75% → 100% | 61.7d → none |  | resources none → Weightage [7717.93 h]; IDT Station - Rail - Construction [1 NoS]; IDT Station - Foundation Bolt & Inserts - Construction [1 NoS]; IDT Station - Rebar - Construction [1 NoS]; IDT Civil Manpower [1470 h] |
| S06A-CC-10300 | Block-15 -HT & LT Station - Slab |  | 2026-10-01 → 2026-08-30 A (-32d) |  | 62% → 100% | 78.7d → none |  | resources none → Weightage [5402.55 h]; IDT Station - Foundation Bolt & Inserts - Construction [1 NoS]; IDT Station - Rebar - Construction [1 NoS]; IDT Civil Manpower [1200 h] |
| S06A-CC-10330 | Block-15 -IDT Foundation - Grade Slab Casting & Dyke Wall |  |  |  |  | 97.7d → 115.8d |  | resources none → Weightage [4630.76 h]; IDT Station - Rebar - Construction [1 NoS]; IDT Civil Manpower [990 h] |
| S06A-CC-10340 | Block-15 -NIFPS Foundation | 2026-10-08 → 2026-10-01 (-7d) | 2026-10-16 → 2026-10-10 (-6d) |  |  | 61.7d → 85.8d |  | resources none → Weightage [1029.06 h]; IDT Station - Rebar - Construction [1 NoS]; IDT Civil Manpower [300 h] |
| S06A-CC-10350 | Block-15 -BOT Foundation | 2026-10-08 → 2026-10-01 (-7d) | 2026-10-16 → 2026-10-10 (-6d) |  |  | 84.7d → 108.8d |  | resources none → Weightage [3858.96 h]; IDT Station - Rebar - Construction [1 NoS]; IDT Civil Manpower [800 h] |
| S06A-CC-10360 | Block-15 -Aux Transformer Foundation | 2026-10-08 → 2026-10-01 (-7d) | 2026-10-12 → 2026-10-06 (-6d) |  |  | 82.7d → 106.8d |  | resources none → Weightage [1029.06 h]; IDT Station - Rebar - Construction [1 NoS]; IDT Civil Manpower [250 h] |
| S06A-CC-10310 | Block-15 -HT & LT Station - Shed Installation |  |  |  |  | 78.7d → 96.8d |  | resources none → Weightage [1080.51 h]; IDT Shed - Construction [1 NoS]; IDT Civil Manpower [250 h] |
| S06A-CC-10400 | Block-15 -HT LT Station - Staircase |  |  |  |  | 101.7d → 119.8d |  | resources none → Weightage [205.81 h]; IDT Civil Manpower [40 h] |
| S06A-CC-10320 | Block-15 -HT & LT Station - Sheeting Installation |  |  |  |  | 78.7d → 96.8d |  | resources none → Weightage [1080.51 h]; IDT Sheeting - Construction [1 NoS]; IDT Civil Manpower [240 h] |
| S06A-CC-10470 | Block-15 -LT Panel Erection | 2026-10-31 → 2026-10-14 (-17d) | 2026-11-05 → 2026-10-19 (-17d) |  |  | 61.7d → 96.8d |  | resources none → Weightage [823.25 h]; LT Panel - Construction [16 NoS]; ACDC Manpower [180 h] |
| S06A-CC-10510 | Block-15 -ACDB Installation | 2026-12-21 → 2026-10-16 (-66d) | 2026-12-22 → 2026-10-17 (-66d) |  |  | 17.7d → 101.8d |  | resources none → Weightage [205.81 h]; ACDB - Construction [1 NoS]; ACDC Manpower [40 h] |
| S06A-CC-10520 | Block-15 -Aux Transformer - Installation | 2026-12-22 → 2026-10-17 (-66d) | 2026-12-26 → 2026-10-21 (-66d) |  |  | 15d → 99.1d |  | resources none → Weightage [411.62 h]; Aux Transformer - Construction [1 NoS]; ACDC Manpower [80 h] |
| S06A-CC-10450 | Block-15 -Control Cable Laying | 2026-11-14 → 2026-10-21 (-24d) | 2026-11-19 → 2026-10-26 (-24d) |  |  | 51d → 93.1d |  | resources none → Weightage [308.72 h]; Control Cable - Construction [1 KM]; ACDC Manpower [100 h] |
| S06A-CC-10500 | Block-15 -SCADA & SACU Installation | 2026-11-14 → 2026-10-21 (-24d) | 2026-11-19 → 2026-10-26 (-24d) |  |  | 51d → 93.1d |  | resources none → Weightage [205.81 h]; SCADA & SACU - Construction [1 NoS]; ACDC Manpower [50 h] |
| S06A-CC-10410 | Block-15 -Cable Hanger - Structure & Messenger Wire Erection | 2026-10-01 → 2026-10-30 (+29d) | 2026-10-06 → 2026-11-03 (+28d) |  |  | 87.7d → 77.8d |  | resources none → Weightage [1543.59 h]; LT Cable - Hangers - Construction [1 Lot]; LT Cable - Support Structure - Construction [1 Lot]; LT Cable - Clamps - Construction [1 Lot]; LT Cable - Messenger wire - Construction [3.58 KM]; LT Cable - Fasteners - Construction [1 Lot]; ACDC Manpower [211 h] |
| S06A-CC-10420 | Block-15 -LT Cable Laying | 2026-10-01 → 2026-10-30 (+29d) | 2026-10-19 → 2026-11-16 (+28d) |  |  | 87.7d → 77.8d |  | resources none → Weightage [11113.8 h]; LT Cable - Construction [10.99 KM]; ACDC Manpower [1832 h] |

| ID | Task | Start | Finish | Duration | Complete | Total float | Predecessors | Other |
| --- | --- | --- | --- | --- | --- | --- | --- | --- |
| S06A-CC-10460 | Block-15 -HT Panel Erection | 2026-11-02 → 2026-10-31 (-2d) | 2026-11-02 → 2026-10-31 (-2d) |  |  | 64.7d → 84.8d |  | resources none → Weightage [308.72 h]; HT Panel - Construction [1 NoS]; ACDC Manpower [60 h] |
| S06A-CC-10490 | Block-15 -Inverter Installation | 2026-11-04 → 2026-11-02 (-2d) | 2026-11-10 → 2026-11-08 (-2d) |  |  | 62.7d → 82.8d |  | resources none → Weightage [1440.68 h]; Invertor - Construction [47 NoS]; ACDC Manpower [280 h] |
| S06A-CC-10430 | Block-15 -HT Cable Laying | 2026-10-01 → 2026-11-02 (+32d) | 2026-10-08 → 2026-11-09 (+32d) |  |  | 98.7d → 85.1d | S06A-PR-4490 SS+4d, S06A-EN-1940 → S06A-PR-4490 SS+18d, S06A-EN-1940 | resources none → Weightage [2881.36 h]; HT Cable - Construction [3.76 KM]; ACDC Manpower [570 h] |
| S06A-CC-10440 | Block-15 -FO Cable Laying | 2026-10-01 → 2026-11-02 (+32d) | 2026-10-08 → 2026-11-09 (+32d) |  |  | 98.7d → 85.1d |  | resources none → Weightage [3601.7 h]; FO Cable - Construction [4 KM]; ACDC Manpower [700 h] |
| S06A-CC-10560 | Block-15 -LT Cable Terminations - Inverter to LT Panel | 2026-12-21 → 2026-11-12 (-39d) | 2026-12-27 → 2026-11-18 (-39d) |  |  | 20.7d → 77.8d |  | resources none → Weightage [720.34 h]; ACDC Manpower [210 h] |
| S06A-CC-10480 | Block-15 -IDT Erection | 2026-11-10 → 2026-12-05 (+25d) | 2026-11-14 → 2026-12-09 (+25d) |  |  | 48.7d → 41.8d |  | resources none → Weightage [1543.59 h]; IDT - Construction [1 NoS]; ACDC Manpower [350 h] |
| S06A-CC-10530 | Block-15 -NIFPS - Installation | 2026-11-10 → 2026-12-05 (+25d) | 2026-11-19 → 2026-12-14 (+25d) |  |  | 43.7d → 36.8d |  | resources none → Weightage [1080.51 h]; NIFPS - Construction [1 NoS]; ACDC Manpower [200 h] |
| S06A-CC-10540 | Block-15 -HT Cable Terminations - IDT Side | 2026-12-21 → 2026-12-10 (-11d) | 2026-12-22 → 2026-12-11 (-11d) |  |  | 25.7d → 54.8d |  | resources none → Weightage [205.81 h]; ACDC Manpower [70 h] |
| S06A-CC-10550 | Block-15 -LT Cable Terminations - LT Panel to IDT | 2026-12-21 → 2026-12-10 (-11d) | 2026-12-27 → 2026-12-16 (-11d) |  |  | 20.7d → 49.8d |  | resources none → Weightage [1440.68 h]; ACDC Manpower [300 h] |
| S06A-CC-10390 | Block-15 -IDT Area - Gravel Filling | 2026-12-23 → 2026-12-15 (-8d) | 2026-12-28 → 2026-12-19 (-9d) |  |  | 17d → 43.8d |  | resources none → Weightage [308.72 h]; IDT Civil Manpower [100 h] |
| S06A-CC-10370 | Block-15 -IDT Area - Fencing | 2026-12-26 → 2026-12-16 (-10d) | 2026-12-31 → 2026-12-20 (-11d) |  |  | 15d → 43.8d |  | resources none → Weightage [617.43 h]; IDT - Fencing - Construction - Construction [1 NoS]; IDT Civil Manpower [150 h] |
| S06A-CC-10380 | Block-15 -IDT Area - Gate Installation | 2026-12-31 → 2026-12-21 (-10d) | 2027-01-01 → 2026-12-21 (-11d) |  |  | 15d → 43.8d |  | resources none → Weightage [308.72 h]; IDT - Gate - Construction [1 NoS]; IDT Civil Manpower [50 h] |
| 3 | **CONSTRUCTION-PV AREA-PRE COMMISSIONING** | 2026-11-03 → 2026-10-20 (-14d) | 2027-01-05 → 2026-12-25 (-11d) |  |  |  |  |  |
| S06A-CC-10600 | Block-15 -LT Panel Testing | 2026-11-06 → 2026-10-20 (-17d) | 2026-11-06 → 2026-10-20 (-17d) |  |  | 61.7d → 96.8d |  | resources none → Weightage [205.81 h]; LT Panel Testing [40 h] |
| S06A-CC-10590 | Block-15 -HT Panel Testing | 2026-11-03 → 2026-11-01 (-2d) | 2026-11-03 → 2026-11-01 (-2d) |  |  | 64.7d → 84.8d |  | resources none → Weightage [102.91 h]; HT Panel Testing [20 h] |
| S06A-CC-10570 | Block-15 -IDT Filtration | 2026-11-20 → 2026-12-15 (+25d) | 2026-11-22 → 2026-12-17 (+25d) |  |  | 43.7d → 36.8d |  | resources none → Weightage [154.36 h]; IDT Filtration & Testing [30 h] |
| S06A-CC-10610 | Block-15 -Inspection Offer To Asset Commissioning Team | 2026-12-28 → 2026-12-17 (-11d) | 2026-12-28 → 2026-12-17 (-11d) |  |  | 20.7d → 49.8d |  | resources none → Weightage [51.45 h] |
| S06A-CC-10580 | Block-15 -IDT Testing | 2026-11-23 → 2026-12-18 (+25d) | 2026-11-24 → 2026-12-19 (+25d) |  |  | 43.7d → 36.8d |  | resources none → Weightage [102.91 h]; IDT Filtration & Testing [20 h] |
| S06A-CC-10620 | Block-15 -Punch Point Identification By Asset Commissioning Team | 2026-12-29 → 2026-12-18 (-11d) | 2026-12-31 → 2026-12-20 (-11d) |  |  | 20.7d → 49.8d |  | resources none → Weightage [308.72 h] |
| S06A-CC-10630 | Block-15 -Punch Point Rectification And Pre Charging Sign Off | 2027-01-01 → 2026-12-21 (-11d) | 2027-01-05 → 2026-12-25 (-11d) |  |  | 20.7d → 49.8d |  | resources none → Weightage [463.08 h] |
| 4 | **CONSTRUCTION-COMMISSIONING** | 2027-01-01 → 2026-12-27 (-5d) | 2027-02-26 → 2027-02-28 (+2d) |  |  |  |  |  |
| S06A-CC-10640 | Block-15 -CEA Application | 2027-01-01 → 2026-12-27 (-5d) | 2027-01-02 → 2026-12-28 (-5d) |  |  | 6d → 29.1d |  | resources none → Weightage [51.45 h] |
| S06A-CC-10650 | Block-15 -CEA Inspection | 2027-01-10 → 2027-01-05 (-5d) | 2027-01-11 → 2027-01-06 (-5d) |  |  | 6d → 29.1d |  | resources none → Weightage [51.45 h] |
| S06A-CC-10660 | Block-15 -CEA Compliance & Approval | 2027-01-12 → 2027-01-07 (-5d) | 2027-01-17 → 2027-01-12 (-5d) |  |  | 6d → 29.1d |  | resources none → Weightage [411.62 h] |
| S06A-CC-10670 | Block-15 -First Time Charging - Application | 2027-02-09 → 2027-02-11 (+2d) | 2027-02-09 → 2027-02-12 (+3d) |  |  | -15.3d → 0.1d |  | resources none → Weightage [51.45 h] |
| S06A-CC-10680 | Block-15 -First Time Charging - Approval | 2027-02-10 → 2027-02-12 (+2d) | 2027-02-11 → 2027-02-14 (+3d) |  |  | -15.3d → 0.1d |  | resources none → Weightage [308.72 h] |
| S06A-CC-10690 | Block-15 -First Time Charging | 2027-02-12 → 2027-02-14 (+2d) | 2027-02-12 → 2027-02-15 (+3d) |  |  | -15.3d → 0.1d |  | resources none → Weightage [102.91 h] |
| S06A-CC-10700 | Block-15 -Tracker Commissioning - SCADA | 2027-02-12 → 2027-02-14 (+2d) | 2027-02-19 → 2027-02-22 (+3d) |  |  | -10.3d → 5.1d |  | resources none → Weightage [1080.51 h] |
| S06A-CC-10710 | Block-15 -Robot Commissioning - SCADA | 2027-02-12 → 2027-02-14 (+2d) | 2027-02-23 → 2027-02-26 (+3d) |  |  | -14.3d → 1.1d |  | resources none → Weightage [6174.34 h] |
| S06A-CC-10720 | Block-15 -Trial Operation | 2027-02-19 → 2027-02-21 (+2d) | 2027-02-19 → 2027-02-22 (+3d) |  |  | -15.3d → 0.1d |  | resources none → Weightage [102.91 h] |
| S06A-CC-10730 | Block-15 -Trial Run Certificate | 2027-02-22 → 2027-02-24 (+2d) | 2027-02-22 → 2027-02-25 (+3d) |  |  | -15.3d → 0.1d |  | resources none → Weightage [51.45 h] |
| S06A-CC-10740 | Block-15 -COD | 2027-02-25 → 2027-02-27 (+2d) | 2027-02-26 → 2027-02-28 (+2d) | 2d → 1d |  | -15.3d → 0.1d |  | resources none → Weightage [360.17 h] |
| 4 | **BLOCK-16** |  | 2027-02-26 → 2027-02-28 (+2d) |  |  |  |  |  |
| 1 | **CONSTRUCTION-PV AREA-DC SIDE** |  | 2027-02-12 → 2027-02-15 (+3d) |  |  |  |  |  |
| S06A-CC-10750 | Block-16 -Piling - MMS (Marking, Auguring & Concreting) |  |  |  |  | 61.7d → 79.8d |  | resources none → Weightage [17288.2 h]; Piling Stub - MMS - Construction [5832 NoS]; Piling Manpower [2651 h] |
| S06A-CC-10760 | Block-16 -Pile Capping |  |  |  |  | 79.7d → 97.8d |  | resources none → Weightage [8644.08 h]; Piling Manpower [1268 h] |
| S06A-CC-10810 | Block-16 -MMS Erection - Torque Tube/Raftar | 2026-10-01 → 2026-10-05 (+4d) | 2026-10-29 → 2026-11-01 (+3d) |  |  | 61.7d → 76.8d |  | resources none → Weightage [59067.9 h]; MMS - Rafter - Construction [486 TBL]; FT Manpower [4860 h] |
| S06A-CC-10800 | Block-16 -Array Earthing | 2026-10-01 → 2026-10-08 (+7d) | 2026-10-26 → 2026-11-01 (+6d) |  |  | 64.7d → 76.8d |  | resources none → Earthing - Construction [5.36 KM]; Weightage [4939.47 h]; ACDC Manpower [108 h] |
| S06A-CC-10820 | Block-16 -MMS Erection - Transmission Shaft/Bracing | 2026-10-06 → 2026-10-09 (+3d) | 2026-11-02 → 2026-11-05 (+3d) |  |  | 65.7d → 80.8d |  | resources none → Weightage [14406.8 h]; MMS - Bracing - Construction [486 TBL]; FT Manpower [2430 h] |
| S06A-CC-10830 | Block-16 -MMS Erection - Purlin | 2026-10-06 → 2026-10-09 (+3d) | 2026-11-02 → 2026-11-05 (+3d) |  |  | 61.7d → 76.8d |  | resources none → Weightage [14406.8 h]; MMS - FT Purlin - Construction [486 TBL]; FT Manpower [2430 h] |
| S06A-CC-10840 | Block-16 -MMS - RFI Completion | 2026-10-10 → 2026-10-13 (+3d) | 2026-11-06 → 2026-11-09 (+3d) |  |  | 61.7d → 76.8d |  | resources none → Weightage [7203.4 h]; FT Manpower [1400 h] |
| S06A-CC-10780 | Block-16 -Piling - Inverters | 2026-10-01 → 2026-10-15 (+14d) | 2026-10-17 → 2026-10-30 (+13d) |  |  | 77.7d → 82.8d |  | resources none → Weightage [2469.74 h]; Piling Stub - Invertor - Construction [96 NoS]; Piling Manpower [480 h] |
| S06A-CC-10770 | Block-16 -Piling - LT Cable Hanger System | 2026-10-01 → 2026-10-16 (+15d) | 2026-10-21 → 2026-11-04 (+14d) |  |  | 64.7d → 68.8d |  | resources none → Weightage [2058.11 h]; Piling Stub - LT Cable Hanger - Construction [548 NoS]; Piling Manpower [498 h] |
| S06A-CC-10790 | Block-16 -Piling - Robotic Docking System | 2026-11-07 → 2026-12-05 (+28d) | 2026-11-16 → 2026-12-14 (+28d) |  |  | 47.7d → 37.8d |  | resources none → Piling Stub - Robot Docking - Construction [25 NoS]; Weightage [1543.59 h]; Piling Manpower [300 h] |
| S06A-CC-10900 | Block-16 -Robotic Structure - Docking Station Installation | 2026-12-16 → 2026-12-15 (-1d) | 2026-12-25 → 2026-12-24 (-1d) |  |  | 18.7d → 37.8d |  | resources none → Weightage [1543.59 h]; Robot Structure - Docking - Construction [40 NoS]; Robot Installation Manpower [300 h] |
| S06A-CC-10910 | Block-16 -Robotic Structure - Reverse Station Installation | 2026-12-16 → 2026-12-15 (-1d) | 2026-12-25 → 2026-12-24 (-1d) |  |  | 32.7d → 51.8d |  | resources none → Weightage [1543.59 h]; Robot Structure - Reverse - Construction [40 NoS]; Robot Installation Manpower [300 h] |
| S06A-CC-10850 | Block-16 -Module Installation | 2026-12-30 → 2027-01-01 (+2d) | 2027-02-08 → 2027-02-11 (+3d) |  |  | -15.3d → 0.1d | S06A-PR-6180 SS, S06A-CC-10840 FF+12d, S06A-CC-10840 SS+4d, S06A-EN-1630, S06A-EN-2070 → S06A-PR-6180 SS+8d, S06A-CC-10840 FF+12d, S06A-CC-10840 SS+4d, S06A-EN-1630, S06A-EN-2070 | resources none → Weightage [56598.1 h]; Module - Construction [17 MWdc]; Module Manpower [8400 h] |
| S06A-CC-10870 | Block-16 -DC Cable Laying | 2026-12-31 → 2027-01-02 (+2d) | 2027-01-30 → 2027-02-02 (+3d) |  |  | 0.7d → 16.1d |  | resources none → Weightage [12348.7 h]; DC Cable - Construction [99 KM]; ACDC Manpower [2200 h] |
| S06A-CC-10860 | Block-16 -Module - RFI Completion | 2027-01-03 → 2027-01-05 (+2d) | 2027-02-12 → 2027-02-15 (+3d) |  |  | -9.3d → 6.1d |  | resources none → Weightage [4116.23 h]; Module Manpower [1200 h] |
| S06A-CC-10930 | Block-16 -Robot Installation | 2027-01-11 → 2027-01-13 (+2d) | 2027-02-10 → 2027-02-13 (+3d) |  |  | -3.3d → 12.1d |  | resources none → Weightage [3087.17 h]; Robots - Construction [40 NoS]; Robot Installation Manpower [600 h] |
| S06A-CC-10880 | Block-16 -Module Interconnection & MC4 Termination | 2027-01-15 → 2027-01-17 (+2d) | 2027-02-09 → 2027-02-12 (+3d) |  |  | -7.3d → 8.1d |  | resources none → Weightage [7203.4 h]; MC4 Connector - Construction [3888 NoS]; ACDC Manpower [2592 h] |
| S06A-CC-10890 | Block-16 -VOC Testing | 2027-01-20 → 2027-01-22 (+2d) | 2027-02-11 → 2027-02-14 (+3d) |  |  | -7.3d → 8.1d |  | resources none → Weightage [617.43 h]; ACDC Manpower [220 h] |
| S06A-CC-10920 | Block-16 -Robotic Structure - Bridges Installation | 2027-01-20 → 2027-01-22 (+2d) | 2027-02-09 → 2027-02-12 (+3d) |  |  | 5.7d → 21.1d |  | resources none → Weightage [5145.28 h]; Robot Structure - Bridges - Construction [300 NoS]; Robot Installation Manpower [2200 h] |
| 2 | **CONSTRUCTION-PV AREA-AC SIDE** |  | 2027-01-01 → 2026-12-21 (-11d) |  |  |  |  |  |
| S06A-CC-10940 | Block-16 -IDT Foundation Up To Rail |  | 2026-10-07 → 2026-09-11 A (-26d) |  | 75% → 100% | 60.7d → none |  | resources none → Weightage [7717.93 h]; IDT Station - Rail - Construction [1 NoS]; IDT Station - Foundation Bolt & Inserts - Construction [1 NoS]; IDT Station - Rebar - Construction [1 NoS]; IDT Civil Manpower [1470 h] |
| S06A-CC-10950 | Block-16 -HT & LT Station - Slab |  |  |  |  |  |  | resources none → Weightage [5402.55 h]; IDT Station - Foundation Bolt & Inserts - Construction [1 NoS]; IDT Station - Rebar - Construction [1 NoS]; IDT Civil Manpower [1200 h] |
| S06A-CC-10980 | Block-16 -IDT Foundation - Grade Slab Casting & Dyke Wall |  |  |  |  | 97.7d → 115.8d |  | resources none → Weightage [4630.76 h]; IDT Station - Rebar - Construction [1 NoS]; IDT Civil Manpower [990 h] |
| S06A-CC-10990 | Block-16 -NIFPS Foundation | 2026-10-08 → 2026-10-01 (-7d) | 2026-10-17 → 2026-10-11 (-6d) |  |  | 60.7d → 84.8d |  | resources none → Weightage [1029.06 h]; IDT Station - Rebar - Construction [1 NoS]; IDT Civil Manpower [300 h] |
| S06A-CC-11000 | Block-16 -BOT Foundation | 2026-10-08 → 2026-10-01 (-7d) | 2026-10-17 → 2026-10-11 (-6d) |  |  | 83.7d → 107.8d |  | resources none → Weightage [3858.96 h]; IDT Station - Rebar - Construction [1 NoS]; IDT Civil Manpower [800 h] |
| S06A-CC-11010 | Block-16 -Aux Transformer Foundation | 2026-10-08 → 2026-10-01 (-7d) | 2026-10-12 → 2026-10-06 (-6d) |  |  | 82.7d → 106.8d |  | resources none → Weightage [1029.06 h]; IDT Station - Rebar - Construction [1 NoS]; IDT Civil Manpower [250 h] |
| S06A-CC-10960 | Block-16 -HT & LT Station - Shed Installation |  |  |  |  | 78.7d → 96.8d |  | resources none → Weightage [1080.51 h]; IDT Shed - Construction [1 NoS]; IDT Civil Manpower [250 h] |
| S06A-CC-11050 | Block-16 -HT LT Station - Staircase |  |  |  |  | 101.7d → 119.8d |  | resources none → Weightage [205.81 h]; IDT Civil Manpower [40 h] |
| S06A-CC-10970 | Block-16 -HT & LT Station - Sheeting Installation |  |  |  |  | 78.7d → 96.8d |  | resources none → Weightage [1080.51 h]; IDT Sheeting - Construction [1 NoS]; IDT Civil Manpower [240 h] |
| S06A-CC-11120 | Block-16 -LT Panel Erection | 2026-10-31 → 2026-10-14 (-17d) | 2026-11-05 → 2026-10-19 (-17d) |  |  | 61.7d → 96.8d |  | resources none → Weightage [823.25 h]; LT Panel - Construction [16 NoS]; ACDC Manpower [180 h] |
| S06A-CC-11160 | Block-16 -ACDB Installation | 2026-12-21 → 2026-10-16 (-66d) | 2026-12-22 → 2026-10-17 (-66d) |  |  | 17.7d → 101.8d |  | resources none → Weightage [205.81 h]; ACDB - Construction [1 NoS]; ACDC Manpower [40 h] |
| S06A-CC-11170 | Block-16 -Aux Transformer - Installation | 2026-12-22 → 2026-10-17 (-66d) | 2026-12-26 → 2026-10-21 (-66d) |  |  | 15d → 99.1d |  | resources none → Weightage [411.62 h]; Aux Transformer - Construction [1 NoS]; ACDC Manpower [80 h] |
| S06A-CC-11100 | Block-16 -Control Cable Laying | 2026-11-14 → 2026-10-21 (-24d) | 2026-11-19 → 2026-10-26 (-24d) |  |  | 51d → 93.1d |  | resources none → Weightage [308.72 h]; Control Cable - Construction [1 KM]; ACDC Manpower [100 h] |
| S06A-CC-11150 | Block-16 -SCADA & SACU Installation | 2026-11-14 → 2026-10-21 (-24d) | 2026-11-19 → 2026-10-26 (-24d) |  |  | 51d → 93.1d |  | resources none → Weightage [205.81 h]; SCADA & SACU - Construction [1 NoS]; ACDC Manpower [50 h] |
| S06A-CC-11110 | Block-16 -HT Panel Erection | 2026-11-02 → 2026-10-31 (-2d) | 2026-11-02 → 2026-10-31 (-2d) |  |  | 64.7d → 84.8d |  | resources none → Weightage [308.72 h]; HT Panel - Construction [1 NoS]; ACDC Manpower [60 h] |
| S06A-CC-11140 | Block-16 -Inverter Installation | 2026-11-04 → 2026-11-02 (-2d) | 2026-11-10 → 2026-11-08 (-2d) |  |  | 62.7d → 82.8d |  | resources none → Weightage [1440.68 h]; Invertor - Construction [48 NoS]; ACDC Manpower [280 h] |

| ID | Task | Start | Finish | Duration | Complete | Total float | Predecessors | Other |
| --- | --- | --- | --- | --- | --- | --- | --- | --- |
| S06A-CC-11080 | Block-16 -HT Cable Laying | 2026-10-01 → 2026-11-02 (+32d) | 2026-10-08 → 2026-11-09 (+32d) |  |  | 98.7d → 85.1d | S06A-PR-4490 SS+4d, S06A-EN-1940 → S06A-PR-4490 SS+18d, S06A-EN-1940 | resources none → Weightage [2881.36 h]; HT Cable - Construction [3.41 KM]; ACDC Manpower [517 h] |
| S06A-CC-11090 | Block-16 -FO Cable Laying | 2026-10-01 → 2026-11-02 (+32d) | 2026-10-08 → 2026-11-09 (+32d) |  |  | 98.7d → 85.1d |  | resources none → Weightage [3601.7 h]; FO Cable - Construction [4 KM]; ACDC Manpower [700 h] |
| S06A-CC-11060 | Block-16 -Cable Hanger - Structure & Messenger Wire Erection | 2026-10-21 → 2026-11-04 (+14d) | 2026-10-25 → 2026-11-08 (+14d) |  |  | 64.7d → 68.8d |  | resources none → Weightage [1543.59 h]; LT Cable - Hangers - Construction [1 Lot]; LT Cable - Support Structure - Construction [1 Lot]; LT Cable - Clamps - Construction [1 Lot]; LT Cable - Messenger wire - Construction [3.43 KM]; LT Cable - Fasteners - Construction [1 Lot]; ACDC Manpower [202 h] |
| S06A-CC-11070 | Block-16 -LT Cable Laying | 2026-10-23 → 2026-11-06 (+14d) | 2026-11-11 → 2026-11-25 (+14d) |  |  | 64.7d → 68.8d |  | resources none → Weightage [11113.8 h]; LT Cable - Construction [10.33 KM]; ACDC Manpower [1722 h] |
| S06A-CC-11210 | Block-16 -LT Cable Terminations - Inverter to LT Panel | 2026-12-21 → 2026-11-21 (-30d) | 2026-12-27 → 2026-11-27 (-30d) |  |  | 20.7d → 68.8d |  | resources none → Weightage [720.34 h]; ACDC Manpower [210 h] |
| S06A-CC-11130 | Block-16 -IDT Erection | 2026-11-10 → 2026-12-05 (+25d) | 2026-11-14 → 2026-12-09 (+25d) |  |  | 48.7d → 41.8d |  | resources none → Weightage [1543.59 h]; IDT - Construction [1 NoS]; ACDC Manpower [350 h] |
| S06A-CC-11180 | Block-16 -NIFPS - Installation | 2026-11-10 → 2026-12-05 (+25d) | 2026-11-19 → 2026-12-14 (+25d) |  |  | 43.7d → 36.8d |  | resources none → Weightage [1080.51 h]; NIFPS - Construction [1 NoS]; ACDC Manpower [200 h] |
| S06A-CC-11190 | Block-16 -HT Cable Terminations - IDT Side | 2026-12-21 → 2026-12-10 (-11d) | 2026-12-22 → 2026-12-11 (-11d) |  |  | 25.7d → 54.8d |  | resources none → Weightage [205.81 h]; ACDC Manpower [70 h] |
| S06A-CC-11200 | Block-16 -LT Cable Terminations - LT Panel to IDT | 2026-12-21 → 2026-12-10 (-11d) | 2026-12-27 → 2026-12-16 (-11d) |  |  | 20.7d → 49.8d |  | resources none → Weightage [1440.68 h]; ACDC Manpower [300 h] |
| S06A-CC-11040 | Block-16 -IDT Area - Gravel Filling | 2026-12-23 → 2026-12-15 (-8d) | 2026-12-28 → 2026-12-19 (-9d) |  |  | 17d → 43.8d |  | resources none → Weightage [308.72 h]; IDT Civil Manpower [100 h] |
| S06A-CC-11020 | Block-16 -IDT Area - Fencing | 2026-12-26 → 2026-12-16 (-10d) | 2026-12-31 → 2026-12-20 (-11d) |  |  | 15d → 43.8d |  | resources none → Weightage [617.43 h]; IDT - Fencing - Construction - Construction [1 NoS]; IDT Civil Manpower [150 h] |
| S06A-CC-11030 | Block-16 -IDT Area - Gate Installation | 2026-12-31 → 2026-12-21 (-10d) | 2027-01-01 → 2026-12-21 (-11d) |  |  | 15d → 43.8d |  | resources none → Weightage [308.72 h]; IDT - Gate - Construction [1 NoS]; IDT Civil Manpower [50 h] |
| 3 | **CONSTRUCTION-PV AREA-PRE COMMISSIONING** | 2026-11-03 → 2026-10-20 (-14d) | 2027-01-05 → 2026-12-25 (-11d) |  |  |  |  |  |
| S06A-CC-11250 | Block-16 -LT Panel Testing | 2026-11-06 → 2026-10-20 (-17d) | 2026-11-06 → 2026-10-20 (-17d) |  |  | 61.7d → 96.8d |  | resources none → Weightage [205.81 h]; LT Panel Testing [40 h] |
| S06A-CC-11240 | Block-16 -HT Panel Testing | 2026-11-03 → 2026-11-01 (-2d) | 2026-11-03 → 2026-11-01 (-2d) |  |  | 64.7d → 84.8d |  | resources none → Weightage [102.91 h]; HT Panel Testing [20 h] |
| S06A-CC-11220 | Block-16 -IDT Filtration | 2026-11-20 → 2026-12-15 (+25d) | 2026-11-22 → 2026-12-17 (+25d) |  |  | 43.7d → 36.8d |  | resources none → Weightage [154.36 h]; IDT Filtration & Testing [30 h] |
| S06A-CC-11260 | Block-16 -Inspection Offer To Asset Commissioning Team | 2026-12-28 → 2026-12-17 (-11d) | 2026-12-28 → 2026-12-17 (-11d) |  |  | 20.7d → 49.8d |  | resources none → Weightage [51.45 h] |
| S06A-CC-11230 | Block-16 -IDT Testing | 2026-11-23 → 2026-12-18 (+25d) | 2026-11-24 → 2026-12-19 (+25d) |  |  | 43.7d → 36.8d |  | resources none → Weightage [102.91 h]; IDT Filtration & Testing [20 h] |
| S06A-CC-11270 | Block-16 -Punch Point Identification By Asset Commissioning Team | 2026-12-29 → 2026-12-18 (-11d) | 2026-12-31 → 2026-12-20 (-11d) |  |  | 20.7d → 49.8d |  | resources none → Weightage [308.72 h] |
| S06A-CC-11280 | Block-16 -Punch Point Rectification And Pre Charging Sign Off | 2027-01-01 → 2026-12-21 (-11d) | 2027-01-05 → 2026-12-25 (-11d) |  |  | 20.7d → 49.8d |  | resources none → Weightage [463.08 h] |
| 4 | **CONSTRUCTION-COMMISSIONING** | 2027-01-01 → 2026-12-27 (-5d) | 2027-02-26 → 2027-02-28 (+2d) |  |  |  |  |  |
| S06A-CC-11290 | Block-16 -CEA Application | 2027-01-01 → 2026-12-27 (-5d) | 2027-01-02 → 2026-12-28 (-5d) |  |  | 6d → 29.1d |  | resources none → Weightage [51.45 h] |
| S06A-CC-11300 | Block-16 -CEA Inspection | 2027-01-10 → 2027-01-05 (-5d) | 2027-01-11 → 2027-01-06 (-5d) |  |  | 6d → 29.1d |  | resources none → Weightage [51.45 h] |
| S06A-CC-11310 | Block-16 -CEA Compliance & Approval | 2027-01-12 → 2027-01-07 (-5d) | 2027-01-17 → 2027-01-12 (-5d) |  |  | 6d → 29.1d |  | resources none → Weightage [411.62 h] |
| S06A-CC-11320 | Block-16 -First Time Charging - Application | 2027-02-09 → 2027-02-11 (+2d) | 2027-02-09 → 2027-02-12 (+3d) |  |  | -15.3d → 0.1d |  | resources none → Weightage [51.45 h] |
| S06A-CC-11330 | Block-16 -First Time Charging - Approval | 2027-02-10 → 2027-02-12 (+2d) | 2027-02-11 → 2027-02-14 (+3d) |  |  | -15.3d → 0.1d |  | resources none → Weightage [308.72 h] |
| S06A-CC-11340 | Block-16 -First Time Charging | 2027-02-12 → 2027-02-14 (+2d) | 2027-02-12 → 2027-02-15 (+3d) |  |  | -15.3d → 0.1d |  | resources none → Weightage [102.91 h] |
| S06A-CC-11350 | Block-16 -Tracker Commissioning - SCADA | 2027-02-12 → 2027-02-14 (+2d) | 2027-02-19 → 2027-02-22 (+3d) |  |  | -10.3d → 5.1d |  | resources none → Weightage [1080.51 h] |
| S06A-CC-11360 | Block-16 -Robot Commissioning - SCADA | 2027-02-12 → 2027-02-14 (+2d) | 2027-02-23 → 2027-02-26 (+3d) |  |  | -14.3d → 1.1d |  | resources none → Weightage [6174.34 h] |
| S06A-CC-11370 | Block-16 -Trial Operation | 2027-02-19 → 2027-02-21 (+2d) | 2027-02-19 → 2027-02-22 (+3d) |  |  | -15.3d → 0.1d |  | resources none → Weightage [102.91 h] |
| S06A-CC-11380 | Block-16 -Trial Run Certificate | 2027-02-22 → 2027-02-24 (+2d) | 2027-02-22 → 2027-02-25 (+3d) |  |  | -15.3d → 0.1d |  | resources none → Weightage [51.45 h] |
| S06A-CC-11390 | Block-16 -COD | 2027-02-25 → 2027-02-27 (+2d) | 2027-02-26 → 2027-02-28 (+2d) | 2d → 1d |  | -15.3d → 0.1d |  | resources none → Weightage [360.17 h] |
| S06A-CC-11400 | Block-17 -Piling - MMS (Marking, Auguring & Concreting) |  |  |  |  | 58.7d → 75.8d |  | resources none → Weightage [17287.1 h]; Piling Stub - MMS - Construction [5832 NoS]; Piling Manpower [2651 h] |
| S06A-CC-11410 | Block-17 -Pile Capping | 2026-10-01 → 2026-09-13 A (-18d) |  |  | 0% → 1% | 68.7d → 85.8d |  | resources none → Weightage [8644.08 h]; Piling Manpower [1268 h] |
| S06A-CC-11460 | Block-17 -MMS Erection - Torque Tube/Raftar | 2026-10-10 → 2026-10-18 (+8d) | 2026-11-06 → 2026-11-14 (+8d) |  |  | 58.7d → 67.8d |  | resources none → Weightage [59067.9 h]; MMS - Rafter - Construction [486 TBL]; FT Manpower [4860 h] |
| S06A-CC-11420 | Block-17 -Piling - LT Cable Hanger System | 2026-10-01 → 2026-10-21 (+20d) | 2026-10-21 → 2026-11-09 (+19d) |  |  | 68.7d → 66.8d |  | resources none → Weightage [2058.11 h]; Piling Stub - LT Cable Hanger - Construction [598 NoS]; Piling Manpower [544 h] |
| S06A-CC-11450 | Block-17 -Array Earthing | 2026-10-03 → 2026-10-21 (+18d) | 2026-10-27 → 2026-11-14 (+18d) |  |  | 68.7d → 67.8d |  | resources none → Earthing - Construction [5.03 KM]; Weightage [4939.47 h]; ACDC Manpower [108 h] |
| S06A-CC-11470 | Block-17 -MMS Erection - Transmission Shaft/Bracing | 2026-10-14 → 2026-10-22 (+8d) | 2026-11-10 → 2026-11-18 (+8d) |  |  | 62.7d → 71.8d |  | resources none → Weightage [14406.8 h]; MMS - Bracing - Construction [486 TBL]; FT Manpower [2430 h] |
| S06A-CC-11480 | Block-17 -MMS Erection - Purlin | 2026-10-14 → 2026-10-22 (+8d) | 2026-11-10 → 2026-11-18 (+8d) |  |  | 58.7d → 67.8d |  | resources none → Weightage [14406.8 h]; MMS - FT Purlin - Construction [486 TBL]; FT Manpower [2430 h] |
| S06A-CC-11430 | Block-17 -Piling - Inverters | 2026-10-01 → 2026-10-26 (+25d) | 2026-10-17 → 2026-11-10 (+24d) |  |  | 77.7d → 70.8d |  | resources none → Weightage [2469.74 h]; Piling Stub - Invertor - Construction [94 NoS]; Piling Manpower [470 h] |
| S06A-CC-11490 | Block-17 -MMS - RFI Completion | 2026-10-18 → 2026-10-26 (+8d) | 2026-11-14 → 2026-11-22 (+8d) |  |  | 58.7d → 67.8d |  | resources none → Weightage [7203.4 h]; FT Manpower [1400 h] |
| S06A-CC-11440 | Block-17 -Piling - Robotic Docking System | 2026-11-17 → 2026-12-15 (+28d) | 2026-11-26 → 2026-12-24 (+28d) |  |  | 37.7d → 26.8d |  | resources none → Piling Stub - Robot Docking - Construction [25 NoS]; Weightage [1543.59 h]; Piling Manpower [300 h] |
| S06A-CC-11550 | Block-17 -Robotic Structure - Docking Station Installation | 2026-12-17 → 2026-12-25 (+8d) | 2026-12-26 → 2027-01-03 (+8d) |  |  | 17.7d → 26.8d |  | resources none → Weightage [1543.59 h]; Robot Structure - Docking - Construction [40 NoS]; Robot Installation Manpower [300 h] |
| S06A-CC-11560 | Block-17 -Robotic Structure - Reverse Station Installation | 2026-12-17 → 2026-12-25 (+8d) | 2026-12-26 → 2027-01-03 (+8d) |  |  | 35.7d → 44.8d |  | resources none → Weightage [1543.59 h]; Robot Structure - Reverse - Construction [40 NoS]; Robot Installation Manpower [300 h] |
| S06A-CC-11500 | Block-17 -Module Installation | 2027-01-06 → 2027-01-05 (-1d) |  |  |  | -17.3d → 0.1d | S06A-CC-11490 FF+12d, S06A-CC-11490 SS+4d, S06A-EN-1630, S06A-EN-2070, S06A-PR-6210 SS → S06A-CC-11490 FF+12d, S06A-CC-11490 SS+4d, S06A-EN-1630, S06A-EN-2070, S06A-PR-6210 SS+2d | resources none → Weightage [56598.1 h]; Module - Construction [17 MWdc]; Module Manpower [8400 h] |
| S06A-CC-11520 | Block-17 -DC Cable Laying | 2027-01-07 → 2027-01-06 (-1d) |  |  |  | -6.3d → 11.1d |  | resources none → Weightage [12348.7 h]; DC Cable - Construction [106 KM]; ACDC Manpower [2356 h] |
| S06A-CC-11510 | Block-17 -Module - RFI Completion | 2027-01-10 → 2027-01-09 (-1d) |  |  |  | -16.3d → 1.1d |  | resources none → Weightage [4116.23 h]; Module Manpower [1200 h] |
| S06A-CC-11580 | Block-17 -Robot Installation | 2027-01-17 → 2027-01-16 (-1d) |  |  |  | -9.3d → 8.1d |  | resources none → Weightage [3087.17 h]; Robots - Construction [40 NoS]; Robot Installation Manpower [600 h] |
| S06A-CC-11530 | Block-17 -Module Interconnection & MC4 Termination | 2027-01-21 → 2027-01-20 (-1d) |  |  |  | -13.3d → 4.1d |  | resources none → Weightage [7203.4 h]; MC4 Connector - Construction [3888 NoS]; ACDC Manpower [2592 h] |
| S06A-CC-11540 | Block-17 -VOC Testing | 2027-01-27 → 2027-01-25 (-2d) |  |  |  | -13.3d → 4.1d |  | resources none → Weightage [617.43 h]; ACDC Manpower [220 h] |
| S06A-CC-11570 | Block-17 -Robotic Structure - Bridges Installation | 2027-01-27 → 2027-01-25 (-2d) |  |  |  | 3.7d → 21.1d |  | resources none → Weightage [5145.28 h]; Robot Structure - Bridges - Construction [300 NoS]; Robot Installation Manpower [2200 h] |
| 2 | **CONSTRUCTION-PV AREA-AC SIDE** |  | 2027-01-10 → 2027-01-03 (-7d) |  |  |  |  |  |
| S06A-CC-11590 | Block-17 -IDT Foundation Up To Rail |  |  |  |  | 64.7d → 81.8d |  | resources none → Weightage [7717.93 h]; IDT Station - Rail - Construction [1 NoS]; IDT Station - Foundation Bolt & Inserts - Construction [1 NoS]; IDT Station - Rebar - Construction [1 NoS]; IDT Civil Manpower [1470 h] |
| S06A-CC-11600 | Block-17 -HT & LT Station - Slab |  |  |  |  | 76.7d → 93.8d |  | resources none → Weightage [5402.55 h]; IDT Station - Foundation Bolt & Inserts - Construction [1 NoS]; IDT Station - Rebar - Construction [1 NoS]; IDT Civil Manpower [1200 h] |
| S06A-CC-11630 | Block-17 -IDT Foundation - Grade Slab Casting & Dyke Wall |  |  |  |  | 88.7d → 105.8d |  | resources none → Weightage [4630.76 h]; IDT Station - Rebar - Construction [1 NoS]; IDT Civil Manpower [990 h] |
| S06A-CC-11640 | Block-17 -NIFPS Foundation |  |  |  |  | 64.7d → 81.8d |  | resources none → Weightage [1029.06 h]; IDT Station - Rebar - Construction [1 NoS]; IDT Civil Manpower [300 h] |
| S06A-CC-11650 | Block-17 -BOT Foundation |  |  |  |  | 87.7d → 104.8d |  | resources none → Weightage [3858.96 h]; IDT Station - Rebar - Construction [1 NoS]; IDT Civil Manpower [800 h] |
| S06A-CC-11660 | Block-17 -Aux Transformer Foundation |  |  |  |  | 86.7d → 103.8d |  | resources none → Weightage [1029.06 h]; IDT Station - Rebar - Construction [1 NoS]; IDT Civil Manpower [250 h] |
| S06A-CC-11700 | Block-17 -HT LT Station - Staircase |  |  |  |  | 102.7d → 119.8d |  | resources none → Weightage [205.81 h]; IDT Civil Manpower [40 h] |
| S06A-CC-11610 | Block-17 -HT & LT Station - Shed Installation |  |  |  |  | 76.7d → 93.8d |  | resources none → Weightage [1080.51 h]; IDT Shed - Construction [1 NoS]; IDT Civil Manpower [250 h] |
| S06A-CC-11620 | Block-17 -HT & LT Station - Sheeting Installation |  |  |  |  | 76.7d → 93.8d |  | resources none → Weightage [1080.51 h]; IDT Sheeting - Construction [1 NoS]; IDT Civil Manpower [240 h] |
| S06A-CC-11770 | Block-17 -LT Panel Erection | 2026-11-10 → 2026-10-20 (-21d) | 2026-11-15 → 2026-10-25 (-21d) |  |  | 55.7d → 93.8d | S06A-PR-6790, S06A-CC-11620 FS+2d, S06A-EN-1740, S06A-EN-1750, S06A-PR-2430 SS → S06A-PR-6790, S06A-CC-11620 FS+2d, S06A-EN-1740, S06A-EN-1750, S06A-PR-2430 SS+5d | resources none → Weightage [823.25 h]; LT Panel - Construction [16 NoS]; ACDC Manpower [180 h] |
| S06A-CC-11800 | Block-17 -SCADA & SACU Installation | 2026-11-20 → 2026-10-25 (-26d) | 2026-11-25 → 2026-10-30 (-26d) |  |  | 49d → 92.1d |  | resources none → Weightage [205.81 h]; SCADA & SACU - Construction [1 NoS]; ACDC Manpower [50 h] |
| S06A-CC-11710 | Block-17 -Cable Hanger - Structure & Messenger Wire Erection | 2026-10-21 → 2026-11-10 (+20d) | 2026-10-25 → 2026-11-14 (+20d) |  |  | 68.7d → 65.8d |  | resources none → Weightage [1543.59 h]; LT Cable - Hangers - Construction [1 Lot]; LT Cable - Support Structure - Construction [1 Lot]; LT Cable - Clamps - Construction [1 Lot]; LT Cable - Messenger wire - Construction [3.39 KM]; LT Cable - Fasteners - Construction [1 Lot]; ACDC Manpower [199 h] |
| S06A-CC-11810 | Block-17 -ACDB Installation | 2027-01-01 → 2026-11-10 (-52d) | 2027-01-02 → 2026-11-11 (-52d) |  |  | 10.7d → 79.8d |  | resources none → Weightage [205.81 h]; ACDB - Construction [1 NoS]; ACDC Manpower [40 h] |
| S06A-CC-11820 | Block-17 -Aux Transformer - Installation | 2027-01-01 → 2026-11-10 (-52d) | 2027-01-04 → 2026-11-13 (-52d) |  |  | 9.7d → 78.8d |  | resources none → Weightage [411.62 h]; Aux Transformer - Construction [1 NoS]; ACDC Manpower [80 h] |
| S06A-CC-11720 | Block-17 -LT Cable Laying | 2026-10-23 → 2026-11-12 (+20d) | 2026-11-11 → 2026-12-01 (+20d) |  |  | 68.7d → 65.8d |  | resources none → Weightage [11113.8 h]; LT Cable - Construction [9.33 KM]; ACDC Manpower [1555 h] |
| S06A-CC-11790 | Block-17 -Inverter Installation | 2026-11-14 → 2026-11-15 (+1d) | 2026-11-20 → 2026-11-22 (+2d) |  |  | 52.7d → 68.1d |  | resources none → Weightage [1440.68 h]; Invertor - Construction [47 NoS]; ACDC Manpower [280 h] |
| S06A-CC-11750 | Block-17 -Control Cable Laying | 2026-11-20 → 2026-11-16 (-4d) | 2026-11-25 → 2026-11-20 (-5d) |  |  | 49d → 70.8d |  | resources none → Weightage [308.72 h]; Control Cable - Construction [1 KM]; ACDC Manpower [100 h] |
| S06A-CC-11760 | Block-17 -HT Panel Erection | 2026-11-12 → 2026-11-17 (+5d) | 2026-11-12 → 2026-11-18 (+6d) |  |  | 58.7d → 70.1d | S06A-PR-6790, S06A-CC-11620 SS+2d, S06A-EN-1810, S06A-PR-2270 SS → S06A-PR-6790, S06A-CC-11620 SS+2d, S06A-EN-1810, S06A-PR-2270 SS+10d | resources none → Weightage [308.72 h]; HT Panel - Construction [1 NoS]; ACDC Manpower [60 h] |

| ID | Task | Start | Finish | Complete | Total float | Predecessors | Other |
| --- | --- | --- | --- | --- | --- | --- | --- |
| S06A-CC-11730 | Block-17 -HT Cable Laying | 2026-10-23 → 2026-11-22 (+30d) | 2026-10-29 → 2026-11-29 (+31d) |  | 81.7d → 68.1d | S06A-EN-1940, S06A-PR-4510 SS → S06A-EN-1940, S06A-PR-4510 SS+8d | resources none → Weightage [2881.36 h]; HT Cable - Construction [2.62 KM]; ACDC Manpower [397 h] |
| S06A-CC-11740 | Block-17 -FO Cable Laying | 2026-10-28 → 2026-11-22 (+25d) | 2026-11-04 → 2026-11-29 (+25d) |  | 76d → 68.1d |  | resources none → Weightage [3601.7 h]; FO Cable - Construction [4 KM]; ACDC Manpower [700 h] |
| S06A-CC-11860 | Block-17 -LT Cable Terminations - Inverter to LT Panel | 2027-01-01 → 2026-11-27 (-35d) | 2027-01-07 → 2026-12-03 (-35d) |  | 13.7d → 65.8d |  | resources none → Weightage [720.34 h]; ACDC Manpower [210 h] |
| S06A-CC-11830 | Block-17 -NIFPS - Installation | 2026-11-25 → 2026-12-13 (+18d) | 2026-12-04 → 2026-12-22 (+18d) |  | 32.7d → 31.8d |  | resources none → Weightage [1080.51 h]; NIFPS - Construction [1 NoS]; ACDC Manpower [200 h] |
| S06A-CC-11780 | Block-17 -IDT Erection | 2026-11-25 → 2026-12-22 (+27d) | 2026-11-29 → 2026-12-27 (+28d) |  | 37.7d → 27.1d | S06A-PR-6790, S06A-CC-11590, S06A-PR-2110 SS → S06A-PR-6790, S06A-CC-11590, S06A-PR-2110 SS+10d | resources none → Weightage [1543.59 h]; IDT - Construction [1 NoS]; ACDC Manpower [350 h] |
| S06A-CC-11690 | Block-17 -IDT Area - Gravel Filling | 2027-01-03 → 2026-12-27 (-7d) | 2027-01-07 → 2027-01-01 (-6d) |  | 10.7d → 34.1d |  | resources none → Weightage [308.72 h]; IDT Civil Manpower [100 h] |
| S06A-CC-11840 | Block-17 -HT Cable Terminations - IDT Side | 2027-01-01 → 2026-12-27 (-5d) | 2027-01-02 → 2026-12-29 (-4d) |  | 18.7d → 40.1d |  | resources none → Weightage [205.81 h]; ACDC Manpower [70 h] |
| S06A-CC-11850 | Block-17 -LT Cable Terminations - LT Panel to IDT | 2027-01-01 → 2026-12-27 (-5d) | 2027-01-07 → 2027-01-03 (-4d) |  | 13.7d → 35.1d |  | resources none → Weightage [1440.68 h]; ACDC Manpower [300 h] |
| S06A-CC-11670 | Block-17 -IDT Area - Fencing | 2027-01-05 → 2026-12-28 (-8d) | 2027-01-09 → 2027-01-02 (-7d) |  | 9.7d → 34.1d |  | resources none → Weightage [617.43 h]; IDT - Fencing - Construction - Construction [1 NoS]; IDT Civil Manpower [150 h] |
| S06A-CC-11680 | Block-17 -IDT Area - Gate Installation | 2027-01-10 → 2027-01-02 (-8d) | 2027-01-10 → 2027-01-03 (-7d) |  | 9.7d → 34.1d |  | resources none → Weightage [308.72 h]; IDT - Gate - Construction [1 NoS]; IDT Civil Manpower [50 h] |
| 3 | **CONSTRUCTION-PV AREA-PRE COMMISSIONING** | 2026-11-13 → 2026-10-26 (-18d) | 2027-01-16 → 2027-01-12 (-4d) |  |  |  |  |
| S06A-CC-11900 | Block-17 -LT Panel Testing | 2026-11-16 → 2026-10-26 (-21d) | 2026-11-16 → 2026-10-26 (-21d) |  | 55.7d → 93.8d |  | resources none → Weightage [205.81 h]; LT Panel Testing [40 h] |
| S06A-CC-11890 | Block-17 -HT Panel Testing | 2026-11-13 → 2026-11-18 (+5d) | 2026-11-13 → 2026-11-19 (+6d) |  | 58.7d → 70.1d |  | resources none → Weightage [102.91 h]; HT Panel Testing [20 h] |
| S06A-CC-11870 | Block-17 -IDT Filtration | 2026-12-05 → 2026-12-27 (+22d) | 2026-12-07 → 2026-12-30 (+23d) |  | 32.7d → 27.1d |  | resources none → Weightage [154.36 h]; IDT Filtration & Testing [30 h] |
| S06A-CC-11880 | Block-17 -IDT Testing | 2026-12-08 → 2026-12-30 (+22d) | 2026-12-09 → 2027-01-01 (+23d) |  | 32.7d → 27.1d |  | resources none → Weightage [102.91 h]; IDT Filtration & Testing [20 h] |
| S06A-CC-11910 | Block-17 -Inspection Offer To Asset Commissioning Team | 2027-01-08 → 2027-01-03 (-5d) | 2027-01-08 → 2027-01-04 (-4d) |  | 13.7d → 35.1d |  | resources none → Weightage [51.45 h] |
| S06A-CC-11920 | Block-17 -Punch Point Identification By Asset Commissioning Team | 2027-01-09 → 2027-01-04 (-5d) | 2027-01-11 → 2027-01-07 (-4d) |  | 13.7d → 35.1d |  | resources none → Weightage [308.72 h] |
| S06A-CC-11930 | Block-17 -Punch Point Rectification And Pre Charging Sign Off | 2027-01-12 → 2027-01-07 (-5d) | 2027-01-16 → 2027-01-12 (-4d) |  | 13.7d → 35.1d |  | resources none → Weightage [463.08 h] |
| 4 | **CONSTRUCTION-COMMISSIONING** | 2027-01-07 → 2027-01-05 (-2d) |  |  |  |  |  |
| S06A-CC-11940 | Block-17 -CEA Application | 2027-01-07 → 2027-01-05 (-2d) | 2027-01-08 → 2027-01-06 (-2d) |  | 4d → 23.1d |  | resources none → Weightage [51.45 h] |
| S06A-CC-11950 | Block-17 -CEA Inspection | 2027-01-16 → 2027-01-14 (-2d) | 2027-01-17 → 2027-01-15 (-2d) |  | 4d → 23.1d |  | resources none → Weightage [51.45 h] |
| S06A-CC-11960 | Block-17 -CEA Compliance & Approval | 2027-01-18 → 2027-01-16 (-2d) | 2027-01-23 → 2027-01-21 (-2d) |  | 4d → 23.1d |  | resources none → Weightage [411.62 h] |
| S06A-CC-11970 | Block-17 -First Time Charging - Application | 2027-02-15 → 2027-02-14 (-1d) |  |  | -17.3d → 0.1d |  | resources none → Weightage [51.45 h] |
| S06A-CC-11980 | Block-17 -First Time Charging - Approval | 2027-02-16 → 2027-02-15 (-1d) |  |  | -17.3d → 0.1d |  | resources none → Weightage [308.72 h] |
| S06A-CC-11990 | Block-17 -First Time Charging | 2027-02-18 → 2027-02-17 (-1d) |  |  | -17.3d → 0.1d |  | resources none → Weightage [102.91 h] |
| S06A-CC-12000 | Block-17 -Tracker Commissioning - SCADA | 2027-02-18 → 2027-02-17 (-1d) |  |  | -16.3d → 1.1d |  | resources none → Weightage [1080.51 h] |
| S06A-CC-12010 | Block-17 -Robot Commissioning - SCADA | 2027-02-18 → 2027-02-17 (-1d) |  |  | -16.3d → 1.1d |  | resources none → Weightage [6174.34 h] |
| S06A-CC-12020 | Block-17 -Trial Operation | 2027-02-21 → 2027-02-20 (-1d) |  |  | -17.3d → 0.1d |  | resources none → Weightage [102.91 h] |
| S06A-CC-12030 | Block-17 -Trial Run Certificate | 2027-02-24 → 2027-02-23 (-1d) |  |  | -17.3d → 0.1d |  | resources none → Weightage [51.45 h] |
| S06A-CC-12040 | Block-17 -COD | 2027-02-27 → 2027-02-26 (-1d) |  |  | -17.3d → 0.1d |  | resources none → Weightage [360.17 h] |
| 1 | **CONSTRUCTION-PV AREA-DC SIDE** | 2026-10-01 → 2026-08-27 (-35d) |  |  |  |  |  |
| S06A-CC-12050 | Block-18 -Piling - MMS (Marking, Auguring & Concreting) | 2026-10-01 → 2026-08-27 A (-35d) | 2026-10-31 → 2026-10-30 (-1d) | 0% → 5% | 50.7d → 68.8d |  | resources none → Weightage [17288.2 h]; Piling Stub - MMS - Construction [5832 NoS]; Piling Manpower [2651 h] |
| S06A-CC-12060 | Block-18 -Pile Capping |  |  |  | 62.7d → 79.8d |  | resources none → Weightage [8644.08 h]; Piling Manpower [1268 h] |
| S06A-CC-12110 | Block-18 -MMS Erection - Torque Tube/Raftar |  |  |  | 50.7d → 67.8d |  | resources none → Weightage [59067.9 h]; MMS - Rafter - Construction [486 TBL]; FT Manpower [4860 h] |
| S06A-CC-12070 | Block-18 -Piling - LT Cable Hanger System | 2026-10-12 → 2026-10-21 (+9d) | 2026-10-31 → 2026-11-09 (+9d) |  | 58.7d → 66.8d |  | resources none → Weightage [2058.11 h]; Piling Stub - LT Cable Hanger - Construction [557 NoS]; Piling Manpower [506 h] |
| S06A-CC-12100 | Block-18 -Array Earthing | 2026-10-09 → 2026-10-21 (+12d) | 2026-11-02 → 2026-11-14 (+12d) |  | 62.7d → 67.8d |  | resources none → Earthing - Construction [5.15 KM]; Weightage [4939.47 h]; ACDC Manpower [108 h] |
| S06A-CC-12120 | Block-18 -MMS Erection - Transmission Shaft/Bracing |  |  |  | 54.7d → 71.8d |  | resources none → Weightage [14406.8 h]; MMS - Bracing - Construction [486 TBL]; FT Manpower [2430 h] |
| S06A-CC-12130 | Block-18 -MMS Erection - Purlin |  |  |  | 50.7d → 67.8d |  | resources none → Weightage [14406.8 h]; MMS - FT Purlin - Construction [486 TBL]; FT Manpower [2430 h] |
| S06A-CC-12080 | Block-18 -Piling - Inverters | 2026-10-16 → 2026-10-26 (+10d) | 2026-10-31 → 2026-11-10 (+10d) |  | 63.7d → 70.8d |  | resources none → Weightage [2469.74 h]; Piling Stub - Invertor - Construction [96 NoS]; Piling Manpower [480 h] |
| S06A-CC-12140 | Block-18 -MMS - RFI Completion |  |  |  | 50.7d → 67.8d |  | resources none → Weightage [7203.4 h]; FT Manpower [1400 h] |
| S06A-CC-12090 | Block-18 -Piling - Robotic Docking System | 2026-11-17 → 2026-12-15 (+28d) | 2026-11-26 → 2026-12-24 (+28d) |  | 37.7d → 26.8d |  | resources none → Piling Stub - Robot Docking - Construction [25 NoS]; Weightage [1543.59 h]; Piling Manpower [300 h] |
| S06A-CC-12200 | Block-18 -Robotic Structure - Docking Station Installation | 2026-12-17 → 2026-12-25 (+8d) | 2026-12-26 → 2027-01-03 (+8d) |  | 17.7d → 26.8d |  | resources none → Weightage [1543.59 h]; Robot Structure - Docking - Construction [40 NoS]; Robot Installation Manpower [300 h] |
| S06A-CC-12210 | Block-18 -Robotic Structure - Reverse Station Installation | 2026-12-17 → 2026-12-25 (+8d) | 2026-12-26 → 2027-01-03 (+8d) |  | 35.7d → 44.8d |  | resources none → Weightage [1543.59 h]; Robot Structure - Reverse - Construction [40 NoS]; Robot Installation Manpower [300 h] |
| S06A-CC-12150 | Block-18 -Module Installation | 2027-01-06 → 2027-01-05 (-1d) |  |  | -17.3d → 0.1d | S06A-CC-12140 FF+12d, S06A-CC-12140 SS+4d, S06A-EN-1630, S06A-EN-2070, S06A-PR-6210 SS → S06A-CC-12140 FF+12d, S06A-CC-12140 SS+4d, S06A-EN-1630, S06A-EN-2070, S06A-PR-6210 SS+2d | resources none → Weightage [56598.1 h]; Module - Construction [17 MWdc]; Module Manpower [8400 h] |
| S06A-CC-12170 | Block-18 -DC Cable Laying | 2027-01-07 → 2027-01-06 (-1d) |  |  | -6.3d → 11.1d |  | resources none → Weightage [12348.7 h]; DC Cable - Construction [99 KM]; ACDC Manpower [2200 h] |
| S06A-CC-12160 | Block-18 -Module - RFI Completion | 2027-01-10 → 2027-01-09 (-1d) |  |  | -16.3d → 1.1d |  | resources none → Weightage [4116.23 h]; Module Manpower [1200 h] |
| S06A-CC-12230 | Block-18 -Robot Installation | 2027-01-17 → 2027-01-16 (-1d) |  |  | -9.3d → 8.1d |  | resources none → Weightage [3087.17 h]; Robots - Construction [40 NoS]; Robot Installation Manpower [600 h] |
| S06A-CC-12180 | Block-18 -Module Interconnection & MC4 Termination | 2027-01-21 → 2027-01-20 (-1d) |  |  | -13.3d → 4.1d |  | resources none → Weightage [7203.4 h]; MC4 Connector - Construction [3888 NoS]; ACDC Manpower [2592 h] |
| S06A-CC-12190 | Block-18 -VOC Testing | 2027-01-27 → 2027-01-25 (-2d) |  |  | -13.3d → 4.1d |  | resources none → Weightage [617.43 h]; ACDC Manpower [220 h] |
| S06A-CC-12220 | Block-18 -Robotic Structure - Bridges Installation | 2027-01-27 → 2027-01-25 (-2d) |  |  | 3.7d → 21.1d |  | resources none → Weightage [5145.28 h]; Robot Structure - Bridges - Construction [300 NoS]; Robot Installation Manpower [2200 h] |
| 2 | **CONSTRUCTION-PV AREA-AC SIDE** |  | 2027-01-10 → 2027-01-03 (-7d) |  |  |  |  |
| S06A-CC-12240 | Block-18 -IDT Foundation Up To Rail |  |  |  | 64.7d → 81.8d |  | resources none → Weightage [7717.93 h]; IDT Station - Rail - Construction [1 NoS]; IDT Station - Foundation Bolt & Inserts - Construction [1 NoS]; IDT Station - Rebar - Construction [1 NoS]; IDT Civil Manpower [1470 h] |
| S06A-CC-12250 | Block-18 -HT & LT Station - Slab |  |  |  | 85.7d → 102.8d |  | resources none → Weightage [5402.55 h]; IDT Station - Foundation Bolt & Inserts - Construction [1 NoS]; IDT Station - Rebar - Construction [1 NoS]; IDT Civil Manpower [1200 h] |
| S06A-CC-12280 | Block-18 -IDT Foundation - Grade Slab Casting & Dyke Wall |  |  |  | 98.7d → 115.8d |  | resources none → Weightage [4630.76 h]; IDT Station - Rebar - Construction [1 NoS]; IDT Civil Manpower [990 h] |
| S06A-CC-12260 | Block-18 -HT & LT Station - Shed Installation | 2026-10-01 → 2026-10-05 (+4d) | 2026-10-06 → 2026-10-10 (+4d) |  | 85.7d → 99.1d |  | resources none → Weightage [1080.51 h]; IDT Shed - Construction [1 NoS]; IDT Civil Manpower [250 h] |
| S06A-CC-12290 | Block-18 -NIFPS Foundation |  |  |  | 64.7d → 81.8d |  | resources none → Weightage [1029.06 h]; IDT Station - Rebar - Construction [1 NoS]; IDT Civil Manpower [300 h] |
| S06A-CC-12300 | Block-18 -BOT Foundation |  |  |  | 87.7d → 104.8d |  | resources none → Weightage [3858.96 h]; IDT Station - Rebar - Construction [1 NoS]; IDT Civil Manpower [800 h] |
| S06A-CC-12310 | Block-18 -Aux Transformer Foundation |  |  |  | 86.7d → 103.8d |  | resources none → Weightage [1029.06 h]; IDT Station - Rebar - Construction [1 NoS]; IDT Civil Manpower [250 h] |
| S06A-CC-12350 | Block-18 -HT LT Station - Staircase |  |  |  | 102.7d → 119.8d |  | resources none → Weightage [205.81 h]; IDT Civil Manpower [40 h] |
| S06A-CC-12270 | Block-18 -HT & LT Station - Sheeting Installation | 2026-10-07 → 2026-10-10 (+3d) | 2026-10-08 → 2026-10-12 (+4d) |  | 85.7d → 99.1d |  | resources none → Weightage [1080.51 h]; IDT Sheeting - Construction [1 NoS]; IDT Civil Manpower [240 h] |
| S06A-CC-12420 | Block-18 -LT Panel Erection | 2026-11-10 → 2026-10-19 (-22d) | 2026-11-15 → 2026-10-25 (-21d) |  | 55.7d → 94.1d | S06A-PR-6790, S06A-CC-12270 FS+2d, S06A-EN-1740, S06A-EN-1750, S06A-PR-2430 SS → S06A-PR-6790, S06A-CC-12270 FS+2d, S06A-EN-1740, S06A-EN-1750, S06A-PR-2430 SS+5d | resources none → Weightage [823.25 h]; LT Panel - Construction [16 NoS]; ACDC Manpower [180 h] |
| S06A-CC-12450 | Block-18 -SCADA & SACU Installation | 2026-11-20 → 2026-10-25 (-26d) | 2026-11-25 → 2026-10-30 (-26d) |  | 49d → 92.1d |  | resources none → Weightage [205.81 h]; SCADA & SACU - Construction [1 NoS]; ACDC Manpower [50 h] |
| S06A-CC-12360 | Block-18 -Cable Hanger - Structure & Messenger Wire Erection | 2026-10-31 → 2026-11-10 (+10d) | 2026-11-04 → 2026-11-14 (+10d) |  | 58.7d → 65.8d |  | resources none → Weightage [1543.59 h]; LT Cable - Hangers - Construction [1 Lot]; LT Cable - Support Structure - Construction [1 Lot]; LT Cable - Clamps - Construction [1 Lot]; LT Cable - Messenger wire - Construction [3.4 KM]; LT Cable - Fasteners - Construction [1 Lot]; ACDC Manpower [200 h] |
| S06A-CC-12460 | Block-18 -ACDB Installation | 2027-01-01 → 2026-11-10 (-52d) | 2027-01-02 → 2026-11-11 (-52d) |  | 10.7d → 79.8d |  | resources none → Weightage [205.81 h]; ACDB - Construction [1 NoS]; ACDC Manpower [40 h] |
| S06A-CC-12470 | Block-18 -Aux Transformer - Installation | 2027-01-01 → 2026-11-10 (-52d) | 2027-01-04 → 2026-11-13 (-52d) |  | 9.7d → 78.8d |  | resources none → Weightage [411.62 h]; Aux Transformer - Construction [1 NoS]; ACDC Manpower [80 h] |
| S06A-CC-12370 | Block-18 -LT Cable Laying | 2026-11-02 → 2026-11-12 (+10d) | 2026-11-21 → 2026-12-01 (+10d) |  | 58.7d → 65.8d |  | resources none → Weightage [11113.8 h]; LT Cable - Construction [10.02 KM]; ACDC Manpower [1671 h] |
| S06A-CC-12440 | Block-18 -Inverter Installation | 2026-11-14 → 2026-11-15 (+1d) | 2026-11-20 → 2026-11-22 (+2d) |  | 52.7d → 68.1d |  | resources none → Weightage [1440.68 h]; Invertor - Construction [48 NoS]; ACDC Manpower [280 h] |
| S06A-CC-12400 | Block-18 -Control Cable Laying | 2026-11-20 → 2026-11-16 (-4d) | 2026-11-25 → 2026-11-20 (-5d) |  | 49d → 70.8d |  | resources none → Weightage [308.72 h]; Control Cable - Construction [1 KM]; ACDC Manpower [100 h] |
| S06A-CC-12410 | Block-18 -HT Panel Erection | 2026-11-12 → 2026-11-17 (+5d) | 2026-11-12 → 2026-11-18 (+6d) |  | 58.7d → 70.1d | S06A-PR-6790, S06A-CC-12270 SS+2d, S06A-EN-1810, S06A-PR-2270 SS → S06A-PR-6790, S06A-CC-12270 SS+2d, S06A-EN-1810, S06A-PR-2270 SS+10d | resources none → Weightage [308.72 h]; HT Panel - Construction [1 NoS]; ACDC Manpower [60 h] |
| S06A-CC-12380 | Block-18 -HT Cable Laying | 2026-10-23 → 2026-11-22 (+30d) | 2026-10-29 → 2026-11-29 (+31d) |  | 81.7d → 68.1d | S06A-EN-1940, S06A-PR-4510 SS → S06A-EN-1940, S06A-PR-4510 SS+8d | resources none → Weightage [2881.36 h]; HT Cable - Construction [3.02 KM]; ACDC Manpower [457 h] |

| ID | Task | Start | Finish | Complete | Total float | Predecessors | Other |
| --- | --- | --- | --- | --- | --- | --- | --- |
| S06A-CC-12390 | Block-18 -FO Cable Laying | 2026-10-28 → 2026-11-22 (+25d) | 2026-11-04 → 2026-11-29 (+25d) |  | 76d → 68.1d |  | resources none → Weightage [3601.7 h]; FO Cable - Construction [4 KM]; ACDC Manpower [700 h] |
| S06A-CC-12510 | Block-18 -LT Cable Terminations - Inverter to LT Panel | 2027-01-01 → 2026-11-27 (-35d) | 2027-01-07 → 2026-12-03 (-35d) |  | 13.7d → 65.8d |  | resources none → Weightage [720.34 h]; ACDC Manpower [210 h] |
| S06A-CC-12480 | Block-18 -NIFPS - Installation | 2026-11-25 → 2026-12-13 (+18d) | 2026-12-04 → 2026-12-22 (+18d) |  | 32.7d → 31.8d |  | resources none → Weightage [1080.51 h]; NIFPS - Construction [1 NoS]; ACDC Manpower [200 h] |
| S06A-CC-12430 | Block-18 -IDT Erection | 2026-11-25 → 2026-12-22 (+27d) | 2026-11-29 → 2026-12-27 (+28d) |  | 37.7d → 27.1d | S06A-PR-6790, S06A-CC-12240, S06A-PR-2110 SS → S06A-PR-6790, S06A-CC-12240, S06A-PR-2110 SS+10d | resources none → Weightage [1543.59 h]; IDT - Construction [1 NoS]; ACDC Manpower [350 h] |
| S06A-CC-12340 | Block-18 -IDT Area - Gravel Filling | 2027-01-03 → 2026-12-27 (-7d) | 2027-01-07 → 2027-01-01 (-6d) |  | 10.7d → 34.1d |  | resources none → Weightage [308.72 h]; IDT Civil Manpower [100 h] |
| S06A-CC-12490 | Block-18 -HT Cable Terminations - IDT Side | 2027-01-01 → 2026-12-27 (-5d) | 2027-01-02 → 2026-12-29 (-4d) |  | 18.7d → 40.1d |  | resources none → Weightage [205.81 h]; ACDC Manpower [70 h] |
| S06A-CC-12500 | Block-18 -LT Cable Terminations - LT Panel to IDT | 2027-01-01 → 2026-12-27 (-5d) | 2027-01-07 → 2027-01-03 (-4d) |  | 13.7d → 35.1d |  | resources none → Weightage [1440.68 h]; ACDC Manpower [300 h] |
| S06A-CC-12320 | Block-18 -IDT Area - Fencing | 2027-01-05 → 2026-12-28 (-8d) | 2027-01-09 → 2027-01-02 (-7d) |  | 9.7d → 34.1d |  | resources none → Weightage [617.43 h]; IDT - Fencing - Construction - Construction [1 NoS]; IDT Civil Manpower [150 h] |
| S06A-CC-12330 | Block-18 -IDT Area - Gate Installation | 2027-01-10 → 2027-01-02 (-8d) | 2027-01-10 → 2027-01-03 (-7d) |  | 9.7d → 34.1d |  | resources none → Weightage [308.72 h]; IDT - Gate - Construction [1 NoS]; IDT Civil Manpower [50 h] |
| 3 | **CONSTRUCTION-PV AREA-PRE COMMISSIONING** | 2026-11-13 → 2026-10-25 (-19d) | 2027-01-16 → 2027-01-12 (-4d) |  |  |  |  |
| S06A-CC-12550 | Block-18 -LT Panel Testing | 2026-11-16 → 2026-10-25 (-22d) | 2026-11-16 → 2026-10-26 (-21d) |  | 55.7d → 94.1d |  | resources none → Weightage [205.81 h]; LT Panel Testing [40 h] |
| S06A-CC-12540 | Block-18 -HT Panel Testing | 2026-11-13 → 2026-11-18 (+5d) | 2026-11-13 → 2026-11-19 (+6d) |  | 58.7d → 70.1d |  | resources none → Weightage [102.91 h]; HT Panel Testing [20 h] |
| S06A-CC-12520 | Block-18 -IDT Filtration | 2026-12-05 → 2026-12-27 (+22d) | 2026-12-07 → 2026-12-30 (+23d) |  | 32.7d → 27.1d |  | resources none → Weightage [154.36 h]; IDT Filtration & Testing [30 h] |
| S06A-CC-12530 | Block-18 -IDT Testing | 2026-12-08 → 2026-12-30 (+22d) | 2026-12-09 → 2027-01-01 (+23d) |  | 32.7d → 27.1d |  | resources none → Weightage [102.91 h]; IDT Filtration & Testing [20 h] |
| S06A-CC-12560 | Block-18 -Inspection Offer To Asset Commissioning Team | 2027-01-08 → 2027-01-03 (-5d) | 2027-01-08 → 2027-01-04 (-4d) |  | 13.7d → 35.1d |  | resources none → Weightage [51.45 h] |
| S06A-CC-12570 | Block-18 -Punch Point Identification By Asset Commissioning Team | 2027-01-09 → 2027-01-04 (-5d) | 2027-01-11 → 2027-01-07 (-4d) |  | 13.7d → 35.1d |  | resources none → Weightage [308.72 h] |
| S06A-CC-12580 | Block-18 -Punch Point Rectification And Pre Charging Sign Off | 2027-01-12 → 2027-01-07 (-5d) | 2027-01-16 → 2027-01-12 (-4d) |  | 13.7d → 35.1d |  | resources none → Weightage [463.08 h] |
| 4 | **CONSTRUCTION-COMMISSIONING** | 2027-01-07 → 2027-01-05 (-2d) |  |  |  |  |  |
| S06A-CC-12590 | Block-18 -CEA Application | 2027-01-07 → 2027-01-05 (-2d) | 2027-01-08 → 2027-01-06 (-2d) |  | 4d → 23.1d |  | resources none → Weightage [51.45 h] |
| S06A-CC-12600 | Block-18 -CEA Inspection | 2027-01-16 → 2027-01-14 (-2d) | 2027-01-17 → 2027-01-15 (-2d) |  | 4d → 23.1d |  | resources none → Weightage [51.45 h] |
| S06A-CC-12610 | Block-18 -CEA Compliance & Approval | 2027-01-18 → 2027-01-16 (-2d) | 2027-01-23 → 2027-01-21 (-2d) |  | 4d → 23.1d |  | resources none → Weightage [411.62 h] |
| S06A-CC-12620 | Block-18 -First Time Charging - Application | 2027-02-15 → 2027-02-14 (-1d) |  |  | -17.3d → 0.1d |  | resources none → Weightage [51.45 h] |
| S06A-CC-12630 | Block-18 -First Time Charging - Approval | 2027-02-16 → 2027-02-15 (-1d) |  |  | -17.3d → 0.1d |  | resources none → Weightage [308.72 h] |
| S06A-CC-12640 | Block-18 -First Time Charging | 2027-02-18 → 2027-02-17 (-1d) |  |  | -17.3d → 0.1d |  | resources none → Weightage [102.91 h] |
| S06A-CC-12650 | Block-18 -Tracker Commissioning - SCADA | 2027-02-18 → 2027-02-17 (-1d) |  |  | -16.3d → 1.1d |  | resources none → Weightage [1080.51 h] |
| S06A-CC-12660 | Block-18 -Robot Commissioning - SCADA | 2027-02-18 → 2027-02-17 (-1d) |  |  | -16.3d → 1.1d |  | resources none → Weightage [6174.34 h] |
| S06A-CC-12670 | Block-18 -Trial Operation | 2027-02-21 → 2027-02-20 (-1d) |  |  | -17.3d → 0.1d |  | resources none → Weightage [102.91 h] |
| S06A-CC-12680 | Block-18 -Trial Run Certificate | 2027-02-24 → 2027-02-23 (-1d) |  |  | -17.3d → 0.1d |  | resources none → Weightage [51.45 h] |
| S06A-CC-12690 | Block-18 -COD | 2027-02-27 → 2027-02-26 (-1d) |  |  | -17.3d → 0.1d |  | resources none → Weightage [360.17 h] |
| S06A-CC-12700 | Block-19 -Piling - MMS (Marking, Auguring & Concreting) |  | 2026-10-28 → 2026-10-14 (-14d) | 11% → 55% | 52.7d → 69.8d |  | resources none → Weightage [17288.2 h]; Piling Stub - MMS - Construction [5832 NoS]; Piling Manpower [2651 h] |
| S06A-CC-12710 | Block-19 -Pile Capping | 2026-10-08 → 2026-08-22 A (-47d) | 2026-11-06 → 2026-10-20 (-17d) | 0% → 47% | 62.7d → 96.8d |  | resources none → Weightage [8644.08 h]; Piling Manpower [1268 h] |
| S06A-CC-12760 | Block-19 -MMS Erection - Torque Tube/Raftar | 2026-10-16 → 2026-10-18 (+2d) | 2026-11-12 → 2026-11-14 (+2d) |  | 52.7d → 67.8d |  | resources none → Weightage [59067.9 h]; MMS - Rafter - Construction [486 TBL]; FT Manpower [4860 h] |
| S06A-CC-12720 | Block-19 -Piling - LT Cable Hanger System | 2026-10-09 → 2026-10-21 (+12d) | 2026-10-28 → 2026-11-09 (+12d) |  | 61.7d → 66.8d |  | resources none → Weightage [2058.11 h]; Piling Stub - LT Cable Hanger - Construction [561 NoS]; Piling Manpower [510 h] |
| S06A-CC-12750 | Block-19 -Array Earthing | 2026-10-09 → 2026-10-21 (+12d) | 2026-11-02 → 2026-11-14 (+12d) |  | 62.7d → 67.8d |  | resources none → Earthing - Construction [5.07 KM]; Weightage [4939.47 h]; ACDC Manpower [108 h] |
| S06A-CC-12770 | Block-19 -MMS Erection - Transmission Shaft/Bracing | 2026-10-20 → 2026-10-22 (+2d) | 2026-11-16 → 2026-11-18 (+2d) |  | 56.7d → 71.8d |  | resources none → Weightage [14406.8 h]; MMS - Bracing - Construction [486 TBL]; FT Manpower [2430 h] |
| S06A-CC-12780 | Block-19 -MMS Erection - Purlin | 2026-10-20 → 2026-10-22 (+2d) | 2026-11-16 → 2026-11-18 (+2d) |  | 52.7d → 67.8d |  | resources none → Weightage [14406.8 h]; MMS - FT Purlin - Construction [486 TBL]; FT Manpower [2430 h] |
| S06A-CC-12730 | Block-19 -Piling - Inverters | 2026-10-13 → 2026-10-26 (+13d) | 2026-10-28 → 2026-11-10 (+13d) |  | 66.7d → 70.8d |  | resources none → Weightage [2469.74 h]; Piling Stub - Invertor - Construction [96 NoS]; Piling Manpower [480 h] |
| S06A-CC-12790 | Block-19 -MMS - RFI Completion | 2026-10-24 → 2026-10-26 (+2d) | 2026-11-20 → 2026-11-22 (+2d) |  | 52.7d → 67.8d |  | resources none → Weightage [7203.4 h]; FT Manpower [1400 h] |
| S06A-CC-12740 | Block-19 -Piling - Robotic Docking System | 2026-11-17 → 2026-12-15 (+28d) | 2026-11-26 → 2026-12-24 (+28d) |  | 37.7d → 26.8d |  | resources none → Piling Stub - Robot Docking - Construction [25 NoS]; Weightage [1543.59 h]; Piling Manpower [300 h] |
| S06A-CC-12850 | Block-19 -Robotic Structure - Docking Station Installation | 2026-12-17 → 2026-12-25 (+8d) | 2026-12-26 → 2027-01-03 (+8d) |  | 17.7d → 26.8d |  | resources none → Weightage [1543.59 h]; Robot Structure - Docking - Construction [40 NoS]; Robot Installation Manpower [300 h] |
| S06A-CC-12860 | Block-19 -Robotic Structure - Reverse Station Installation | 2026-12-17 → 2026-12-25 (+8d) | 2026-12-26 → 2027-01-03 (+8d) |  | 35.7d → 44.8d |  | resources none → Weightage [1543.59 h]; Robot Structure - Reverse - Construction [40 NoS]; Robot Installation Manpower [300 h] |
| S06A-CC-12800 | Block-19 -Module Installation | 2027-01-06 → 2027-01-05 (-1d) |  |  | -17.3d → 0.1d | S06A-CC-12790 FF+12d, S06A-CC-12790 SS+4d, S06A-EN-1630, S06A-EN-2070, S06A-PR-6210 SS → S06A-CC-12790 FF+12d, S06A-CC-12790 SS+4d, S06A-EN-1630, S06A-EN-2070, S06A-PR-6210 SS+2d | resources none → Weightage [56598.1 h]; Module - Construction [17 MWdc]; Module Manpower [8400 h] |
| S06A-CC-12820 | Block-19 -DC Cable Laying | 2027-01-07 → 2027-01-06 (-1d) |  |  | -6.3d → 11.1d |  | resources none → Weightage [12348.7 h]; DC Cable - Construction [99 KM]; ACDC Manpower [2200 h] |
| S06A-CC-12810 | Block-19 -Module - RFI Completion | 2027-01-10 → 2027-01-09 (-1d) |  |  | -16.3d → 1.1d |  | resources none → Weightage [4116.23 h]; Module Manpower [1200 h] |
| S06A-CC-12880 | Block-19 -Robot Installation | 2027-01-17 → 2027-01-16 (-1d) |  |  | -9.3d → 8.1d |  | resources none → Weightage [3087.17 h]; Robots - Construction [40 NoS]; Robot Installation Manpower [600 h] |
| S06A-CC-12830 | Block-19 -Module Interconnection & MC4 Termination | 2027-01-21 → 2027-01-20 (-1d) |  |  | -13.3d → 4.1d |  | resources none → Weightage [7203.4 h]; MC4 Connector - Construction [3888 NoS]; ACDC Manpower [2592 h] |
| S06A-CC-12840 | Block-19 -VOC Testing | 2027-01-27 → 2027-01-25 (-2d) |  |  | -13.3d → 4.1d |  | resources none → Weightage [617.43 h]; ACDC Manpower [220 h] |
| S06A-CC-12870 | Block-19 -Robotic Structure - Bridges Installation | 2027-01-27 → 2027-01-25 (-2d) |  |  | 3.7d → 21.1d |  | resources none → Weightage [5145.28 h]; Robot Structure - Bridges - Construction [300 NoS]; Robot Installation Manpower [2200 h] |
| 2 | **CONSTRUCTION-PV AREA-AC SIDE** |  | 2027-01-10 → 2027-01-03 (-7d) |  |  |  |  |
| S06A-CC-12890 | Block-19 -IDT Foundation Up To Rail |  |  |  | 64.7d → 81.8d |  | resources none → Weightage [7717.93 h]; IDT Station - Rail - Construction [1 NoS]; IDT Station - Foundation Bolt & Inserts - Construction [1 NoS]; IDT Station - Rebar - Construction [1 NoS]; IDT Civil Manpower [1470 h] |
| S06A-CC-12900 | Block-19 -HT & LT Station - Slab |  |  |  | 85.7d → 102.8d |  | resources none → Weightage [5402.55 h]; IDT Station - Foundation Bolt & Inserts - Construction [1 NoS]; IDT Station - Rebar - Construction [1 NoS]; IDT Civil Manpower [1200 h] |
| S06A-CC-12930 | Block-19 -IDT Foundation - Grade Slab Casting & Dyke Wall |  |  |  | 101.7d → 118.8d |  | resources none → Weightage [4630.76 h]; IDT Station - Rebar - Construction [1 NoS]; IDT Civil Manpower [990 h] |
| S06A-CC-12910 | Block-19 -HT & LT Station - Shed Installation | 2026-10-01 → 2026-10-05 (+4d) | 2026-10-06 → 2026-10-10 (+4d) |  | 85.7d → 99.1d |  | resources none → Weightage [1080.51 h]; IDT Shed - Construction [1 NoS]; IDT Civil Manpower [250 h] |
| S06A-CC-12940 | Block-19 -NIFPS Foundation |  |  |  | 64.7d → 81.8d |  | resources none → Weightage [1029.06 h]; IDT Station - Rebar - Construction [1 NoS]; IDT Civil Manpower [300 h] |
| S06A-CC-12950 | Block-19 -BOT Foundation |  |  |  | 87.7d → 104.8d |  | resources none → Weightage [3858.96 h]; IDT Station - Rebar - Construction [1 NoS]; IDT Civil Manpower [800 h] |
| S06A-CC-12960 | Block-19 -Aux Transformer Foundation |  |  |  | 86.7d → 103.8d |  | resources none → Weightage [1029.06 h]; IDT Station - Rebar - Construction [1 NoS]; IDT Civil Manpower [250 h] |
| S06A-CC-13000 | Block-19 -HT LT Station - Staircase |  |  |  | 101.7d → 118.8d |  | resources none → Weightage [205.81 h]; IDT Civil Manpower [40 h] |
| S06A-CC-12920 | Block-19 -HT & LT Station - Sheeting Installation | 2026-10-07 → 2026-10-10 (+3d) | 2026-10-08 → 2026-10-12 (+4d) |  | 85.7d → 99.1d |  | resources none → Weightage [1080.51 h]; IDT Sheeting - Construction [1 NoS]; IDT Civil Manpower [240 h] |
| S06A-CC-13070 | Block-19 -LT Panel Erection | 2026-11-10 → 2026-10-19 (-22d) | 2026-11-15 → 2026-10-25 (-21d) |  | 55.7d → 94.1d | S06A-PR-6790, S06A-CC-12920 FS+2d, S06A-EN-1740, S06A-EN-1750, S06A-PR-2430 SS → S06A-PR-6790, S06A-CC-12920 FS+2d, S06A-EN-1740, S06A-EN-1750, S06A-PR-2430 SS+5d | resources none → Weightage [823.25 h]; LT Panel - Construction [16 NoS]; ACDC Manpower [180 h] |
| S06A-CC-13100 | Block-19 -SCADA & SACU Installation | 2026-11-20 → 2026-10-25 (-26d) | 2026-11-25 → 2026-10-30 (-26d) |  | 49d → 92.1d |  | resources none → Weightage [205.81 h]; SCADA & SACU - Construction [1 NoS]; ACDC Manpower [50 h] |
| S06A-CC-13010 | Block-19 -Cable Hanger - Structure & Messenger Wire Erection | 2026-10-28 → 2026-11-10 (+13d) | 2026-11-01 → 2026-11-14 (+13d) |  | 61.7d → 65.8d |  | resources none → Weightage [1543.59 h]; LT Cable - Hangers - Construction [1 Lot]; LT Cable - Support Structure - Construction [1 Lot]; LT Cable - Clamps - Construction [1 Lot]; LT Cable - Messenger wire - Construction [3.25 KM]; LT Cable - Fasteners - Construction [1 Lot]; ACDC Manpower [191 h] |
| S06A-CC-13110 | Block-19 -ACDB Installation | 2027-01-01 → 2026-11-10 (-52d) | 2027-01-02 → 2026-11-11 (-52d) |  | 10.7d → 79.8d |  | resources none → Weightage [205.81 h]; ACDB - Construction [1 NoS]; ACDC Manpower [40 h] |
| S06A-CC-13120 | Block-19 -Aux Transformer - Installation | 2027-01-01 → 2026-11-10 (-52d) | 2027-01-04 → 2026-11-13 (-52d) |  | 9.7d → 78.8d |  | resources none → Weightage [411.62 h]; Aux Transformer - Construction [1 NoS]; ACDC Manpower [80 h] |
| S06A-CC-13020 | Block-19 -LT Cable Laying | 2026-10-30 → 2026-11-12 (+13d) | 2026-11-18 → 2026-12-01 (+13d) |  | 61.7d → 65.8d |  | resources none → Weightage [11113.8 h]; LT Cable - Construction [9.69 KM]; ACDC Manpower [2200 h] |
| S06A-CC-13090 | Block-19 -Inverter Installation | 2026-11-14 → 2026-11-15 (+1d) | 2026-11-20 → 2026-11-22 (+2d) |  | 52.7d → 68.1d |  | resources none → Weightage [1440.68 h]; Invertor - Construction [48 NoS]; ACDC Manpower [280 h] |
| S06A-CC-13050 | Block-19 -Control Cable Laying | 2026-11-20 → 2026-11-16 (-4d) | 2026-11-25 → 2026-11-20 (-5d) |  | 49d → 70.8d |  | resources none → Weightage [308.72 h]; Control Cable - Construction [1 KM]; ACDC Manpower [100 h] |
| S06A-CC-13060 | Block-19 -HT Panel Erection | 2026-11-12 → 2026-11-17 (+5d) | 2026-11-12 → 2026-11-18 (+6d) |  | 58.7d → 70.1d | S06A-PR-6790, S06A-CC-12920 SS+2d, S06A-EN-1810, S06A-PR-2270 SS → S06A-PR-6790, S06A-CC-12920 SS+2d, S06A-EN-1810, S06A-PR-2270 SS+10d | resources none → Weightage [308.72 h]; HT Panel - Construction [1 NoS]; ACDC Manpower [60 h] |
| S06A-CC-13030 | Block-19 -HT Cable Laying | 2026-10-23 → 2026-11-22 (+30d) | 2026-10-29 → 2026-11-29 (+31d) |  | 81.7d → 68.1d | S06A-EN-1940, S06A-PR-4510 SS → S06A-EN-1940, S06A-PR-4510 SS+8d | resources none → Weightage [2881.36 h]; HT Cable - Construction [2.59 KM]; ACDC Manpower [392 h] |
| S06A-CC-13040 | Block-19 -FO Cable Laying | 2026-10-28 → 2026-11-22 (+25d) | 2026-11-04 → 2026-11-29 (+25d) |  | 76d → 68.1d |  | resources none → Weightage [3601.7 h]; FO Cable - Construction [4 KM]; ACDC Manpower [700 h] |
| S06A-CC-13160 | Block-19 -LT Cable Terminations - Inverter to LT Panel | 2027-01-01 → 2026-11-27 (-35d) | 2027-01-07 → 2026-12-03 (-35d) |  | 13.7d → 65.8d |  | resources none → Weightage [720.34 h]; ACDC Manpower [210 h] |

| ID | Task | Start | Finish | Total float | Predecessors | Other |
| --- | --- | --- | --- | --- | --- | --- |
| S06A-CC-13130 | Block-19 -NIFPS - Installation | 2026-11-25 → 2026-12-13 (+18d) | 2026-12-04 → 2026-12-22 (+18d) | 32.7d → 31.8d |  | resources none → Weightage [1080.51 h]; NIFPS - Construction [1 NoS]; ACDC Manpower [200 h] |
| S06A-CC-13080 | Block-19 -IDT Erection | 2026-11-25 → 2026-12-22 (+27d) | 2026-11-29 → 2026-12-27 (+28d) | 37.7d → 27.1d | S06A-PR-6790, S06A-CC-12890, S06A-PR-2110 SS → S06A-PR-6790, S06A-CC-12890, S06A-PR-2110 SS+10d | resources none → Weightage [1543.59 h]; IDT - Construction [1 NoS]; ACDC Manpower [350 h] |
| S06A-CC-12990 | Block-19 -IDT Area - Gravel Filling | 2027-01-03 → 2026-12-27 (-7d) | 2027-01-07 → 2027-01-01 (-6d) | 10.7d → 34.1d |  | resources none → Weightage [308.72 h]; IDT Civil Manpower [100 h] |
| S06A-CC-13140 | Block-19 -HT Cable Terminations - IDT Side | 2027-01-01 → 2026-12-27 (-5d) | 2027-01-02 → 2026-12-29 (-4d) | 18.7d → 40.1d |  | resources none → Weightage [205.81 h]; ACDC Manpower [70 h] |
| S06A-CC-13150 | Block-19 -LT Cable Terminations - LT Panel to IDT | 2027-01-01 → 2026-12-27 (-5d) | 2027-01-07 → 2027-01-03 (-4d) | 13.7d → 35.1d |  | resources none → Weightage [1440.68 h]; ACDC Manpower [300 h] |
| S06A-CC-12970 | Block-19 -IDT Area - Fencing | 2027-01-05 → 2026-12-28 (-8d) | 2027-01-09 → 2027-01-02 (-7d) | 9.7d → 34.1d |  | resources none → Weightage [617.43 h]; IDT - Fencing - Construction - Construction [1 NoS]; IDT Civil Manpower [150 h] |
| S06A-CC-12980 | Block-19 -IDT Area - Gate Installation | 2027-01-10 → 2027-01-02 (-8d) | 2027-01-10 → 2027-01-03 (-7d) | 9.7d → 34.1d |  | resources none → Weightage [308.72 h]; IDT - Gate - Construction [1 NoS]; IDT Civil Manpower [50 h] |
| 3 | **CONSTRUCTION-PV AREA-PRE COMMISSIONING** | 2026-11-13 → 2026-10-25 (-19d) | 2027-01-16 → 2027-01-12 (-4d) |  |  |  |
| S06A-CC-13200 | Block-19 -LT Panel Testing | 2026-11-16 → 2026-10-25 (-22d) | 2026-11-16 → 2026-10-26 (-21d) | 55.7d → 94.1d |  | resources none → Weightage [205.81 h]; LT Panel Testing [40 h] |
| S06A-CC-13190 | Block-19 -HT Panel Testing | 2026-11-13 → 2026-11-18 (+5d) | 2026-11-13 → 2026-11-19 (+6d) | 58.7d → 70.1d |  | resources none → Weightage [102.91 h]; HT Panel Testing [20 h] |
| S06A-CC-13170 | Block-19 -IDT Filtration | 2026-12-05 → 2026-12-27 (+22d) | 2026-12-07 → 2026-12-30 (+23d) | 32.7d → 27.1d |  | resources none → Weightage [154.36 h]; IDT Filtration & Testing [30 h] |
| S06A-CC-13180 | Block-19 -IDT Testing | 2026-12-08 → 2026-12-30 (+22d) | 2026-12-09 → 2027-01-01 (+23d) | 32.7d → 27.1d |  | resources none → Weightage [102.91 h]; IDT Filtration & Testing [20 h] |
| S06A-CC-13210 | Block-19 -Inspection Offer To Asset Commissioning Team | 2027-01-08 → 2027-01-03 (-5d) | 2027-01-08 → 2027-01-04 (-4d) | 13.7d → 35.1d |  | resources none → Weightage [51.45 h] |
| S06A-CC-13220 | Block-19 -Punch Point Identification By Asset Commissioning Team | 2027-01-09 → 2027-01-04 (-5d) | 2027-01-11 → 2027-01-07 (-4d) | 13.7d → 35.1d |  | resources none → Weightage [308.72 h] |
| S06A-CC-13230 | Block-19 -Punch Point Rectification And Pre Charging Sign Off | 2027-01-12 → 2027-01-07 (-5d) | 2027-01-16 → 2027-01-12 (-4d) | 13.7d → 35.1d |  | resources none → Weightage [463.08 h] |
| 4 | **CONSTRUCTION-COMMISSIONING** | 2027-01-07 → 2027-01-05 (-2d) |  |  |  |  |
| S06A-CC-13240 | Block-19 -CEA Application | 2027-01-07 → 2027-01-05 (-2d) | 2027-01-08 → 2027-01-06 (-2d) | 4d → 23.1d |  | resources none → Weightage [51.45 h] |
| S06A-CC-13250 | Block-19 -CEA Inspection | 2027-01-16 → 2027-01-14 (-2d) | 2027-01-17 → 2027-01-15 (-2d) | 4d → 23.1d |  | resources none → Weightage [51.45 h] |
| S06A-CC-13260 | Block-19 -CEA Compliance & Approval | 2027-01-18 → 2027-01-16 (-2d) | 2027-01-23 → 2027-01-21 (-2d) | 4d → 23.1d |  | resources none → Weightage [411.62 h] |
| S06A-CC-13270 | Block-19 -First Time Charging - Application | 2027-02-15 → 2027-02-14 (-1d) |  | -17.3d → 0.1d |  | resources none → Weightage [51.45 h] |
| S06A-CC-13280 | Block-19 -First Time Charging - Approval | 2027-02-16 → 2027-02-15 (-1d) |  | -17.3d → 0.1d |  | resources none → Weightage [308.72 h] |
| S06A-CC-13290 | Block-19 -First Time Charging | 2027-02-18 → 2027-02-17 (-1d) |  | -17.3d → 0.1d |  | resources none → Weightage [102.91 h] |
| S06A-CC-13300 | Block-19 -Tracker Commissioning - SCADA | 2027-02-18 → 2027-02-17 (-1d) |  | -16.3d → 1.1d |  | resources none → Weightage [1080.51 h] |
| S06A-CC-13310 | Block-19 -Robot Commissioning - SCADA | 2027-02-18 → 2027-02-17 (-1d) |  | -16.3d → 1.1d |  | resources none → Weightage [6174.34 h] |
| S06A-CC-13320 | Block-19 -Trial Operation | 2027-02-21 → 2027-02-20 (-1d) |  | -17.3d → 0.1d |  | resources none → Weightage [102.91 h] |
| S06A-CC-13330 | Block-19 -Trial Run Certificate | 2027-02-24 → 2027-02-23 (-1d) |  | -17.3d → 0.1d |  | resources none → Weightage [51.45 h] |
| S06A-CC-13340 | Block-19 -COD | 2027-02-27 → 2027-02-26 (-1d) |  | -17.3d → 0.1d |  | resources none → Weightage [360.17 h] |
| 6 | **PR AND PG TEST** | 2027-03-01 → 2027-02-28 (-1d) | 2027-06-24 → 2027-06-23 (-1d) |  |  |  |
| S07-PG-1000 | PR Test - Phase 01 | 2027-03-01 → 2027-02-28 (-1d) | 2027-06-24 → 2027-06-23 (-1d) | -17.3d → 0.1d |  |  |
| S07-PG-1010 | PG Test - Phase 01 | 2027-03-01 → 2027-02-28 (-1d) | 2027-06-24 → 2027-06-23 (-1d) | -17.3d → 0.1d |  |  |
| 7 | **HOTO** | 2027-01-15 → 2027-01-07 (-8d) |  |  |  |  |
| 1 | **PHASE-1 (50MW)** | 2027-01-15 → 2027-01-07 (-8d) |  |  |  |  |
| 1 | **BLOCK-01** | 2027-01-15 → 2027-01-07 (-8d) |  |  |  |  |
| S06A-HT-1000 | Block-01 -Final Inspection Offer To O&M Team | 2027-01-15 → 2027-01-07 (-8d) | 2027-01-18 → 2027-01-10 (-8d) | 79.7d → 104.8d |  | resources none → HOTO Resource [567 h]; Weightage |
| S06A-HT-1010 | Block-01 -Punch Point Identification By O&M Team | 2027-01-19 → 2027-01-11 (-8d) | 2027-01-23 → 2027-01-15 (-8d) | 79.7d → 104.8d |  | resources none → HOTO Resource [10 h]; Weightage |
| S06A-HT-1020 | Block-01 -Punch Point Rectification By Project Team | 2027-01-24 → 2027-01-16 (-8d) | 2027-02-15 → 2027-02-07 (-8d) | 79.7d → 104.8d |  | resources none → HOTO Resource [100 h]; Weightage |
| S06A-HT-1050 | Block-01 -House Keeping & Removal of Scraps | 2027-02-03 → 2027-01-25 (-9d) | 2027-02-21 → 2027-02-13 (-8d) | 79.7d → 104.8d |  | resources none → HOTO Resource [567 h] |
| S06A-HT-1060 | Block-01 -Handing Over of Mandatory Spares | 2027-02-08 → 2027-01-31 (-8d) | 2027-02-21 → 2027-02-13 (-8d) | 79.7d → 104.8d |  | resources none → HOTO Resource [567 h] |
| S06A-HT-1040 | Block-01 -Submission of As-built Drawings,OEM Manuals, Warranty Certificates etc. through DMS | 2027-02-12 → 2027-02-04 (-8d) | 2027-02-22 → 2027-02-14 (-8d) | 97.78d → 130.33d |  | resources none → HOTO Resource [567 h] |
| S06A-HT-1030 | Block-01 -Punch Point Closure Validation By O&M Team | 2027-02-16 → 2027-02-08 (-8d) | 2027-02-21 → 2027-02-13 (-8d) | 79.7d → 104.8d |  | resources none → HOTO Resource [567 h]; Weightage |
| S06A-HT-1070 | Block-01 -HOTO Sign Off | 2027-06-24 → 2027-06-23 (-1d) |  | -17.3d → 0.1d |  | resources none → HOTO Resource [567 h]; Weightage |
| 2 | **BLOCK-02** | 2027-01-15 → 2027-01-07 (-8d) |  |  |  |  |
| S06A-HT-1080 | Block-02 - Final Inspection Offer To O&M Team | 2027-01-15 → 2027-01-07 (-8d) | 2027-01-19 → 2027-01-11 (-8d) | 79d → 104.1d |  | resources none → HOTO Resource [567 h]; Weightage |
| S06A-HT-1090 | Block-02 - Punch Point Identification By O&M Team | 2027-01-19 → 2027-01-11 (-8d) | 2027-01-24 → 2027-01-16 (-8d) | 79d → 104.1d |  | resources none → HOTO Resource [10 h]; Weightage |
| S06A-HT-1100 | Block-02 - Punch Point Rectification By Project Team | 2027-01-24 → 2027-01-16 (-8d) | 2027-02-16 → 2027-02-08 (-8d) | 79d → 104.1d |  | resources none → HOTO Resource [100 h]; Weightage |
| S06A-HT-1130 | Block-02 -House Keeping & Removal of Scraps | 2027-02-03 → 2027-01-25 (-9d) | 2027-02-22 → 2027-02-14 (-8d) | 79d → 104.1d |  | resources none → HOTO Resource [567 h] |
| S06A-HT-1140 | Block-02 -Handing Over of Mandatory Spares | 2027-02-08 → 2027-01-31 (-8d) | 2027-02-22 → 2027-02-14 (-8d) | 79d → 104.1d |  | resources none → HOTO Resource [567 h] |
| S06A-HT-1120 | Block-02 -Submission of As-built Drawings,OEM Manuals, Warranty Certificates etc. through DMS | 2027-02-13 → 2027-02-05 (-8d) | 2027-02-22 → 2027-02-14 (-8d) | 96.78d → 129.33d |  | resources none → HOTO Resource [567 h] |
| S06A-HT-1110 | Block-02 - Punch Point Closure Validation By O&M Team | 2027-02-16 → 2027-02-08 (-8d) | 2027-02-22 → 2027-02-14 (-8d) | 79d → 104.1d |  | resources none → HOTO Resource [567 h]; Weightage |
| S06A-HT-1150 | Block-02 - HOTO Sign Off | 2027-06-24 → 2027-06-23 (-1d) |  | -17.3d → 0.1d |  | resources none → HOTO Resource [567 h]; Weightage |
| 3 | **BLOCK-03** | 2027-01-15 → 2027-01-07 (-8d) |  |  |  |  |
| S06A-HT-1160 | Block-03 - Final Inspection Offer To O&M Team | 2027-01-15 → 2027-01-07 (-8d) | 2027-01-19 → 2027-01-11 (-8d) | 79d → 104.1d |  | resources none → HOTO Resource [567 h]; Weightage |
| S06A-HT-1170 | Block-03 - Punch Point Identification By O&M Team | 2027-01-19 → 2027-01-11 (-8d) | 2027-01-24 → 2027-01-16 (-8d) | 79d → 104.1d |  | resources none → HOTO Resource [10 h]; Weightage |
| S06A-HT-1180 | Block-03 - Punch Point Rectification By Project Team | 2027-01-24 → 2027-01-16 (-8d) | 2027-02-16 → 2027-02-08 (-8d) | 79d → 104.1d |  | resources none → HOTO Resource [100 h]; Weightage |
| S06A-HT-1210 | Block-03 -House Keeping & Removal of Scraps | 2027-02-03 → 2027-01-25 (-9d) | 2027-02-22 → 2027-02-14 (-8d) | 79d → 104.1d |  | resources none → HOTO Resource [567 h] |
| S06A-HT-1220 | Block-03 -Handing Over of Mandatory Spares | 2027-02-08 → 2027-01-31 (-8d) | 2027-02-22 → 2027-02-14 (-8d) | 79d → 104.1d |  | resources none → HOTO Resource [567 h] |
| S06A-HT-1200 | Block-03 -Submission of As-built Drawings,OEM Manuals, Warranty Certificates etc. through DMS | 2027-02-13 → 2027-02-05 (-8d) | 2027-02-22 → 2027-02-14 (-8d) | 96.78d → 129.33d |  | resources none → HOTO Resource [567 h] |
| S06A-HT-1190 | Block-03 - Punch Point Closure Validation By O&M Team | 2027-02-16 → 2027-02-08 (-8d) | 2027-02-22 → 2027-02-14 (-8d) | 79d → 104.1d |  | resources none → HOTO Resource [567 h]; Weightage |
| S06A-HT-1230 | Block-03 - HOTO Sign Off | 2027-06-24 → 2027-06-23 (-1d) |  | -17.3d → 0.1d |  | resources none → HOTO Resource [567 h]; Weightage |
| 4 | **BLOCK-04** | 2027-01-15 → 2027-01-07 (-8d) |  |  |  |  |
| S06A-HT-1240 | Block-04 - Final Inspection Offer To O&M Team | 2027-01-15 → 2027-01-07 (-8d) | 2027-01-19 → 2027-01-11 (-8d) | 79d → 104.1d |  | resources none → HOTO Resource [567 h]; Weightage |
| S06A-HT-1250 | Block-04 - Punch Point Identification By O&M Team | 2027-01-19 → 2027-01-11 (-8d) | 2027-01-24 → 2027-01-16 (-8d) | 79d → 104.1d |  | resources none → HOTO Resource [10 h]; Weightage |
| S06A-HT-1260 | Block-04 - Punch Point Rectification By Project Team | 2027-01-24 → 2027-01-16 (-8d) | 2027-02-16 → 2027-02-08 (-8d) | 79d → 104.1d |  | resources none → HOTO Resource [100 h]; Weightage |
| S06A-HT-1290 | Block-04 -House Keeping & Removal of Scraps | 2027-02-03 → 2027-01-25 (-9d) | 2027-02-22 → 2027-02-14 (-8d) | 79d → 104.1d |  | resources none → HOTO Resource [567 h] |
| S06A-HT-1300 | Block-04 -Handing Over of Mandatory Spares | 2027-02-08 → 2027-01-31 (-8d) | 2027-02-22 → 2027-02-14 (-8d) | 79d → 104.1d |  | resources none → HOTO Resource [567 h] |
| S06A-HT-1280 | Block-04 -Submission of As-built Drawings,OEM Manuals, Warranty Certificates etc. through DMS | 2027-02-13 → 2027-02-05 (-8d) | 2027-02-22 → 2027-02-14 (-8d) | 96.78d → 129.33d |  | resources none → HOTO Resource [567 h] |
| S06A-HT-1270 | Block-04 - Punch Point Closure Validation By O&M Team | 2027-02-16 → 2027-02-08 (-8d) | 2027-02-22 → 2027-02-14 (-8d) | 79d → 104.1d |  | resources none → HOTO Resource [567 h]; Weightage |
| S06A-HT-1310 | Block-04 - HOTO Sign Off | 2027-06-24 → 2027-06-23 (-1d) |  | -17.3d → 0.1d |  | resources none → HOTO Resource [567 h]; Weightage |
| 2 | **PHASE-2 (50MW)** | 2027-01-25 → 2027-01-17 (-8d) |  |  |  |  |
| 1 | **BLOCK-05** | 2027-01-25 → 2027-01-17 (-8d) |  |  |  |  |

| ID | Task | Start | Finish | Total float | Other |
| --- | --- | --- | --- | --- | --- |
| S06A-HT-1320 | Block-05 - Final Inspection Offer To O&M Team | 2027-01-25 → 2027-01-17 (-8d) | 2027-01-29 → 2027-01-20 (-9d) | 72.7d → 97.8d | resources none → HOTO Resource [567 h]; Weightage |
| S06A-HT-1330 | Block-05 - Punch Point Identification By O&M Team | 2027-01-30 → 2027-01-21 (-9d) | 2027-02-02 → 2027-01-24 (-9d) | 72.7d → 97.8d | resources none → HOTO Resource [10 h]; Weightage |
| S06A-HT-1340 | Block-05 - Punch Point Rectification By Project Team | 2027-02-03 → 2027-01-25 (-9d) | 2027-02-24 → 2027-02-16 (-8d) | 72.7d → 97.8d | resources none → HOTO Resource [100 h]; Weightage |
| S06A-HT-1370 | Block-05 -House Keeping & Removal of Scraps | 2027-02-10 → 2027-02-02 (-8d) | 2027-02-28 → 2027-02-20 (-8d) | 72.7d → 97.8d | resources none → HOTO Resource [567 h] |
| S06A-HT-1380 | Block-05 -Handing Over of Mandatory Spares | 2027-02-15 → 2027-02-07 (-8d) | 2027-02-28 → 2027-02-20 (-8d) | 72.7d → 97.8d | resources none → HOTO Resource [567 h] |
| S06A-HT-1360 | Block-05 -Submission of As-built Drawings,OEM Manuals, Warranty Certificates etc. through DMS | 2027-02-19 → 2027-02-11 (-8d) | 2027-03-01 → 2027-02-21 (-8d) | 90.78d → 123.33d | resources none → HOTO Resource [567 h] |
| S06A-HT-1350 | Block-05 - Punch Point Closure Validation By O&M Team | 2027-02-25 → 2027-02-17 (-8d) | 2027-02-28 → 2027-02-20 (-8d) | 72.7d → 97.8d | resources none → HOTO Resource [567 h]; Weightage |
| S06A-HT-1390 | Block-05 - HOTO Sign Off | 2027-06-24 → 2027-06-23 (-1d) |  | -17.3d → 0.1d | resources none → HOTO Resource [567 h]; Weightage |
| 2 | **BLOCK-06** | 2027-01-25 → 2027-01-17 (-8d) |  |  |  |
| S06A-HT-1400 | Block-06 - Final Inspection Offer To O&M Team | 2027-01-25 → 2027-01-17 (-8d) | 2027-01-29 → 2027-01-20 (-9d) | 72.7d → 97.8d | resources none → HOTO Resource [567 h]; Weightage |
| S06A-HT-1410 | Block-06 - Punch Point Identification By O&M Team | 2027-01-30 → 2027-01-21 (-9d) | 2027-02-02 → 2027-01-24 (-9d) | 72.7d → 97.8d | resources none → HOTO Resource [10 h]; Weightage |
| S06A-HT-1420 | Block-06 - Punch Point Rectification By Project Team | 2027-02-03 → 2027-01-25 (-9d) | 2027-02-24 → 2027-02-16 (-8d) | 72.7d → 97.8d | resources none → HOTO Resource [100 h]; Weightage |
| S06A-HT-1450 | Block-06 -House Keeping & Removal of Scraps | 2027-02-10 → 2027-02-02 (-8d) | 2027-02-28 → 2027-02-20 (-8d) | 72.7d → 97.8d | resources none → HOTO Resource [567 h] |
| S06A-HT-1460 | Block-06 -Handing Over of Mandatory Spares | 2027-02-15 → 2027-02-07 (-8d) | 2027-02-28 → 2027-02-20 (-8d) | 72.7d → 97.8d | resources none → HOTO Resource [567 h] |
| S06A-HT-1440 | Block-06 -Submission of As-built Drawings,OEM Manuals, Warranty Certificates etc. through DMS | 2027-02-19 → 2027-02-11 (-8d) | 2027-03-01 → 2027-02-21 (-8d) | 90.78d → 123.33d | resources none → HOTO Resource [567 h] |
| S06A-HT-1430 | Block-06 - Punch Point Closure Validation By O&M Team | 2027-02-25 → 2027-02-17 (-8d) | 2027-02-28 → 2027-02-20 (-8d) | 72.7d → 97.8d | resources none → HOTO Resource [567 h]; Weightage |
| S06A-HT-1470 | Block-06 - HOTO Sign Off | 2027-06-24 → 2027-06-23 (-1d) |  | -17.3d → 0.1d | resources none → HOTO Resource [567 h]; Weightage |
| 3 | **BLOCK-07** | 2027-01-25 → 2027-01-17 (-8d) |  |  |  |
| S06A-HT-1480 | Block-07 - Final Inspection Offer To O&M Team | 2027-01-25 → 2027-01-17 (-8d) | 2027-01-29 → 2027-01-20 (-9d) | 72.7d → 97.8d | resources none → HOTO Resource [567 h]; Weightage |
| S06A-HT-1490 | Block-07 - Punch Point Identification By O&M Team | 2027-01-30 → 2027-01-21 (-9d) | 2027-02-02 → 2027-01-24 (-9d) | 72.7d → 97.8d | resources none → HOTO Resource [10 h]; Weightage |
| S06A-HT-1500 | Block-07 - Punch Point Rectification By Project Team | 2027-02-03 → 2027-01-25 (-9d) | 2027-02-24 → 2027-02-16 (-8d) | 72.7d → 97.8d | resources none → HOTO Resource [100 h]; Weightage |
| S06A-HT-1530 | Block-07 -House Keeping & Removal of Scraps | 2027-02-10 → 2027-02-02 (-8d) | 2027-02-28 → 2027-02-20 (-8d) | 72.7d → 97.8d | resources none → HOTO Resource [567 h] |
| S06A-HT-1540 | Block-07 -Handing Over of Mandatory Spares | 2027-02-15 → 2027-02-07 (-8d) | 2027-02-28 → 2027-02-20 (-8d) | 72.7d → 97.8d | resources none → HOTO Resource [567 h] |
| S06A-HT-1520 | Block-07 -Submission of As-built Drawings,OEM Manuals, Warranty Certificates etc. through DMS | 2027-02-19 → 2027-02-11 (-8d) | 2027-03-01 → 2027-02-21 (-8d) | 90.78d → 123.33d | resources none → HOTO Resource [567 h] |
| S06A-HT-1510 | Block-07 - Punch Point Closure Validation By O&M Team | 2027-02-25 → 2027-02-17 (-8d) | 2027-02-28 → 2027-02-20 (-8d) | 72.7d → 97.8d | resources none → HOTO Resource [567 h]; Weightage |
| S06A-HT-1550 | Block-07 - HOTO Sign Off | 2027-06-24 → 2027-06-23 (-1d) |  | -17.3d → 0.1d | resources none → HOTO Resource [567 h]; Weightage |
| 4 | **BLOCK-08** | 2027-01-25 → 2027-01-17 (-8d) |  |  |  |
| S06A-HT-1560 | Block-08 - Final Inspection Offer To O&M Team | 2027-01-25 → 2027-01-17 (-8d) | 2027-01-29 → 2027-01-20 (-9d) | 72.7d → 97.8d | resources none → HOTO Resource [567 h]; Weightage |
| S06A-HT-1570 | Block-08 - Punch Point Identification By O&M Team | 2027-01-30 → 2027-01-21 (-9d) | 2027-02-02 → 2027-01-24 (-9d) | 72.7d → 97.8d | resources none → HOTO Resource [10 h]; Weightage |
| S06A-HT-1580 | Block-08 - Punch Point Rectification By Project Team | 2027-02-03 → 2027-01-25 (-9d) | 2027-02-24 → 2027-02-16 (-8d) | 72.7d → 97.8d | resources none → HOTO Resource [100 h]; Weightage |
| S06A-HT-1610 | Block-08 -House Keeping & Removal of Scraps | 2027-02-10 → 2027-02-02 (-8d) | 2027-02-28 → 2027-02-20 (-8d) | 72.7d → 97.8d | resources none → HOTO Resource [567 h] |
| S06A-HT-1620 | Block-08 -Handing Over of Mandatory Spares | 2027-02-15 → 2027-02-07 (-8d) | 2027-02-28 → 2027-02-20 (-8d) | 72.7d → 97.8d | resources none → HOTO Resource [567 h] |
| S06A-HT-1600 | Block-08 -Submission of As-built Drawings,OEM Manuals, Warranty Certificates etc. through DMS | 2027-02-19 → 2027-02-11 (-8d) | 2027-03-01 → 2027-02-21 (-8d) | 90.78d → 123.33d | resources none → HOTO Resource [567 h] |
| S06A-HT-1590 | Block-08 - Punch Point Closure Validation By O&M Team | 2027-02-25 → 2027-02-17 (-8d) | 2027-02-28 → 2027-02-20 (-8d) | 72.7d → 97.8d | resources none → HOTO Resource [567 h]; Weightage |
| S06A-HT-1630 | Block-08 - HOTO Sign Off | 2027-06-24 → 2027-06-23 (-1d) |  | -17.3d → 0.1d | resources none → HOTO Resource [567 h]; Weightage |
| 3 | **PHASE-3 (50MW)** | 2027-01-31 → 2027-01-22 (-9d) |  |  |  |
| 1 | **BLOCK-09** | 2027-01-31 → 2027-01-22 (-9d) |  |  |  |
| S06A-HT-1640 | Block-09 - Final Inspection Offer To O&M Team | 2027-01-31 → 2027-01-22 (-9d) | 2027-02-03 → 2027-01-25 (-9d) | 69.7d → 94.8d | resources none → HOTO Resource [567 h]; Weightage |
| S06A-HT-1650 | Block-09 - Punch Point Identification By O&M Team | 2027-02-04 → 2027-01-27 (-8d) | 2027-02-07 → 2027-01-30 (-8d) | 69.7d → 94.8d | resources none → HOTO Resource [10 h]; Weightage |
| S06A-HT-1660 | Block-09 - Punch Point Rectification By Project Team | 2027-02-08 → 2027-01-31 (-8d) | 2027-02-27 → 2027-02-19 (-8d) | 69.7d → 94.8d | resources none → HOTO Resource [100 h]; Weightage |
| S06A-HT-1690 | Block-09 -House Keeping & Removal of Scraps | 2027-02-13 → 2027-02-05 (-8d) | 2027-03-03 → 2027-02-23 (-8d) | 69.7d → 94.8d | resources none → HOTO Resource [567 h] |
| S06A-HT-1700 | Block-09 -Handing Over of Mandatory Spares | 2027-02-18 → 2027-02-10 (-8d) | 2027-03-03 → 2027-02-23 (-8d) | 69.7d → 94.8d | resources none → HOTO Resource [567 h] |
| S06A-HT-1680 | Block-09 -Submission of As-built Drawings,OEM Manuals, Warranty Certificates etc. through DMS | 2027-02-22 → 2027-02-14 (-8d) | 2027-03-04 → 2027-02-24 (-8d) | 87.78d → 120.33d | resources none → HOTO Resource [567 h] |
| S06A-HT-1670 | Block-09 - Punch Point Closure Validation By O&M Team | 2027-02-28 → 2027-02-20 (-8d) | 2027-03-03 → 2027-02-23 (-8d) | 69.7d → 94.8d | resources none → HOTO Resource [567 h]; Weightage |
| S06A-HT-1710 | Block-09 - HOTO Sign Off | 2027-06-24 → 2027-06-23 (-1d) |  | -17.3d → 0.1d | resources none → HOTO Resource [567 h]; Weightage |
| 2 | **BLOCK-10** | 2027-01-31 → 2027-01-22 (-9d) |  |  |  |
| S06A-HT-1720 | Block-10 - Final Inspection Offer To O&M Team | 2027-01-31 → 2027-01-22 (-9d) | 2027-02-03 → 2027-01-25 (-9d) | 69.7d → 94.8d | resources none → HOTO Resource [567 h]; Weightage |
| S06A-HT-1730 | Block-10 - Punch Point Identification By O&M Team | 2027-02-04 → 2027-01-27 (-8d) | 2027-02-07 → 2027-01-30 (-8d) | 69.7d → 94.8d | resources none → HOTO Resource [10 h]; Weightage |
| S06A-HT-1740 | Block-10 - Punch Point Rectification By Project Team | 2027-02-08 → 2027-01-31 (-8d) | 2027-02-27 → 2027-02-19 (-8d) | 69.7d → 94.8d | resources none → HOTO Resource [100 h]; Weightage |
| S06A-HT-1770 | Block-10 -House Keeping & Removal of Scraps | 2027-02-13 → 2027-02-05 (-8d) | 2027-03-03 → 2027-02-23 (-8d) | 69.7d → 94.8d | resources none → HOTO Resource [567 h] |
| S06A-HT-1780 | Block-10 -Handing Over of Mandatory Spares | 2027-02-18 → 2027-02-10 (-8d) | 2027-03-03 → 2027-02-23 (-8d) | 69.7d → 94.8d | resources none → HOTO Resource [567 h] |
| S06A-HT-1760 | Block-10 -Submission of As-built Drawings,OEM Manuals, Warranty Certificates etc. through DMS | 2027-02-22 → 2027-02-14 (-8d) | 2027-03-04 → 2027-02-24 (-8d) | 87.78d → 120.33d | resources none → HOTO Resource [567 h] |
| S06A-HT-1750 | Block-10 - Punch Point Closure Validation By O&M Team | 2027-02-28 → 2027-02-20 (-8d) | 2027-03-03 → 2027-02-23 (-8d) | 69.7d → 94.8d | resources none → HOTO Resource [567 h]; Weightage |
| S06A-HT-1790 | Block-10 - HOTO Sign Off | 2027-06-24 → 2027-06-23 (-1d) |  | -17.3d → 0.1d | resources none → HOTO Resource [567 h]; Weightage |
| 3 | **BLOCK-11** | 2027-01-31 → 2027-01-22 (-9d) |  |  |  |
| S06A-HT-1800 | Block-11 - Final Inspection Offer To O&M Team | 2027-01-31 → 2027-01-22 (-9d) | 2027-02-03 → 2027-01-25 (-9d) | 69.7d → 94.8d | resources none → HOTO Resource [567 h]; Weightage |
| S06A-HT-1810 | Block-11 - Punch Point Identification By O&M Team | 2027-02-04 → 2027-01-27 (-8d) | 2027-02-07 → 2027-01-30 (-8d) | 69.7d → 94.8d | resources none → HOTO Resource [10 h]; Weightage |
| S06A-HT-1820 | Block-11 - Punch Point Rectification By Project Team | 2027-02-08 → 2027-01-31 (-8d) | 2027-02-27 → 2027-02-19 (-8d) | 69.7d → 94.8d | resources none → HOTO Resource [100 h]; Weightage |
| S06A-HT-1850 | Block-11 -House Keeping & Removal of Scraps | 2027-02-13 → 2027-02-05 (-8d) | 2027-03-03 → 2027-02-23 (-8d) | 69.7d → 94.8d | resources none → HOTO Resource [567 h] |
| S06A-HT-1860 | Block-11 -Handing Over of Mandatory Spares | 2027-02-18 → 2027-02-10 (-8d) | 2027-03-03 → 2027-02-23 (-8d) | 69.7d → 94.8d | resources none → HOTO Resource [567 h] |
| S06A-HT-1840 | Block-11 -Submission of As-built Drawings,OEM Manuals, Warranty Certificates etc. through DMS | 2027-02-22 → 2027-02-14 (-8d) | 2027-03-04 → 2027-02-24 (-8d) | 87.78d → 120.33d | resources none → HOTO Resource [567 h] |
| S06A-HT-1830 | Block-11 - Punch Point Closure Validation By O&M Team | 2027-02-28 → 2027-02-20 (-8d) | 2027-03-03 → 2027-02-23 (-8d) | 69.7d → 94.8d | resources none → HOTO Resource [567 h]; Weightage |
| S06A-HT-1870 | Block-11 - HOTO Sign Off | 2027-06-24 → 2027-06-23 (-1d) |  | -17.3d → 0.1d | resources none → HOTO Resource [567 h]; Weightage |
| 4 | **BLOCK-12** | 2027-01-31 → 2027-01-22 (-9d) |  |  |  |
| S06A-HT-1880 | Block-12 - Final Inspection Offer To O&M Team | 2027-01-31 → 2027-01-22 (-9d) | 2027-02-03 → 2027-01-25 (-9d) | 69.7d → 94.8d | resources none → HOTO Resource [567 h]; Weightage |
| S06A-HT-1890 | Block-12 - Punch Point Identification By O&M Team | 2027-02-04 → 2027-01-27 (-8d) | 2027-02-07 → 2027-01-30 (-8d) | 69.7d → 94.8d | resources none → HOTO Resource [10 h]; Weightage |
| S06A-HT-1900 | Block-12 - Punch Point Rectification By Project Team | 2027-02-08 → 2027-01-31 (-8d) | 2027-02-27 → 2027-02-19 (-8d) | 69.7d → 94.8d | resources none → HOTO Resource [100 h]; Weightage |
| S06A-HT-1930 | Block-12 -House Keeping & Removal of Scraps | 2027-02-13 → 2027-02-05 (-8d) | 2027-03-03 → 2027-02-23 (-8d) | 69.7d → 94.8d |  |
| S06A-HT-1940 | Block-12 -Handing Over of Mandatory Spares | 2027-02-18 → 2027-02-10 (-8d) | 2027-03-03 → 2027-02-23 (-8d) | 69.7d → 94.8d |  |
| S06A-HT-1920 | Block-12 -Submission of As-built Drawings,OEM Manuals, Warranty Certificates etc. through DMS | 2027-02-22 → 2027-02-14 (-8d) | 2027-03-04 → 2027-02-24 (-8d) | 87.78d → 120.33d | resources none → HOTO Resource [567 h] |

| ID | Task | Start | Finish | Total float | Other |
| --- | --- | --- | --- | --- | --- |
| S06A-HT-1910 | Block-12 - Punch Point Closure Validation By O&M Team | 2027-02-28 → 2027-02-20 (-8d) | 2027-03-03 → 2027-02-23 (-8d) | 69.7d → 94.8d | resources none → HOTO Resource [567 h]; Weightage |
| S06A-HT-1950 | Block-12 - HOTO Sign Off | 2027-06-24 → 2027-06-23 (-1d) |  | -17.3d → 0.1d | resources none → HOTO Resource [567 h]; Weightage |
| 4 | **PHASE-4 (50MW)** | 2027-02-27 → 2027-02-28 (+1d) |  |  |  |
| 1 | **BLOCK-13** | 2027-02-27 → 2027-02-28 (+1d) |  |  |  |
| S06A-HT-1960 | Block-13 - Final Inspection Offer To O&M Team | 2027-02-27 → 2027-02-28 (+1d) | 2027-03-02 → 2027-03-04 (+2d) | 45.7d → 61.1d | resources none → HOTO Resource [567 h]; Weightage |
| S06A-HT-1970 | Block-13 - Punch Point Identification By O&M Team | 2027-03-03 → 2027-03-04 (+1d) | 2027-03-07 → 2027-03-09 (+2d) | 45.7d → 61.1d | resources none → HOTO Resource [10 h]; Weightage |
| S06A-HT-1980 | Block-13 - Punch Point Rectification By Project Team | 2027-03-08 → 2027-03-09 (+1d) | 2027-03-23 → 2027-03-25 (+2d) | 45.7d → 61.1d | resources none → HOTO Resource [100 h]; Weightage |
| S06A-HT-2010 | Block-13 -House Keeping & Removal of Scraps | 2027-03-09 → 2027-03-10 (+1d) | 2027-03-27 → 2027-03-29 (+2d) | 45.7d → 61.1d | resources none → HOTO Resource [567 h] |
| S06A-HT-2020 | Block-13 -Handing Over of Mandatory Spares | 2027-03-14 → 2027-03-15 (+1d) | 2027-03-27 → 2027-03-29 (+2d) | 45.7d → 61.1d | resources none → HOTO Resource [567 h] |
| S06A-HT-2000 | Block-13 -Submission of As-built Drawings,OEM Manuals, Warranty Certificates etc. through DMS | 2027-03-18 → 2027-03-20 (+2d) | 2027-03-28 → 2027-03-29 (+1d) | 63.78d → 86.33d | resources none → HOTO Resource [567 h] |
| S06A-HT-1990 | Block-13 - Punch Point Closure Validation By O&M Team | 2027-03-24 → 2027-03-25 (+1d) | 2027-03-27 → 2027-03-29 (+2d) | 45.7d → 61.1d | resources none → HOTO Resource [567 h]; Weightage |
| S06A-HT-2030 | Block-13 - HOTO Sign Off | 2027-06-24 → 2027-06-23 (-1d) |  | -17.3d → 0.1d | resources none → HOTO Resource [567 h]; Weightage |
| 2 | **BLOCK-14** | 2027-02-27 → 2027-02-28 (+1d) |  |  |  |
| S06A-HT-2040 | Block-14 - Final Inspection Offer To O&M Team | 2027-02-27 → 2027-02-28 (+1d) | 2027-03-02 → 2027-03-04 (+2d) | 45.7d → 61.1d | resources none → HOTO Resource [567 h]; Weightage |
| S06A-HT-2050 | Block-14 - Punch Point Identification By O&M Team | 2027-03-03 → 2027-03-04 (+1d) | 2027-03-07 → 2027-03-09 (+2d) | 45.7d → 61.1d | resources none → HOTO Resource [10 h]; Weightage |
| S06A-HT-2060 | Block-14 - Punch Point Rectification By Project Team | 2027-03-08 → 2027-03-09 (+1d) | 2027-03-23 → 2027-03-25 (+2d) | 45.7d → 61.1d | resources none → HOTO Resource [100 h]; Weightage |
| S06A-HT-2090 | Block-14 -House Keeping & Removal of Scraps | 2027-03-09 → 2027-03-10 (+1d) | 2027-03-27 → 2027-03-29 (+2d) | 45.7d → 61.1d | resources none → HOTO Resource [567 h] |
| S06A-HT-2100 | Block-14 -Handing Over of Mandatory Spares | 2027-03-14 → 2027-03-15 (+1d) | 2027-03-27 → 2027-03-29 (+2d) | 45.7d → 61.1d | resources none → HOTO Resource [567 h] |
| S06A-HT-2080 | Block-14 -Submission of As-built Drawings,OEM Manuals, Warranty Certificates etc. through DMS | 2027-03-18 → 2027-03-20 (+2d) | 2027-03-28 → 2027-03-29 (+1d) | 63.78d → 86.33d | resources none → HOTO Resource [567 h] |
| S06A-HT-2070 | Block-14 - Punch Point Closure Validation By O&M Team | 2027-03-24 → 2027-03-25 (+1d) | 2027-03-27 → 2027-03-29 (+2d) | 45.7d → 61.1d |  |
| S06A-HT-2110 | Block-14 - HOTO Sign Off | 2027-06-24 → 2027-06-23 (-1d) |  | -17.3d → 0.1d |  |
| 3 | **BLOCK-15** | 2027-02-27 → 2027-02-28 (+1d) |  |  |  |
| S06A-HT-2120 | Block-15 - Final Inspection Offer To O&M Team | 2027-02-27 → 2027-02-28 (+1d) | 2027-03-02 → 2027-03-04 (+2d) | 45.7d → 61.1d | resources none → HOTO Resource [567 h]; Weightage |
| S06A-HT-2130 | Block-15 - Punch Point Identification By O&M Team | 2027-03-03 → 2027-03-04 (+1d) | 2027-03-07 → 2027-03-09 (+2d) | 45.7d → 61.1d | resources none → HOTO Resource [10 h]; Weightage |
| S06A-HT-2140 | Block-15 - Punch Point Rectification By Project Team | 2027-03-08 → 2027-03-09 (+1d) | 2027-03-23 → 2027-03-25 (+2d) | 45.7d → 61.1d | resources none → HOTO Resource [100 h]; Weightage |
| S06A-HT-2170 | Block-15 -House Keeping & Removal of Scraps | 2027-03-09 → 2027-03-10 (+1d) | 2027-03-27 → 2027-03-29 (+2d) | 45.7d → 61.1d | resources none → HOTO Resource [567 h] |
| S06A-HT-2180 | Block-15 -Handing Over of Mandatory Spares | 2027-03-14 → 2027-03-15 (+1d) | 2027-03-27 → 2027-03-29 (+2d) | 45.7d → 61.1d | resources none → HOTO Resource [567 h] |
| S06A-HT-2160 | Block-15 -Submission of As-built Drawings,OEM Manuals, Warranty Certificates etc. through DMS | 2027-03-18 → 2027-03-20 (+2d) | 2027-03-28 → 2027-03-29 (+1d) | 63.78d → 86.33d | resources none → HOTO Resource [567 h] |
| S06A-HT-2150 | Block-15 - Punch Point Closure Validation By O&M Team | 2027-03-24 → 2027-03-25 (+1d) | 2027-03-27 → 2027-03-29 (+2d) | 45.7d → 61.1d | resources none → HOTO Resource [567 h]; Weightage |
| S06A-HT-2190 | Block-15 - HOTO Sign Off | 2027-06-24 → 2027-06-23 (-1d) |  | -17.3d → 0.1d | resources none → HOTO Resource [567 h]; Weightage |
| 4 | **BLOCK-16** | 2027-02-27 → 2027-02-28 (+1d) |  |  |  |
| S06A-HT-2200 | Block-16 - Final Inspection Offer To O&M Team | 2027-02-27 → 2027-02-28 (+1d) | 2027-03-02 → 2027-03-04 (+2d) | 45.7d → 61.1d | resources none → HOTO Resource [567 h]; Weightage |
| S06A-HT-2210 | Block-16 - Punch Point Identification By O&M Team | 2027-03-03 → 2027-03-04 (+1d) | 2027-03-07 → 2027-03-09 (+2d) | 45.7d → 61.1d | resources none → HOTO Resource [10 h]; Weightage |
| S06A-HT-2220 | Block-16 - Punch Point Rectification By Project Team | 2027-03-08 → 2027-03-09 (+1d) | 2027-03-23 → 2027-03-25 (+2d) | 45.7d → 61.1d | resources none → HOTO Resource [100 h]; Weightage |
| S06A-HT-2250 | Block-16 -House Keeping & Removal of Scraps | 2027-03-09 → 2027-03-10 (+1d) | 2027-03-27 → 2027-03-29 (+2d) | 45.7d → 61.1d | resources none → HOTO Resource [567 h] |
| S06A-HT-2260 | Block-16 -Handing Over of Mandatory Spares | 2027-03-14 → 2027-03-15 (+1d) | 2027-03-27 → 2027-03-29 (+2d) | 45.7d → 61.1d | resources none → HOTO Resource [567 h] |
| S06A-HT-2240 | Block-16 -Submission of As-built Drawings,OEM Manuals, Warranty Certificates etc. through DMS | 2027-03-18 → 2027-03-20 (+2d) | 2027-03-28 → 2027-03-29 (+1d) | 63.78d → 86.33d | resources none → HOTO Resource [567 h] |
| S06A-HT-2230 | Block-16 - Punch Point Closure Validation By O&M Team | 2027-03-24 → 2027-03-25 (+1d) | 2027-03-27 → 2027-03-29 (+2d) | 45.7d → 61.1d | resources none → HOTO Resource [567 h]; Weightage |
| S06A-HT-2270 | Block-16 - HOTO Sign Off | 2027-06-24 → 2027-06-23 (-1d) |  | -17.3d → 0.1d | resources none → HOTO Resource [567 h]; Weightage |
| 5 | **PHASE-5 (34MW)** | 2027-03-01 → 2027-02-28 (-1d) |  |  |  |
| 1 | **BLOCK-17** | 2027-03-01 → 2027-02-28 (-1d) |  |  |  |
| S06A-HT-2280 | Block-17 - Final Inspection Offer To O&M Team | 2027-03-01 → 2027-02-28 (-1d) |  | 46.7d → 64.1d | resources none → HOTO Resource [567 h]; Weightage |
| S06A-HT-2290 | Block-17 - Punch Point Identification By O&M Team | 2027-03-04 → 2027-03-03 (-1d) |  | 46.7d → 64.1d | resources none → HOTO Resource [10 h]; Weightage |
| S06A-HT-2300 | Block-17 - Punch Point Rectification By Project Team | 2027-03-07 → 2027-03-06 (-1d) |  | 46.7d → 64.1d | resources none → HOTO Resource [100 h]; Weightage |
| S06A-HT-2330 | Block-17 -House Keeping & Removal of Scraps | 2027-03-08 → 2027-03-07 (-1d) |  | 46.7d → 64.1d | resources none → HOTO Resource [567 h] |
| S06A-HT-2340 | Block-17 -Handing Over of Mandatory Spares | 2027-03-13 → 2027-03-12 (-1d) |  | 46.7d → 64.1d | resources none → HOTO Resource [567 h] |
| S06A-HT-2320 | Block-17 -Submission of As-built Drawings,OEM Manuals, Warranty Certificates etc. through DMS |  | 2027-03-27 → 2027-03-26 (-1d) | 64.78d → 89.33d | resources none → HOTO Resource [567 h] |
| S06A-HT-2310 | Block-17 - Punch Point Closure Validation By O&M Team | 2027-03-23 → 2027-03-22 (-1d) |  | 46.7d → 64.1d | resources none → HOTO Resource [567 h]; Weightage |
| S06A-HT-2350 | Block-17 - HOTO Sign Off | 2027-06-24 → 2027-06-23 (-1d) |  | -17.3d → 0.1d | resources none → HOTO Resource [567 h]; Weightage |
| 2 | **BLOCK-18** | 2027-03-01 → 2027-02-28 (-1d) |  |  |  |
| S06A-HT-2360 | Block-18 - Final Inspection Offer To O&M Team | 2027-03-01 → 2027-02-28 (-1d) |  | 46.7d → 64.1d | resources none → HOTO Resource [567 h]; Weightage |
| S06A-HT-2370 | Block-18 - Punch Point Identification By O&M Team | 2027-03-04 → 2027-03-03 (-1d) |  | 46.7d → 64.1d | resources none → HOTO Resource [10 h]; Weightage |
| S06A-HT-2380 | Block-18 - Punch Point Rectification By Project Team | 2027-03-07 → 2027-03-06 (-1d) |  | 46.7d → 64.1d | resources none → HOTO Resource [100 h]; Weightage |
| S06A-HT-2410 | Block-18 -House Keeping & Removal of Scraps | 2027-03-08 → 2027-03-07 (-1d) |  | 46.7d → 64.1d | resources none → HOTO Resource [567 h] |
| S06A-HT-2420 | Block-18 -Handing Over of Mandatory Spares |  | 2027-03-27 → 2027-03-26 (-1d) | 64.78d → 89.33d | resources none → HOTO Resource [567 h] |
| S06A-HT-2400 | Block-18 -Submission of As-built Drawings,OEM Manuals, Warranty Certificates etc. through DMS |  | 2027-03-27 → 2027-03-26 (-1d) | 64.78d → 89.33d | resources none → HOTO Resource [567 h] |
| S06A-HT-2390 | Block-18 - Punch Point Closure Validation By O&M Team | 2027-03-23 → 2027-03-22 (-1d) |  | 46.7d → 64.1d | resources none → HOTO Resource [567 h]; Weightage |
| S06A-HT-2430 | Block-18 - HOTO Sign Off | 2027-06-24 → 2027-06-23 (-1d) |  | -17.3d → 0.1d | resources none → HOTO Resource [567 h]; Weightage |
| 3 | **BLOCK-19** | 2027-03-01 → 2027-02-28 (-1d) |  |  |  |
| S06A-HT-2440 | Block-19 - Final Inspection Offer To O&M Team | 2027-03-01 → 2027-02-28 (-1d) |  | 46.7d → 64.1d | resources none → HOTO Resource [567 h]; Weightage |
| S06A-HT-2450 | Block-19 - Punch Point Identification By O&M Team | 2027-03-04 → 2027-03-03 (-1d) |  | 46.7d → 64.1d | resources none → HOTO Resource [10 h]; Weightage |
| S06A-HT-2460 | Block-19 - Punch Point Rectification By Project Team | 2027-03-07 → 2027-03-06 (-1d) |  | 46.7d → 64.1d | resources none → HOTO Resource [100 h]; Weightage |
| S06A-HT-2490 | Block-19 -House Keeping & Removal of Scraps | 2027-03-08 → 2027-03-07 (-1d) |  | 46.7d → 64.1d | resources none → HOTO Resource [567 h] |
| S06A-HT-2500 | Block-19 -Handing Over of Mandatory Spares | 2027-03-13 → 2027-03-12 (-1d) |  | 46.7d → 64.1d | resources none → HOTO Resource [567 h] |
| S06A-HT-2480 | Block-19 -Submission of As-built Drawings,OEM Manuals, Warranty Certificates etc. through DMS |  | 2027-03-27 → 2027-03-26 (-1d) | 64.78d → 89.33d | resources none → HOTO Resource [567 h] |
| S06A-HT-2470 | Block-19 - Punch Point Closure Validation By O&M Team | 2027-03-23 → 2027-03-22 (-1d) |  | 46.7d → 64.1d | resources none → HOTO Resource [567 h]; Weightage |
| S06A-HT-2510 | Block-19 - HOTO Sign Off | 2027-06-24 → 2027-06-23 (-1d) |  | -17.3d → 0.1d | resources none → HOTO Resource [567 h]; Weightage |
| S06A-CL-1000 | Block-01 -Contract Closure |  |  | -24.89d → 0d | resources none → Contract Closure Resource [1125 h]; Weightage |
| S06A-CL-1010 | Block-02 - Contract Closure |  |  | -24.89d → 0d | resources none → Contract Closure Resource [1125 h]; Weightage |
| S06A-CL-1020 | Block-03 - Contract Closure |  |  | -24.89d → 0d | resources none → Contract Closure Resource [1125 h]; Weightage |

| ID | Task | Total float | Other |
| --- | --- | --- | --- |
| S06A-CL-1030 | Block-04 - Contract Closure | -24.89d → 0d | resources none → Contract Closure Resource [1125 h]; Weightage |
| S06A-CL-1040 | Block-05 - Contract Closure | -24.89d → 0d | resources none → Contract Closure Resource [1125 h]; Weightage |
| S06A-CL-1050 | Block-06 - Contract Closure | -24.89d → 0d | resources none → Contract Closure Resource [1125 h]; Weightage |
| S06A-CL-1060 | Block-07 - Contract Closure | -24.89d → 0d | resources none → Contract Closure Resource [1125 h]; Weightage |
| S06A-CL-1070 | Block-08 - Contract Closure | -24.89d → 0d | resources none → Contract Closure Resource [1125 h]; Weightage |
| S06A-CL-1120 | Block-09 - Contract Closure | -24.89d → 0d | resources none → Contract Closure Resource [1125 h]; Weightage |
| S06A-CL-1130 | Block-10 - Contract Closure | -24.89d → 0d | resources none → Contract Closure Resource [1125 h]; Weightage |
| S06A-CL-1140 | Block-11 - Contract Closure | -24.89d → 0d | resources none → Contract Closure Resource [1125 h]; Weightage |
| S06A-CL-1150 | Block-12 - Contract Closure | -24.89d → 0d | resources none → Contract Closure Resource [1125 h]; Weightage |
| S06A-CL-1080 | Block-13 - Contract Closure | -24.89d → 0d | resources none → Contract Closure Resource [1125 h]; Weightage |
| S06A-CL-1090 | Block-14 - Contract Closure | -24.89d → 0d | resources Contract Closure Resource [1125 h] → Contract Closure Resource [1125 h]; Weightage |
| S06A-CL-1100 | Block-15 - Contract Closure | -24.89d → 0d | resources none → Contract Closure Resource [1125 h]; Weightage |
| S06A-CL-1110 | Block-16 - Contract Closure | -24.89d → 0d | resources none → Contract Closure Resource [1125 h]; Weightage |
| S06A-CL-1160 | Block-17 - Contract Closure | -24.89d → 0d | resources none → Contract Closure Resource [1125 h]; Weightage |
| S06A-CL-1170 | Block-18 - Contract Closure | -24.89d → 0d | resources none → Contract Closure Resource [1125 h]; Weightage |
| S06A-CL-1180 | Block-19 - Contract Closure | -24.89d → 0d | resources none → Contract Closure Resource [1125 h]; Weightage |
